# スケジュール_TWLSystemMenu

How a schedule from MS Project changed from version to version. A marks actual dates.

## Version 1 (saved 2008-02-08)

Note of the change: ドキュメント更新

| ID | WBS | Task | Duration | Start | Finish | Total float |
| --- | --- | --- | --- | --- | --- | --- |
| 2 |  | UIGランチャー | 1d? | 2008-02-08 | 2008-02-08 | 0d |
| 3 | 2 | **REDランチャー** | 1d? | 2008-02-08 | 2008-02-08 | 0d |
| 4 | 2.1 | **アプリ起動** | 1d? | 2008-02-08 | 2008-02-08 | 0d |
| 5 | 2.1.1 | **起動時のプロパティ** | 1d? | 2008-02-08 | 2008-02-08 | 0d |
| 6 |  | 鍵の引渡し | 1d? | 2008-02-08 | 2008-02-08 | 0d |
| 7 |  | NANDファイルのアクセス制限 | 1d? | 2008-02-08 | 2008-02-08 | 0d |
| 8 |  | カード電源状態 | 1d? | 2008-02-08 | 2008-02-08 | 0d |
| 9 |  | カード活線挿抜可否 | 1d? | 2008-02-08 | 2008-02-08 | 0d |
| 10 |  | SDカードアクセス可否 | 1d? | 2008-02-08 | 2008-02-08 | 0d |
| 11 |  | Codecモード切替 | 1d? | 2008-02-08 | 2008-02-08 | 0d |
| 12 |  | SCFGレジスタロック | 1d? | 2008-02-08 | 2008-02-08 | 0d |
| 13 | 2.1.2 | **起動チェック** | 1d? | 2008-02-08 | 2008-02-08 | 0d |
| 14 |  | ペアレンタルコントロールによる起動制限 | 1d? | 2008-02-08 | 2008-02-08 | 0d |
| 15 |  | リージョン違いによる起動制限 | 1d? | 2008-02-08 | 2008-02-08 | 0d |
| 16 |  | WiFi通信対応ソフトでWiFi設定が行われているか？ | 1d? | 2008-02-08 | 2008-02-08 | 0d |
| 17 |  | EURA同意が必要なソフトで、同意が取れているか？ | 1d? | 2008-02-08 | 2008-02-08 | 0d |
| 18 |  | AGBカートリッジが必要なソフトは起動禁止 | 1d? | 2008-02-08 | 2008-02-08 | 0d |
| 19 | 2.1.3 | **アプリ認証処理** | 1d? | 2008-02-08 | 2008-02-08 | 0d |
| 20 |  | NTRアプリのR4対策 | 1d? | 2008-02-08 | 2008-02-08 | 0d |
| 21 | 2.1.3.2 | **TWLアプリ** | 1d? | 2008-02-08 | 2008-02-08 | 0d |
| 22 |  | カードアプリ | 1d? | 2008-02-08 | 2008-02-08 | 0d |
| 23 |  | NANDアプリ | 1d? | 2008-02-08 | 2008-02-08 | 0d |
| 24 | 2.1.4 | **WiFiエミュレーション** | 1d? | 2008-02-08 | 2008-02-08 | 0d |
| 25 |  | コンポーネント作成 | 1d? | 2008-02-08 | 2008-02-08 | 0d |
| 26 |  | ロード処理 | 1d? | 2008-02-08 | 2008-02-08 | 0d |
| 27 |  | NTR無線パッチ | 1d? | 2008-02-08 | 2008-02-08 | 0d |
| 28 | 2.2 | **HWリセット制御** | 1d? | 2008-02-08 | 2008-02-08 | 0d |
| 29 | 2.2.1 | **任意アプリの直接起動** | 1d? | 2008-02-08 | 2008-02-08 | 0d |
| 30 |  | 未ロード状態のアプリ起動 | 1d? | 2008-02-08 | 2008-02-08 | 0d |
| 31 |  | メモリ上にロードされた状態のアプリ起動 | 1d? | 2008-02-08 | 2008-02-08 | 0d |
| 32 |  | NANDのTMPフォルダに一時格納された状態のアプリ起動 | 1d? | 2008-02-08 | 2008-02-08 | 0d |
| 33 |  | ファイル関連付けアプリ起動 | 1d? | 2008-02-08 | 2008-02-08 | 0d |
| 34 |  | ランチャーメニューに戻る | 1d? | 2008-02-08 | 2008-02-08 | 0d |
| 35 |  | カードセキュリティの解除 | 1d? | 2008-02-08 | 2008-02-08 | 0d |
| 36 |  | Hot/Coldスタート判定 | 1d? | 2008-02-08 | 2008-02-08 | 0d |
| 37 |  | TMPフォルダクリーン | 1d? | 2008-02-08 | 2008-02-08 | 0d |
| 38 | 2.5 | **本体設定データ** | 1d? | 2008-02-08 | 2008-02-08 | 0d |
| 39 |  | フォーマット | 1d? | 2008-02-08 | 2008-02-08 | 0d |
| 40 |  | API | 1d? | 2008-02-08 | 2008-02-08 | 0d |
| 41 |  | 初回バックライトON | 1d? | 2008-02-08 | 2008-02-08 | 0d |
| 42 | 2.7 | **新無線ファームロード** | 1d? | 2008-02-08 | 2008-02-08 | 0d |
| 43 |  | maketad.exeのバイナリファイル対応 | 1d? | 2008-02-08 | 2008-02-08 | 0d |
| 44 | 2.7.2 | **実装** | 1d? | 2008-02-08 | 2008-02-08 | 0d |
| 45 |  | 無線ライブラリ | 1d? | 2008-02-08 | 2008-02-08 | 0d |
| 46 |  | ランチャー | 1d? | 2008-02-08 | 2008-02-08 | 0d |
| 47 | 2.8 | **ショートカット起動** | 1d? | 2008-02-08 | 2008-02-08 | 0d |
| 48 |  | 仕様策定 | 1d? | 2008-02-08 | 2008-02-08 | 0d |
| 49 |  | アプリリスト取得 | 1d? | 2008-02-08 | 2008-02-08 | 0d |
| 50 | 2.10 | **バナー** | 1d? | 2008-02-08 | 2008-02-08 | 0d |
| 51 |  | 仕様策定 | 1d? | 2008-02-08 | 2008-02-08 | 0d |
| 52 |  | バナーコンバータ | 1d? | 2008-02-08 | 2008-02-08 | 0d |
| 53 |  | makebanner | 1d? | 2008-02-08 | 2008-02-08 | 0d |
| 54 |  | バナードライバ | 1d? | 2008-02-08 | 2008-02-08 | 0d |
| 55 |  | セーブバナーファイル | 1d? | 2008-02-08 | 2008-02-08 | 0d |
| 56 | 2.11 | **活線挿抜** | 1d? | 2008-02-08 | 2008-02-08 | 0d |
| 57 | 2.11.1 | **ロード** | 1d? | 2008-02-08 | 2008-02-08 | 0d |
| 58 |  | NTRカード対応 | 1d? | 2008-02-08 | 2008-02-08 | 0d |
| 59 |  | TWLカード対応 | 1d? | 2008-02-08 | 2008-02-08 | 0d |
| 60 |  | カードType1,2対応 | 1d? | 2008-02-08 | 2008-02-08 | 0d |
| 61 |  | Blowfishデコード | 1d? | 2008-02-08 | 2008-02-08 | 0d |
| 62 |  | 表示との連動 | 1d? | 2008-02-08 | 2008-02-08 | 0d |
| 63 |  | 起動との連動 | 1d? | 2008-02-08 | 2008-02-08 | 0d |
| 64 |  | 挿抜負荷耐性 | 1d? | 2008-02-08 | 2008-02-08 | 0d |
| 65 |  | ARM9/ARM7対応 | 1d? | 2008-02-08 | 2008-02-08 | 0d |
| 66 |  | 速度チューニング | 1d? | 2008-02-08 | 2008-02-08 | 0d |
| 67 | 2.12 | **ホットスポットサーチ** | 1d? | 2008-02-08 | 2008-02-08 | 0d |
| 68 |  | ライブラリ作成 | 1d? | 2008-02-08 | 2008-02-08 | 0d |
| 69 |  | ランチャーへの組み込み | 1d? | 2008-02-08 | 2008-02-08 | 0d |
| 70 |  | バッテリエクステンション | 1d? | 2008-02-08 | 2008-02-08 | 0d |
| 71 |  | RED本体設定 | 1d? | 2008-02-08 | 2008-02-08 | 0d |

## Version 2 (saved 2008-02-13)

Note of the change: ドキュメント更新。

Last finish 2008-02-08 → 2008-06-26 (+139d).

Added:

| ID | Task | Duration | Start | Finish | Constraint | Resources |
| --- | --- | --- | --- | --- | --- | --- |
| 1 | TS3(20台)先行納品開始 | 1d? | 2008-02-13 | 2008-02-13 | start no earlier than 2008-02-13 |  |
| 2 | ワーキングモデル(10台 0x01=7台, 0x10=3台)納品予定 | 1d? | 2008-02-15 | 2008-02-15 | start no earlier than 2008-02-15 |  |
| 3 | IS-TWL-DEBUGGER(5台)先行納品開始 | 1d? | 2008-03-03 | 2008-03-03 | start no earlier than 2008-03-03 |  |
| 4 | TS3（380台)納品開始 | 1d? | 2008-03-13 | 2008-03-13 | start no earlier than 2008-03-13 |  |
| 5 | ミニ量産試作(200台) | 3d? | 2008-02-26 | 2008-02-28 | finish no earlier than 2008-02-28 |  |
| 6 | IS-TWL-CAPTURE試作品納品開始 | 1d? | 2008-04-01 | 2008-04-01 | start no earlier than 2008-04-01 |  |
| 7 | IS-TWL-DEBUGGER(100台) | 13d? | 2008-04-14 | 2008-04-30 | finish no earlier than 2008-04-30 |  |
| 8 | 量産試作1(600台) | 5d? | 2008-04-21 | 2008-04-25 | finish no earlier than 2008-04-25 |  |
| 9 | IS-TWL-DEBUGGER(200台) | 12d? | 2008-05-01 | 2008-05-16 | finish no earlier than 2008-05-16 |  |
| 10 | IS-TWL-DEBUUGER(300台) | 1d? | 2008-05-20 | 2008-05-20 | start no earlier than 2008-05-20 |  |
| 11 | 量産試作2(600台) | 6d? | 2008-05-23 | 2008-05-30 | finish no earlier than 2008-05-30 |  |
| 12 | IS-TWL-DEBUGGER(月産500台) | 1d? | 2008-06-02 | 2008-06-02 | start no earlier than 2008-06-02 |  |
| 13 | 量産試作3(600台) | 5d? | 2008-06-20 | 2008-06-26 | finish no earlier than 2008-06-26 |  |
| 15 | 無線モジュール（ファームロード対応版）受領 | 1d? | 2008-02-08 | 2008-02-08 |  |  |
| 17 | **UIGシステムメニュー** | 1d? | 2008-02-08 | 2008-02-08 |  |  |
| 19 | フォント | 1d? | 2008-02-08 | 2008-02-08 |  |  |
| 21 | 本体設定 | 1d? | 2008-02-08 | 2008-02-08 |  | 小野沢祐貴 |
| 22 | ショップ | 1d? | 2008-02-08 | 2008-02-08 |  |  |
| 23 | 写真帳 | 1d? | 2008-02-08 | 2008-02-08 |  | 河野裕之 |
| 24 | ピクトチャット | 1d? | 2008-02-08 | 2008-02-08 |  | 川瀬 智広; 荒木 勉 |
| 25 | DSダウンロードプレイ | 1d? | 2008-02-08 | 2008-02-08 |  | 川瀬 智広; 荒木 勉 |
| 26 | 新型配信システム | 1d? | 2008-02-08 | 2008-02-08 |  | ネットワーク開発部 |
| 28 | NANDファーム | 1d? | 2008-02-08 | 2008-02-08 |  | 村上豊 |
| 30 | **REDシステムメニュー** | 1d? | 2008-02-08 | 2008-02-08 |  |  |
| 43 | 該当ソフト調査 | 1d? | 2008-02-08 | 2008-02-08 |  |  |
| 44 | チェックルーチン | 1d? | 2008-02-08 | 2008-02-08 |  |  |
| 50 | NTRモード起動 | 1d? | 2008-02-08 | 2008-02-08 |  | 中島高伸 |
| 66 | **無線** | 1d? | 2008-02-08 | 2008-02-08 |  |  |
| 68 | **ファーム** | 1d? | 2008-02-08 | 2008-02-08 |  |  |
| 69 | ファーム作成 | 1d? | 2008-02-08 | 2008-02-08 |  | Atheros |
| 70 | ダミーROMヘッダ作成ツール | 1d? | 2008-02-08 | 2008-02-08 |  | 宮本昌幸 |
| 73 | ランチャー仮実装 | 1d? | 2008-02-08 | 2008-02-08 |  | 宮本昌幸 |
| 74 | ランチャー本実装 | 1d? | 2008-02-08 | 2008-02-08 |  | 宮本昌幸 |
| 78 | 無線終端処理 | 1d? | 2008-02-08 | 2008-02-08 |  | 佐藤雅樹 |
| 100 | WiFi設定 | 1d? | 2008-02-08 | 2008-02-08 |  |  |
| 101 | **本体初期化** | 1d? | 2008-02-08 | 2008-02-08 |  |  |
| 102 | ツール | 1d? | 2008-02-08 | 2008-02-08 |  | 神川洋司 |
| 103 | ライブラリ | 1d? | 2008-02-08 | 2008-02-08 |  | 神川洋司 |
| 105 | **SDK** | 1d? | 2008-02-08 | 2008-02-08 |  |  |
| 106 | **ツール** | 1d? | 2008-02-08 | 2008-02-08 |  |  |
| 107 | **makerom** | 1d? | 2008-02-08 | 2008-02-08 |  |  |
| 108 | NTR署名対応 | 1d? | 2008-02-08 | 2008-02-08 |  | 吉岡照幸 |
| 109 | ペアレンタルコントロール対応 | 1d? | 2008-02-08 | 2008-02-08 |  | 吉岡照幸 |
| 110 | SD使用可能特別版対応 | 1d? | 2008-02-08 | 2008-02-08 |  | 吉岡照幸 |
| 111 | システム/ショップアプリ開発特別版対応 | 1d? | 2008-02-08 | 2008-02-08 |  | 吉岡照幸 |
| 112 | **maketad** | 1d? | 2008-02-08 | 2008-02-08 |  |  |
| 113 | バイナリファイル対応 | 1d? | 2008-02-08 | 2008-02-08 |  | 大島 洋一 |
| 114 | 共有コンテンツ対応 | 1d? | 2008-02-08 | 2008-02-08 |  |  |
| 115 | **makebanner** | 1d? | 2008-02-08 | 2008-02-08 |  |  |
| 116 | NTRアイコンIN→TWLバナーOUT対応 | 1d? | 2008-02-08 | 2008-02-08 |  | 吉岡照幸 |
| 117 | bannercvtr | 1d? | 2008-02-08 | 2008-02-08 |  | 遠藤高志 |
| 118 | **ライブラリ** | 1d? | 2008-02-08 | 2008-02-08 |  |  |
| 119 | reboot | 1d? | 2008-02-08 | 2008-02-08 |  | 中島高伸 |
| 120 | os/launcherParam | 1d? | 2008-02-08 | 2008-02-08 |  | 吉田光寿 |
| 121 | lcfg | 1d? | 2008-02-08 | 2008-02-08 |  | 吉岡照幸 |
| 122 | nam | 1d? | 2008-02-08 | 2008-02-08 |  | 畠本 稔 |
| 123 | マイコン | 1d? | 2008-02-08 | 2008-02-08 |  | 村上豊 |
| 124 | カメラ | 1d? | 2008-02-08 | 2008-02-08 |  | 村上豊 |
| 125 | Codec | 1d? | 2008-02-08 | 2008-02-08 |  | 神川洋司 |
| 126 | **FS** | 1d? | 2008-02-08 | 2008-02-08 |  |  |
| 127 | 電源OFF,リセット時の終端処理 | 1d? | 2008-02-08 | 2008-02-08 |  | 白井達広 |
| 128 | FSのAES暗号化 | 0.5d? | 2008-02-08 | 2008-02-08 |  | 白井達広; 村上豊 |
| 129 | 速度チューニング | 1d? | 2008-02-08 | 2008-02-08 |  | 吉崎 浩二 |
| 130 | SRLのハッシュチェック | 1d? | 2008-02-08 | 2008-02-08 |  | 吉崎 浩二 |
| 131 | NANDアクセス権管理 | 0.33d? | 2008-02-08 | 2008-02-08 |  | 吉崎 浩二; 吉岡照幸; 廣瀬 和樹 |
| 134 | **eTicket** | 1d? | 2008-02-08 | 2008-02-08 |  |  |
| 135 | ESライブラリ | 1d? | 2008-02-08 | 2008-02-08 |  | BroadOn |
| 136 | **CLSサーバ** | 1d? | 2008-02-08 | 2008-02-08 |  |  |
| 137 | 開発用セットアップ | 1d? | 2008-02-08 | 2008-02-08 |  |  |
| 138 | 製品用セットアップ | 1d? | 2008-02-08 | 2008-02-08 |  |  |
| 139 | **ショップサーバ** | 1d? | 2008-02-08 | 2008-02-08 |  |  |
| 140 | 開発用セットアップ | 1d? | 2008-02-08 | 2008-02-08 |  |  |
| 141 | 製品用セットアップ | 1d? | 2008-02-08 | 2008-02-08 |  |  |
| 143 | **IS** | 1d? | 2008-02-08 | 2008-02-08 |  |  |
| 144 | IS-TWL-DEBUGGER | 1d? | 2008-02-08 | 2008-02-08 |  |  |
| 145 | IS-TWL-CAPUTURE | 1d? | 2008-02-08 | 2008-02-08 |  |  |

Removed: 2 UIGランチャー; 14 ペアレンタルコントロールによる起動制限; 15 リージョン違いによる起動制限; 16 WiFi通信対応ソフトでWiFi設定が行われているか？; 17 EURA同意が必要なソフトで、同意が取れているか？; 43 maketad.exeのバイナリファイル対応; 47 ショートカット起動; 52 バナーコンバータ; 53 makebanner

Changed:

| ID | Task | Duration | Total float | Other |
| --- | --- | --- | --- | --- |
| 18 | 仕様策定 |  | 0d → 99d | resources none → 松島愛佑 |
| 20 | ランチャー | 1d? → 0.5d? | 0d → 99.5d | resources none → 川瀬 智広; 荒木 勉 |
| 31 | **ランチャー** |  | 0d → 99d | was named REDランチャー |
| 46 | NTRアプリのR4対策 |  | 0d → 99d | resources none → 村上豊 |
| 48 | カードアプリ |  | 0d → 99d | resources none → 吉田光寿 |
| 49 | NANDアプリ |  | 0d → 99d | resources none → 吉田光寿 |
| 51 | NTR無線パッチ |  | 0d → 99d | resources none → 中島高伸 |
| 54 | 未ロード状態のアプリ起動 |  | 0d → 99d | resources none → 吉田光寿 |
| 55 | メモリ上にロードされた状態のアプリ起動 |  | 0d → 99d | resources none → 吉田光寿 |
| 56 | NANDのTMPフォルダに一時格納された状態のアプリ起動 |  | 0d → 99d | resources none → 吉田光寿 |
| 57 | ランチャーメニューに戻る |  | 0d → 99d | resources none → 吉田光寿 |
| 60 | Hot/Coldスタート判定 | 1d? → 0.5d? | 0d → 99.5d | resources none → 中島高伸; 吉田光寿 |
| 61 | TMPフォルダクリーン |  | 0d → 99d | resources none → 吉田光寿 |
| 63 | フォーマット |  | 0d → 99d | resources none → 吉岡照幸 |
| 64 | API |  | 0d → 99d | resources none → 吉岡照幸 |
| 72 | 無線ライブラリ |  | 0d → 99d | resources none → 佐藤雅樹 |
| 76 | コンポーネント作成 |  | 0d → 99d | resources none → 水口裕基 |
| 77 | ロード処理 |  | 0d → 99d | resources none → 水口裕基 |
| 79 | アプリリスト取得 |  | 0d → 99d | resources none → 吉田光寿 |
| 81 | 仕様策定 |  | 0d → 99d | resources none → 吉岡照幸 |
| 82 | バナードライバ |  | 0d → 99d | resources none → 吉田光寿 |
| 83 | セーブバナーファイル | 1d? → 0.5d? | 0d → 99.5d | resources none → 畠本 稔; 吉崎 浩二 |
| 86 | NTRカード対応 |  | 0d → 99d | resources none → 赤羽淳平 |
| 87 | TWLカード対応 |  | 0d → 99d | resources none → 赤羽淳平 |
| 88 | カードType1,2対応 |  | 0d → 99d | resources none → 赤羽淳平 |
| 89 | Blowfishデコード |  | 0d → 99d | resources none → 赤羽淳平 |
| 90 | 表示との連動 |  | 0d → 99d | resources none → 赤羽淳平 |
| 91 | 起動との連動 |  | 0d → 99d | resources none → 赤羽淳平 |
| 92 | 挿抜負荷耐性 |  | 0d → 99d | resources none → 赤羽淳平 |
| 93 | ARM9/ARM7対応 |  | 0d → 99d | resources none → 赤羽淳平 |
| 94 | 速度チューニング |  | 0d → 99d | resources none → 赤羽淳平 |
| 98 | バッテリエクステンション |  | 0d → 99d | resources none → 村上豊 |
| 99 | 本体設定 | 1d? → 0.5d? | 0d → 99.5d | was named RED本体設定; resources none → 吉田光寿; 吉岡照幸 |

## Version 3 (saved 2008-02-14)

Note of the change: ドキュメント更新。

Last finish stays 2008-06-26. Complete tasks 0 → 13.

Added:

| ID | Task | Duration | Start | Finish | Predecessors | Constraint | Resources |
| --- | --- | --- | --- | --- | --- | --- | --- |
| 15 | REDランチャー開発 第１ステップ | 1d? | 2008-03-03 | 2008-03-03 |  | start no earlier than 2008-03-03 |  |
| 16 | REDランチャー開発 第２ステップ | 1d? | 2008-03-14 | 2008-03-14 |  | start no earlier than 2008-03-14 |  |
| 33 | **仕様策定** | 26d? | 2008-02-08 A | 2008-03-14 |  |  |  |
| 34 | **ランチャー** | 26d? | 2008-02-08 A | 2008-03-14 |  |  |  |
| 35 | アプリのNintendoロゴ表示 | 16d? | 2008-02-08 | 2008-02-29 |  | start no earlier than 2008-02-08 | 松島愛佑; 三田健太朗; 知財部 |
| 36 | **EURA表示** | 26d? | 2008-02-08 | 2008-03-14 |  |  |  |
| 37 | NCL Fix | 16d? | 2008-02-08 | 2008-02-29 |  | start no earlier than 2008-02-08 | 三田健太朗; 総務部; 松島愛佑 |
| 38 | NOA, NOE Fix | 26d? | 2008-02-08 | 2008-03-14 |  | start no earlier than 2008-02-08 | 三田健太朗; 総務部; 松島愛佑 |
| 40 | ペアレンタルコントロール（レーティング以外のデータ構造） | 16d? | 2008-02-08 | 2008-02-29 |  | start no earlier than 2008-02-08 | 松島愛佑; 総務部 |
| 41 | 顔写真 | 16d? | 2008-02-08 | 2008-02-29 |  | start no earlier than 2008-02-08 | 松島愛佑 |
| 42 | **NANDファイルアクセス制限** | 16d? | 2008-02-08 | 2008-02-29 |  |  |  |
| 43 | 同一メーカの他タイトルのセーブデータ（ReadOnly） | 16d? | 2008-02-08 | 2008-02-29 |  | finish no earlier than 2008-02-29 |  |
| 44 | TMPブートをする際のTMPフォルダ（Write） | 11d? | 2008-02-08 | 2008-02-22 |  | start no earlier than 2008-02-08 |  |
| 45 | フォントの共有コンテンツ化（ReadOnly） | 11d? | 2008-02-08 | 2008-02-22 |  | start no earlier than 2008-02-08 |  |
| 46 | ESライブラリのほぼ全部アクセス | 11d? | 2008-02-08 | 2008-02-22 |  | start no earlier than 2008-02-08 |  |
| 47 | 本体設定データ（ReadOnly） | 11d? | 2008-02-08 | 2008-02-22 |  | start no earlier than 2008-02-08 |  |
| 48 | **SDに作成するフォルダ名** | 11d? | 2008-02-08 A | 2008-02-22 |  |  |  |
| 49 | TWL正式名称を使えるかを確認 | 11d? | 2008-02-08 | 2008-02-22 |  | start no earlier than 2008-02-08 | 三田健太朗 |
| 50 | パス名調査 | 1d? | 2008-02-08 A | 2008-02-08 A |  |  | 白井達広 |
| 51 | TWLでのフォルダ構成のたたき台 | 11d? | 2008-02-08 | 2008-02-22 |  | start no earlier than 2008-02-08 | 三田健太朗; 吉岡照幸 |
| 52 | **NTRアプリのR4対策** | 16d? | 2008-02-08 | 2008-02-29 |  |  |  |
| 53 | どのレベルでやるかの方針決定 | 16d? | 2008-02-08 | 2008-02-29 |  | start no earlier than 2008-02-08 |  |
| 54 | **アプリジャンプの取捨選択** | 26d? | 2008-02-08 | 2008-03-14 |  |  |  |
| 55 | ファイル関連付けアプリ起動をやるかやらないか？ | 26d? | 2008-02-08 | 2008-03-14 |  | finish no earlier than 2008-03-14 |  |
| 56 | **バナー仕様** | 0.33d? | 2008-02-08 A | 2008-02-08 A |  |  |  |
| 57 | サブバナー | 0.33d? | 2008-02-08 A | 2008-02-08 A |  |  | 吉岡照幸; 川瀬 智広; 荒木 勉 |
| 58 | TWLバナー | 0.33d? | 2008-02-08 A | 2008-02-08 A |  |  | 吉岡照幸; 川瀬 智広; 荒木 勉 |
| 59 | **バックライト輝度の値、段階** | 16d? | 2008-02-08 | 2008-02-29 |  |  |  |
| 60 | 上限、下限決定 | 16d? | 2008-02-08 | 2008-02-29 |  | start no earlier than 2008-02-08 | 斉藤潤一; 喜友名毅 |
| 61 | 段階数、各輝度レベル決定 | 16d? | 2008-02-08 | 2008-02-29 |  | finish no earlier than 2008-02-29 | 桑原雅人 |
| 62 | バッテリエクステンション | 16d? | 2008-02-08 | 2008-02-29 |  | start no earlier than 2008-02-08 | 桑原雅人; 藤田僚平; 村上豊 |
| 63 | **無線** | 1d? | 2008-02-08 A | 2008-02-08 |  |  |  |
| 64 | WiFiエミュレーション | 0.33d? | 2008-02-08 | 2008-02-08 |  |  | 大江徹; 佐藤雅樹; 水口裕基 |
| 65 | ファームロード | 1d? | 2008-02-08 A | 2008-02-08 A |  |  | 大江徹; 佐藤雅樹; 水口裕基 |
| 66 | 無線終端処理 | 1d? | 2008-02-08 A | 2008-02-08 A |  |  | 大江徹; 佐藤雅樹; 水口裕基 |
| 68 | **X3ボード対応** | 7d? | 2008-02-08 A | 2008-02-18 |  |  |  |
| 69 | ランチャー | 7d? | 2008-02-08 A | 2008-02-18 |  | finish no earlier than 2008-02-18 | 中島高伸 |
| 70 | ISデバッガ | 7d? | 2008-02-08 A | 2008-02-18 |  | finish no earlier than 2008-02-18 | 中島高伸 |
| 74 | ランチャー用ARM7コンポーネント | 26d? | 2008-02-08 | 2008-03-14 |  | start no earlier than 2008-02-08 | 吉岡照幸 |
| 84 | アプリ再配置 | 1d? | 2008-02-08 A | 2008-02-08 A |  |  | 吉田光寿 |
| 85 | メモリクリア | 0.5d? | 2008-02-08 | 2008-02-08 |  |  | 中島高伸; 吉田光寿 |
| 86 | **レジスタクリア** | 19d? | 2008-02-08 | 2008-03-05 |  |  |  |
| 87 | 各ハード担当者にクリアする領域を洗い出してもらう | 16d? | 2008-02-08 | 2008-02-29 |  | start no earlier than 2008-02-08 | 吉岡照幸 |
| 88 | クリア処理実装 | 1d? | 2008-03-05 | 2008-03-05 | 87 | finish no earlier than 2008-03-05 | 中島高伸 |
| 95 | **ダイジェストとるやつ** | 1d? | 2008-02-08 | 2008-02-08 |  |  |  |
| 96 | TWL側実装 | 1d? | 2008-02-08 | 2008-02-08 |  |  | 村上豊 |
| 97 | ダイジェストリスト作成 | 1d? | 2008-02-08 | 2008-02-08 |  |  | 村上豊 |
| 101 | **NTRアプリ起動** | 20d? | 2008-02-08 A | 2008-03-06 |  |  |  |
| 102 | NTRモード切替 | 1d? | 2008-03-06 A | 2008-03-06 | 85, 86 |  | 中島高伸 |
| 113 | 本体設定データetcのロード | 1d? | 2008-02-08 A | 2008-02-08 |  |  | 吉岡照幸 |
| 114 | RTC初期化 | 1d? | 2008-02-08 A | 2008-02-08 |  |  | 吉岡照幸 |
| 134 | **活線挿抜アルゴリズムをFIX** | 16d? | 2008-02-08 A | 2008-02-29 |  |  |  |
| 135 | コードの整理 | 16d? | 2008-02-08 | 2008-02-29 |  | start no earlier than 2008-02-08 | 赤羽淳平 |
| 142 | SRLの先頭2KB | 16d? | 2008-02-08 A | 2008-02-29 A |  |  | 赤羽淳平 |
| 143 | カードのコマンド処理 | 16d? | 2008-02-08 A | 2008-02-29 |  | finish no earlier than 2008-02-29 | 赤羽淳平 |
| 144 | **カードスロットAでの動作** | 16d? | 2008-02-08 | 2008-02-29 |  |  |  |
| 145 | SDKコードとのカードアクセス排他制御 | 16d? | 2008-02-08 | 2008-02-29 |  | start no earlier than 2008-02-08 | 赤羽淳平 |
| 146 | Blowfish鍵の受け渡し | 16d? | 2008-02-08 | 2008-02-29 |  | start no earlier than 2008-02-08 | 中島高伸; 赤羽淳平 |
| 155 | **ISデバッガ対応** | 59d? | 2008-02-08 | 2008-04-30 |  |  |  |
| 156 | 開発サポート | 1d? | 2008-04-30 | 2008-04-30 | 7FF | finish no earlier than 2008-03-13 | 中島高伸 |
| 157 | 安定度を上げる | 16d? | 2008-02-08 | 2008-02-29 |  | start no earlier than 2008-02-08 | 中島高伸 |
| 158 | NTRモードデバッグ | 26d? | 2008-02-08 | 2008-03-14 |  | start no earlier than 2008-02-08 | 中島高伸 |
| 159 | **NANDアプリデバッグ** | 20d? | 2008-03-03 | 2008-03-28 |  |  |  |
| 160 | 暫定対応 | 10d? | 2008-03-03 | 2008-03-14 |  | start no earlier than 2008-03-03 | 中島高伸; 吉岡照幸 |
| 161 | 本対応 | 10d | 2008-03-17 | 2008-03-28 | 160 |  | 中島高伸; 吉岡照幸 |
| 162 | ハードウェアリセット対応 | 6d | 2008-04-04 | 2008-04-14 | 7SF | finish no earlier than 2008-02-29 |  |
| 165 | ネットワークアップデート | 1d? | 2008-02-08 | 2008-02-08 |  |  |  |
| 173 | 領域のワーニング修正 | 1d? | 2008-02-08 | 2008-02-08 |  |  | 吉岡照幸 |
| 174 | TWL領域用キーテーブル埋め込み | 1d? | 2008-02-08 | 2008-02-08 |  |  | 吉岡照幸 |
| 200 | TWLカードのTWL領域用キーテーブル生成ツール | 7d? | 2008-03-21 | 2008-03-31 |  | finish no earlier than 2008-03-31 | 中島高伸 |

Removed: 50 NTRモード起動; 59 カードセキュリティの解除; 63 フォーマット; 64 API; 81 仕様策定; 143 IS; 144 IS-TWL-DEBUGGER; 145 IS-TWL-CAPUTURE

Changed:

| ID | Task | Start | Finish | Duration | Complete | Total float | Predecessors | Other |
| --- | --- | --- | --- | --- | --- | --- | --- | --- |
| 23 | ランチャー |  |  | 0.5d? → 1d? |  | 99.5d → 99d |  |  |
| 25 | ショップ |  |  | 1d? → 0.5d? |  | 99d → 99.5d |  | resources none → 中谷; 和田 |
| 39 | **本体設定データ** |  | 2008-02-08 → 2008-02-29 (+21d) | 1d? → 16d? |  | 99d → 84d |  |  |
| 72 | **REDシステムメニュー** | 2008-02-08 A | 2008-02-08 → 2008-04-30 (+82d) | 1d? → 59d? | 0% → 13% | 99d → 41d |  |  |
| 73 | **ランチャー** | 2008-02-08 A | 2008-02-08 → 2008-04-30 (+82d) | 1d? → 59d? | 0% → 13% | 99d → 41d |  |  |
| 75 | **アプリ起動** | 2008-02-08 A | 2008-02-08 → 2008-03-06 (+27d) | 1d? → 20d? | 0% → 23% | 99d → 80d |  |  |
| 76 | **起動時処理** | 2008-02-08 A | 2008-02-08 → 2008-03-05 (+26d) | 1d? → 19d? | 0% → 16% | 99d → 81d |  | was named 起動時のプロパティ |
| 78 | NANDファイルのアクセス制限 | 2008-02-08 A |  |  | 0% → 50% |  |  | resources none → 吉岡照幸 |
| 79 | カード電源状態 |  |  |  |  |  |  | resources none → 赤羽淳平 |
| 80 | カード活線挿抜可否 |  |  |  |  |  |  | resources none → 中島高伸 |
| 81 | SDカードアクセス可否 | 2008-02-08 A |  |  | 0% → 50% |  |  | resources none → 中島高伸 |
| 82 | Codecモード切替 | 2008-02-08 A | 2008-02-08 A |  | 0% → 100% | 99d → none |  | resources none → 中島高伸 |
| 83 | SCFGレジスタロック（ユーザーアプリは必ず） | 2008-02-08 A | 2008-02-08 A |  | 0% → 100% | 99d → none |  | was named SCFGレジスタロック; resources none → 中島高伸 |
| 91 | 該当ソフト調査 |  |  |  |  |  |  | resources none → 三田健太朗 |
| 93 | **アプリ認証処理** | 2008-02-08 A | 2008-02-08 → 2008-02-22 (+14d) | 1d? → 11d? | 0% → 46% | 99d → 89d |  |  |
| 94 | **NTRアプリのR4対策** |  |  |  |  |  |  | resources 村上豊 → none |
| 98 | **TWLアプリ** | 2008-02-08 A | 2008-02-08 → 2008-02-22 (+14d) | 1d? → 11d? | 0% → 50% | 99d → 89d |  |  |
| 99 | カードアプリ | 2008-02-08 A | 2008-02-08 → 2008-02-22 (+14d) | 1d? → 11d? | 0% → 50% | 99d → 89d |  | constraint none → finish no earlier than 2008-02-22 |
| 100 | NANDアプリ | 2008-02-08 A | 2008-02-08 → 2008-02-22 (+14d) | 1d? → 11d? | 0% → 50% | 99d → 89d |  | constraint none → finish no earlier than 2008-02-22 |
| 103 | NTR無線パッチ |  | 2008-02-08 → 2008-02-29 (+21d) | 1d? → 16d? |  | 99d → 84d |  | constraint none → start no earlier than 2008-02-08 |
| 104 | **アプリジャンプ** | 2008-02-08 A | 2008-02-08 → 2008-04-11 (+63d) | 1d? → 46d? | 0% → 15% | 99d → 54d |  | was named HWリセット制御 |
| 105 | **任意アプリの直接起動** | 2008-02-08 A |  |  | 0% → 87% |  |  |  |
| 106 | 未ロード状態のアプリ起動 | 2008-02-08 A | 2008-02-08 A |  | 0% → 100% | 99d → none |  |  |
| 107 | メモリ上にロードされた状態のアプリ起動 | 2008-02-08 A |  |  | 0% → 80% |  |  |  |
| 108 | NANDのTMPフォルダに一時格納された状態のアプリ起動 | 2008-02-08 A |  |  | 0% → 80% |  |  |  |
| 109 | ランチャーメニューに戻る | 2008-02-08 A | 2008-02-08 A |  | 0% → 100% | 99d → none |  |  |
| 110 | ファイル関連付けアプリ起動 | 2008-02-08 → 2008-03-17 (+38d) | 2008-02-08 → 2008-04-11 (+63d) | 1d? → 20d |  | 99d → 54d | none → 55 |  |
| 111 | Hot/Coldスタート判定 | 2008-02-08 A |  |  | 0% → 80% |  |  |  |
| 112 | TMPフォルダクリーン | 2008-02-08 A |  |  | 0% → 50% |  |  |  |
| 115 | 初回バックライトON |  |  |  |  |  |  | resources none → 吉岡照幸 |
| 116 | **無線** | 2008-02-08 A | 2008-02-08 → 2008-03-14 (+35d) | 1d? → 26d? | 0% → 3% | 99d → 74d |  |  |
| 117 | **新無線ファームロード** | 2008-02-08 A | 2008-02-08 → 2008-03-14 (+35d) | 1d? → 26d? | 0% → 3% | 99d → 74d |  |  |
| 118 | ダミーROMヘッダ作成ツール | 2008-02-08 A | 2008-02-08 A |  | 0% → 100% | 99d → none |  |  |
| 119 | **ファーム** |  | 2008-02-08 → 2008-02-25 (+17d) | 1d? → 12d? |  | 99d → 88d |  |  |
| 120 | ファーム作成 |  | 2008-02-08 → 2008-02-25 (+17d) | 1d? → 12d? |  | 99d → 88d |  | constraint none → finish no earlier than 2008-02-25 |
| 121 | **実装** |  | 2008-02-08 → 2008-03-14 (+35d) | 1d? → 26d? |  | 99d → 74d |  |  |
| 122 | 無線ライブラリ |  | 2008-02-08 → 2008-02-25 (+17d) | 1d? → 12d? |  | 99d → 88d |  | constraint none → start no earlier than 2008-02-08 |
| 123 | ランチャー仮実装 |  | 2008-02-08 → 2008-02-15 (+7d) | 1d? → 6d? |  | 99d → 94d |  | constraint none → start no earlier than 2008-02-08 |
| 124 | ランチャー本実装 | 2008-02-08 → 2008-03-10 (+31d) | 2008-02-08 → 2008-03-14 (+35d) | 1d? → 5d? |  | 99d → 74d | none → 179 | constraint none → start no earlier than 2008-03-10 |
| 129 | アプリリスト取得 | 2008-02-08 A |  |  | 0% → 70% |  |  |  |
| 130 | **バナー** | 2008-02-08 A |  |  | 0% → 90% |  |  |  |
| 131 | バナードライバ | 2008-02-08 A |  |  | 0% → 90% |  |  |  |
| 132 | サブバナーファイル（FSレイヤ） | 2008-02-08 A |  |  | 0% → 90% |  |  | was named セーブバナーファイル |
| 133 | **活線挿抜** | 2008-02-08 A | 2008-02-08 → 2008-02-29 (+21d) | 1d? → 16d? | 0% → 19% | 99d → 74d |  |  |
| 136 | 挿抜負荷耐性 | 2008-02-08 A | 2008-02-08 → 2008-02-29 (+21d) | 1d? → 16d? | 0% → 2% | 99d → 74d |  | constraint none → finish no earlier than 2008-02-29 |
| 137 | **ロード** | 2008-02-08 A | 2008-02-08 → 2008-02-29 (+21d) | 1d? → 16d? | 0% → 23% | 99d → 74d |  |  |
| 138 | NTRカード対応 | 2008-02-08 A | 2008-02-08 → 2008-02-29 A (+21d) | 1d? → 16d? | 0% → 100% | 99d → none |  |  |
| 139 | TWLカード対応 | 2008-02-08 A | 2008-02-08 → 2008-02-29 (+21d) | 1d? → 16d? | 0% → 1% | 99d → 74d |  | constraint none → finish no earlier than 2008-02-29 |
| 140 | カードType1,Type2対応 | 2008-02-08 A | 2008-02-08 → 2008-02-29 (+21d) | 1d? → 16d? | 0% → 5% | 99d → 74d |  | was named カードType1,2対応; constraint none → finish no earlier than 2008-02-29 |
| 141 | **Blowfishデコード** | 2008-02-08 A | 2008-02-08 → 2008-02-29 (+21d) | 1d? → 16d? | 0% → 53% | 99d → 74d |  | resources 赤羽淳平 → none |
| 147 | 表示との連動 |  | 2008-02-08 → 2008-02-29 (+21d) | 1d? → 16d? |  | 99d → 74d |  | constraint none → start no earlier than 2008-02-08 |
| 148 | 起動との連動 |  | 2008-02-08 → 2008-02-29 (+21d) | 1d? → 16d? |  | 99d → 74d |  | constraint none → start no earlier than 2008-02-08 |
| 149 | ARM9/ARM7対応 | 2008-02-08 → 2008-03-03 (+24d) | 2008-02-08 → 2008-03-07 (+28d) | 1d? → 5d |  | 99d → 79d | none → 134, 137 | constraint none → finish no earlier than 2008-02-29 |
| 150 | 速度チューニング | 2008-02-08 → 2008-03-03 (+24d) | 2008-02-08 → 2008-03-14 (+35d) | 1d? → 10d |  | 99d → 74d | none → 134, 137 | constraint none → finish no earlier than 2008-02-29 |
| 151 | **ホットスポットサーチ** |  | 2008-02-08 → 2008-02-26 (+18d) | 1d? → 13d? |  | 99d → 87d |  |  |
| 152 | ライブラリ作成 |  | 2008-02-08 → 2008-02-22 (+14d) | 1d? → 11d? |  | 99d → 87d |  | constraint none → start no earlier than 2008-02-08; resources none → ネットワーク開発部 |
| 153 | ランチャーへの組み込み | 2008-02-08 → 2008-02-25 (+17d) | 2008-02-08 → 2008-02-26 (+18d) | 1d? → 2d |  | 99d → 87d | none → 152 |  |
| 154 | バッテリエクステンション | 2008-02-08 → 2008-03-03 (+24d) | 2008-02-08 → 2008-03-07 (+28d) | 1d? → 5d |  | 99d → 79d | none → 62 | constraint none → finish no earlier than 2008-02-29 |
| 164 | **本体設定** |  |  | 0.5d? → 1d? |  | 99.5d → 99d |  |  |
| 170 | **SDK** | 2008-02-08 A |  |  | 0% → 2% |  |  |  |
| 185 | **ライブラリ** | 2008-02-08 A |  |  | 0% → 5% |  |  |  |
| 186 | reboot | 2008-02-08 A |  |  | 0% → 50% |  |  |  |

## Version 4 (saved 2008-02-14)

Note of the change: たたき台を整形

Last finish 2008-06-26 → 2008-06-20 (-6d).

Added:

| ID | Task | Duration | Start | Finish | Constraint |
| --- | --- | --- | --- | --- | --- |
| 1 | **TS-board 3 納品開始** | 30d | 2008-02-13 | 2008-03-13 |  |
| 2 | 先行20台 | 1d | 2008-02-13 | 2008-02-13 | start no earlier than 2008-02-13 |
| 3 | 380台 | 1d | 2008-03-13 | 2008-03-13 | start no earlier than 2008-03-13 |
| 5 | **IS-TWL-DEBUGGER納品開始** | 92d | 2008-03-03 | 2008-06-02 |  |
| 6 | 先行5台 | 1d | 2008-03-03 | 2008-03-03 | start no earlier than 2008-03-03 |
| 7 | 第一弾100台 | 1d | 2008-04-14 | 2008-04-14 | start no earlier than 2008-04-14 |
| 8 | 第二弾200台 | 1d | 2008-05-05 | 2008-05-05 | start no earlier than 2008-05-05 |
| 9 | 第三弾300台 | 1d | 2008-05-20 | 2008-05-20 | start no earlier than 2008-05-20 |
| 10 | 月産500台 | 1d | 2008-06-02 | 2008-06-02 | start no earlier than 2008-06-02 |
| 11 | **量産試作納品開始** | 116d | 2008-02-26 | 2008-06-20 |  |
| 12 | ミニ量試200台 | 1d | 2008-02-26 | 2008-02-26 | start no earlier than 2008-02-26 |
| 13 | 量試1 600台 | 1d | 2008-04-21 | 2008-04-21 | start no earlier than 2008-04-21 |
| 14 | 量試2 600台 | 1d | 2008-05-23 | 2008-05-23 | start no earlier than 2008-05-23 |
| 15 | 量試3 600台 | 1d | 2008-06-20 | 2008-06-20 | start no earlier than 2008-06-20 |
| 18 | **REDランチャー開発マイルストーン** | 66d | 2008-02-08 | 2008-04-13 |  |
| 19 | スタート | 1d | 2008-02-08 | 2008-02-08 | start no earlier than 2008-02-08 |
| 20 | 第1ステップ（2月末） | 1d | 2008-03-02 | 2008-03-02 | start no earlier than 2008-03-02 |
| 21 | 第2ステップ（3月中旬） | 1d | 2008-03-16 | 2008-03-16 | start no earlier than 2008-03-16 |
| 22 | 第3ステップ（3月末） | 1d | 2008-03-30 | 2008-03-30 | start no earlier than 2008-03-30 |
| 23 | 第4ステップ | 1d | 2008-04-06 | 2008-04-06 | start no earlier than 2008-04-06 |
| 24 | 第5ステップ | 1d | 2008-04-13 | 2008-04-13 | start no earlier than 2008-04-13 |

Removed: 1 TS3(20台)先行納品開始; 3 IS-TWL-DEBUGGER(5台)先行納品開始; 4 TS3（380台)納品開始; 5 ミニ量産試作(200台); 7 IS-TWL-DEBUGGER(100台); 8 量産試作1(600台); 9 IS-TWL-DEBUGGER(200台); 10 IS-TWL-DEBUUGER(300台); 11 量産試作2(600台); 12 IS-TWL-DEBUGGER(月産500台); 13 量産試作3(600台); 15 REDランチャー開発 第１ステップ; 16 REDランチャー開発 第２ステップ; 181 共有コンテンツ対応

Changed:

| ID | Task | Start | Finish | Duration | Complete | Total float | Predecessors | Other |
| --- | --- | --- | --- | --- | --- | --- | --- | --- |
| 26 | 無線モジュール（ファームロード対応版）受領 | 2008-02-08 → 2008-02-11 (+3d) | 2008-02-08 → 2008-03-16 (+37d) | 1d? → 25d |  | 99d → 97d | none → 19, 21SF | constraint none → start no earlier than 2008-02-11; resources none → ？ |
| 28 | NANDファーム | 2008-02-08 → 2008-02-11 (+3d) | 2008-02-08 → 2008-03-16 (+37d) | 1d? → 25d |  | 99d → 97d | none → 19, 21SF |  |
| 30 | **仕様策定** |  | 2008-03-14 → 2008-03-30 (+16d) | 26d? → 51d? |  | 74d → 83d |  |  |
| 31 | **ランチャー** |  | 2008-03-14 → 2008-03-30 (+16d) | 26d? → 51d? |  | 74d → 83d |  |  |
| 32 | アプリのNintendoロゴ表示 | 2008-02-08 → 2008-02-11 (+3d) | 2008-02-29 → 2008-03-02 (+2d) | 16d? → 15d |  | 84d → 111d | none → 19, 20SF |  |
| 33 | **EURA表示** | 2008-02-08 → 2008-02-11 (+3d) | 2008-03-14 → 2008-03-30 (+16d) | 26d? → 48d |  | 74d → 83d |  |  |
| 34 | NCL Fix | 2008-02-08 → 2008-02-11 (+3d) | 2008-02-29 → 2008-03-02 (+2d) | 16d? → 15d |  | 84d → 83d | none → 19, 20SF |  |
| 35 | NOA, NOE Fix | 2008-02-08 → 2008-03-03 (+24d) | 2008-03-14 → 2008-03-30 (+16d) | 26d? → 20d |  | 74d → 83d | none → 34, 22SF |  |
| 36 | **本体設定データ** | 2008-02-08 → 2008-02-11 (+3d) | 2008-02-29 → 2008-03-02 (+2d) | 16d? → 20d |  | 84d → 111d |  |  |
| 37 | ペアレンタルコントロール（レーティング以外のデータ構造） | 2008-02-08 → 2008-02-11 (+3d) | 2008-02-29 → 2008-03-02 (+2d) | 16d? → 15d |  | 84d → 111d | none → 19, 20SF | constraint start no earlier than 2008-02-08 → start no earlier than 2008-02-11; resources 松島愛佑; 総務部 → 松島愛佑; 総務部; 三田健太朗 |
| 38 | 顔写真 | 2008-02-08 → 2008-02-11 (+3d) | 2008-02-29 → 2008-03-02 (+2d) | 16d? → 15d |  | 84d → 111d | none → 19, 20SF |  |
| 39 | **NANDファイルアクセス制限** | 2008-02-08 → 2008-02-11 (+3d) | 2008-02-29 → 2008-03-16 (+16d) | 16d? → 34d |  | 84d → 97d |  |  |
| 40 | 同一メーカの他タイトルのセーブデータ（ReadOnly） | 2008-02-08 → 2008-02-11 (+3d) | 2008-02-29 → 2008-03-16 (+16d) | 16d? → 25d |  | 84d → 97d | none → 19, 21SF | resources none → 吉岡照幸 |
| 41 | TMPブートをする際のTMPフォルダ（Write） | 2008-02-08 → 2008-02-11 (+3d) | 2008-02-22 → 2008-03-16 (+23d) | 11d? → 25d |  | 89d → 97d | none → 19, 21SF | resources none → 吉岡照幸 |
| 42 | フォントの共有コンテンツ化（ReadOnly） | 2008-02-08 → 2008-02-11 (+3d) | 2008-02-22 → 2008-03-16 (+23d) | 11d? → 25d |  | 89d → 97d | none → 19, 21SF | resources none → 吉岡照幸 |
| 43 | ESライブラリのほぼ全部アクセス | 2008-02-08 → 2008-02-11 (+3d) | 2008-02-22 → 2008-03-16 (+23d) | 11d? → 25d |  | 89d → 97d | none → 19, 21SF | resources none → 吉岡照幸 |
| 44 | 本体設定データ（ReadOnly） | 2008-02-08 → 2008-02-11 (+3d) | 2008-02-22 → 2008-03-16 (+23d) | 11d? → 25d |  | 89d → 97d | none → 19, 21SF | resources none → 吉岡照幸 |
| 45 | **SDに作成するフォルダ名** |  | 2008-02-22 → 2008-03-16 (+23d) | 11d? → 37d? | 4% → 2% | 89d → 97d |  |  |
| 46 | TWL正式名称を使えるかを確認 | 2008-02-08 → 2008-02-11 (+3d) | 2008-02-22 → 2008-03-16 (+23d) | 11d? → 25d |  | 89d → 97d | none → 19, 21SF |  |
| 48 | TWLでのフォルダ構成のたたき台 | 2008-02-08 → 2008-02-11 (+3d) | 2008-02-22 → 2008-03-02 (+9d) | 11d? → 15d |  | 89d → 111d | none → 19, 20SF |  |
| 49 | **NTRアプリのR4対策** | 2008-02-08 → 2008-02-11 (+3d) | 2008-02-29 → 2008-03-02 (+2d) | 16d? → 20d |  | 84d → 111d |  |  |
| 50 | どのレベルでやるかの方針決定 | 2008-02-08 → 2008-02-11 (+3d) | 2008-02-29 → 2008-03-02 (+2d) | 16d? → 15d |  | 84d → 111d | none → 19, 20SF | resources none → ？ |
| 51 | **アプリジャンプの取捨選択** | 2008-02-08 → 2008-02-11 (+3d) | 2008-03-14 → 2008-03-02 (-12d) | 26d? → 20d |  | 54d → 97d |  |  |
| 52 | ファイル関連付けアプリ起動をやるかやらないか？ | 2008-02-08 → 2008-02-11 (+3d) | 2008-03-14 → 2008-03-02 (-12d) | 26d? → 15d |  | 54d → 97d | none → 19, 20SF | constraint finish no earlier than 2008-03-14 → none; resources none → 吉岡照幸 |
| 53 | **バナー仕様** |  |  | 0.33d? → 1d |  |  |  |  |
| 54 | サブバナー |  |  | 0.33d? → 1d |  |  | none → 19, 21SF |  |
| 55 | TWLバナー |  |  | 0.33d? → 1d |  |  | none → 19, 21SF |  |
| 56 | **バックライト輝度の値、段階** | 2008-02-08 → 2008-02-11 (+3d) | 2008-02-29 → 2008-03-02 (+2d) | 16d? → 20d |  | 84d → 111d |  |  |
| 57 | 上限、下限決定 | 2008-02-08 → 2008-02-11 (+3d) | 2008-02-29 → 2008-03-02 (+2d) | 16d? → 15d |  | 84d → 111d | none → 19, 20SF |  |
| 58 | 段階数、各輝度レベル決定 | 2008-02-08 → 2008-02-11 (+3d) | 2008-02-29 → 2008-03-02 (+2d) | 16d? → 15d |  | 84d → 111d | none → 19, 20SF |  |
| 59 | バッテリエクステンション | 2008-02-08 → 2008-02-11 (+3d) | 2008-02-29 → 2008-03-02 (+2d) | 16d? → 15d |  | 79d → 97d | none → 19, 20SF |  |
| 60 | **無線** |  | 2008-02-08 → 2008-03-02 (+23d) | 1d? → 23d? | 86% → 12% | 99d → 111d |  |  |
| 61 | WiFiエミュレーション | 2008-02-08 → 2008-02-11 (+3d) | 2008-02-08 → 2008-03-02 (+23d) | 0.33d? → 15d |  | 99.67d → 111d | none → 19, 20SF |  |
| 65 | **X3ボード対応** | 2008-02-08 A → 2008-02-11 A (+3d) | 2008-02-18 → 2008-03-02 (+13d) | 7d? → 20d |  | 93d → 111d |  |  |
| 66 | ランチャー | 2008-02-08 A → 2008-02-11 A (+3d) | 2008-02-18 → 2008-03-02 (+13d) | 7d? → 15d |  | 93d → 111d | none → 19, 20SF |  |
| 67 | ISデバッガ | 2008-02-08 A → 2008-02-11 A (+3d) | 2008-02-18 → 2008-03-02 (+13d) | 7d? → 15d |  | 93d → 111d | none → 19, 20SF |  |
| 69 | **REDシステムメニュー** |  | 2008-04-30 → 2008-04-14 (-16d) | 59d? → 67d? | 13% → 23% | 41d → 67d |  |  |
| 70 | **ランチャー** |  | 2008-04-30 → 2008-04-14 (-16d) | 59d? → 67d? | 13% → 24% | 41d → 67d |  |  |
| 71 | ランチャー用ARM7コンポーネント | 2008-02-08 → 2008-02-11 (+3d) | 2008-03-14 → 2008-03-16 (+2d) | 26d? → 25d |  | 74d → 97d | none → 19, 21SF |  |
| 72 | **アプリ起動** | 2008-02-08 A → 2008-02-11 A (+3d) | 2008-03-06 → 2008-03-30 (+24d) | 20d? → 48d | 23% → 27% | 80d → 83d |  |  |
| 73 | **起動時処理** | 2008-02-08 A → 2008-02-11 A (+3d) | 2008-03-05 → 2008-03-02 (-3d) | 19d? → 20d | 16% → 40% | 81d → 111d |  |  |
| 74 | 鍵の引渡し | 2008-02-08 → 2008-02-11 (+3d) | 2008-02-08 → 2008-03-02 (+23d) | 1d? → 15d |  | 99d → 111d | none → 19, 20SF | resources none → 吉田光寿 |
| 75 | NANDファイルのアクセス制限 | 2008-02-08 A → 2008-02-11 A (+3d) | 2008-02-08 → 2008-03-02 (+23d) | 1d? → 15d |  | 99d → 111d | none → 19, 20SF |  |
| 76 | カード電源状態 | 2008-02-08 → 2008-02-11 (+3d) | 2008-02-08 → 2008-03-02 (+23d) | 1d? → 15d |  | 99d → 111d | none → 19, 20SF |  |
| 77 | カード活線挿抜可否 | 2008-02-08 → 2008-02-11 (+3d) | 2008-02-08 → 2008-03-02 (+23d) | 1d? → 15d |  | 99d → 111d | none → 19, 20SF |  |
| 78 | SDカードアクセス可否 | 2008-02-08 A → 2008-02-11 A (+3d) | 2008-02-08 → 2008-03-02 (+23d) | 1d? → 15d |  | 99d → 111d | none → 19, 20SF |  |
| 79 | Codecモード切替 | 2008-02-08 A → 2008-02-11 A (+3d) | 2008-02-08 A → 2008-03-02 A (+23d) | 1d? → 15d |  |  | none → 19, 20SF |  |
| 80 | SCFGレジスタロック（ユーザーアプリは必ず） | 2008-02-08 A → 2008-02-11 A (+3d) | 2008-02-08 A → 2008-03-02 A (+23d) | 1d? → 15d |  |  | none → 19, 20SF |  |
| 81 | アプリ再配置 | 2008-02-08 A → 2008-02-11 A (+3d) | 2008-02-08 A → 2008-03-02 A (+23d) | 1d? → 15d |  |  | none → 19, 20SF |  |
| 82 | メモリクリア | 2008-02-08 → 2008-02-11 (+3d) | 2008-02-08 → 2008-03-02 (+23d) | 0.5d? → 15d |  | 99d → 111d | none → 19, 20SF |  |
| 83 | **レジスタクリア** | 2008-02-08 → 2008-02-11 (+3d) | 2008-03-05 → 2008-03-02 (-3d) | 19d? → 20d |  | 80.5d → 111d |  |  |
| 84 | 各ハード担当者にクリアする領域を洗い出してもらう | 2008-02-08 → 2008-02-11 (+3d) | 2008-02-29 → 2008-02-22 (-7d) | 16d? → 10d |  | 82.5d → 112d | none → 19 |  |
| 85 | クリア処理実装 | 2008-03-05 → 2008-02-25 (-9d) | 2008-03-05 → 2008-03-02 (-3d) | 1d? → 5d |  | 80.5d → 111d | 84 → 84, 20SF | constraint finish no earlier than 2008-03-05 → none |
| 86 | **起動チェック** | 2008-02-08 → 2008-02-11 (+3d) | 2008-02-08 → 2008-03-16 (+37d) | 1d? → 34d |  | 99d → 97d |  |  |
| 87 | **AGBカートリッジが必要なソフトは起動禁止** | 2008-02-08 → 2008-02-11 (+3d) | 2008-02-08 → 2008-03-16 (+37d) | 1d? → 34d |  | 99d → 97d |  |  |
| 88 | 該当ソフト調査 | 2008-02-08 → 2008-02-11 (+3d) | 2008-02-08 → 2008-03-07 (+28d) | 1d? → 20d |  | 99d → 98d | none → 19 |  |
| 89 | チェックルーチン | 2008-02-08 → 2008-03-10 (+31d) | 2008-02-08 → 2008-03-16 (+37d) | 1d? → 5d |  | 99d → 97d | none → 88, 21SF | resources none → 吉田光寿 |
| 90 | **アプリ認証処理** | 2008-02-08 A → 2008-02-11 A (+3d) | 2008-02-22 → 2008-03-30 (+37d) | 11d? → 48d | 46% → 15% | 89d → 83d |  |  |
| 91 | **NTRアプリのR4対策** | 2008-02-08 → 2008-02-11 (+3d) | 2008-02-08 → 2008-03-30 (+51d) | 1d? → 48d |  | 99d → 83d |  |  |
| 92 | **ダイジェストとるやつ** | 2008-02-08 → 2008-02-11 (+3d) | 2008-02-08 → 2008-03-30 (+51d) | 1d? → 48d |  | 99d → 83d |  |  |
| 93 | TWL側実装 | 2008-02-08 → 2008-02-11 (+3d) | 2008-02-08 → 2008-03-30 (+51d) | 1d? → 35d |  | 99d → 83d | none → 19, 22SF |  |
| 94 | ダイジェストリスト作成 | 2008-02-08 → 2008-02-11 (+3d) | 2008-02-08 → 2008-03-30 (+51d) | 1d? → 35d |  | 99d → 83d | none → 19, 22SF |  |
| 95 | **TWLアプリ** | 2008-02-08 A → 2008-02-11 A (+3d) | 2008-02-22 → 2008-03-02 (+9d) | 11d? → 20d |  | 89d → 111d |  |  |
| 96 | カードアプリ | 2008-02-08 A → 2008-02-11 A (+3d) | 2008-02-22 → 2008-03-02 (+9d) | 11d? → 15d |  | 89d → 111d | none → 19, 20SF |  |
| 97 | NANDアプリ | 2008-02-08 A → 2008-02-11 A (+3d) | 2008-02-22 → 2008-03-02 (+9d) | 11d? → 15d |  | 89d → 111d | none → 19, 20SF |  |
| 98 | **NTRアプリ起動** | 2008-02-08 A → 2008-02-11 A (+3d) | 2008-03-06 → 2008-03-16 (+10d) | 20d? → 34d | 3% → 25% | 80d → 97d |  |  |
| 99 | NTRモード切替 | 2008-03-06 A → 2008-02-11 A (-24d) | 2008-03-06 → 2008-03-16 (+10d) | 1d? → 25d |  | 80d → 97d | 82, 83 → 82FF, 83FF, 21SF |  |
| 100 | NTR無線パッチ | 2008-02-08 → 2008-02-11 (+3d) | 2008-02-29 → 2008-03-16 (+16d) | 16d? → 25d |  | 84d → 97d | none → 19, 21SF |  |
| 101 | **アプリジャンプ** | 2008-02-08 A → 2008-02-11 A (+3d) | 2008-04-11 → 2008-03-16 (-26d) | 46d? → 34d | 15% → 77% | 54d → 97d |  |  |
| 102 | **任意アプリの直接起動** | 2008-02-08 A → 2008-02-11 A (+3d) | 2008-02-08 → 2008-03-02 (+23d) | 1d? → 20d |  | 99d → 111d |  |  |

| ID | Task | Start | Finish | Duration | Complete | Total float | Predecessors | Other |
| --- | --- | --- | --- | --- | --- | --- | --- | --- |
| 103 | 未ロード状態のアプリ起動 | 2008-02-08 A → 2008-02-11 A (+3d) | 2008-02-08 A → 2008-03-02 A (+23d) | 1d? → 15d |  |  | none → 19, 20SF |  |
| 104 | メモリ上にロードされた状態のアプリ起動 | 2008-02-08 A → 2008-02-11 A (+3d) | 2008-02-08 → 2008-03-02 (+23d) | 1d? → 15d |  | 99d → 111d | none → 19, 20SF |  |
| 105 | NANDのTMPフォルダに一時格納された状態のアプリ起動 | 2008-02-08 A → 2008-02-11 A (+3d) | 2008-02-08 → 2008-03-02 (+23d) | 1d? → 15d |  | 99d → 111d | none → 19, 20SF |  |
| 106 | ランチャーメニューに戻る | 2008-02-08 A → 2008-02-11 A (+3d) | 2008-02-08 A → 2008-03-02 A (+23d) | 1d? → 15d |  |  | none → 19, 20SF |  |
| 107 | ファイル関連付けアプリ起動 | 2008-03-17 → 2008-03-03 (-14d) | 2008-04-11 → 2008-03-16 (-26d) | 20d → 10d |  | 54d → 97d | 52 → 52, 21SF | resources none → ？ |
| 108 | Hot/Coldスタート判定 | 2008-02-08 A → 2008-02-11 A (+3d) | 2008-02-08 → 2008-03-02 (+23d) | 0.5d? → 15d |  | 99.5d → 111d | none → 19, 20SF |  |
| 109 | TMPフォルダクリーン | 2008-02-08 A → 2008-02-11 A (+3d) | 2008-02-08 → 2008-03-02 (+23d) | 1d? → 15d |  | 99d → 111d | none → 19, 20SF |  |
| 110 | 本体設定データetcのロード | 2008-02-08 A → 2008-02-11 A (+3d) | 2008-02-08 → 2008-03-02 (+23d) | 1d? → 15d |  | 99d → 111d | none → 19, 20SF |  |
| 111 | RTC初期化 | 2008-02-08 A → 2008-02-11 A (+3d) | 2008-02-08 → 2008-03-02 (+23d) | 1d? → 15d |  | 99d → 111d | none → 19, 20SF |  |
| 112 | 初回バックライトON | 2008-02-08 → 2008-02-11 (+3d) | 2008-02-08 → 2008-03-02 (+23d) | 1d? → 15d |  | 99d → 111d | none → 19, 20SF |  |
| 113 | **無線** |  | 2008-03-14 → 2008-03-30 (+16d) | 26d? → 51d? | 3% → 1% | 74d → 83d |  |  |
| 114 | **新無線ファームロード** |  | 2008-03-14 → 2008-03-21 (+7d) | 26d? → 43d? | 3% → 2% | 74d → 91d |  |  |
| 115 | ダミーROMヘッダ作成ツール |  |  | 1d? → 1d |  |  |  |  |
| 116 | **ファーム** |  |  | 12d? → 18d? |  | 88d → 116d |  |  |
| 118 | **実装** |  | 2008-03-14 → 2008-03-21 (+7d) | 26d? → 43d? |  | 74d → 91d |  |  |
| 120 | ランチャー仮実装 | 2008-02-08 → 2008-02-11 (+3d) | 2008-02-15 → 2008-03-02 (+16d) | 6d? → 15d |  | 94d → 111d | none → 19, 20SF |  |
| 121 | ランチャー本実装 | 2008-03-10 → 2008-03-17 (+7d) | 2008-03-14 → 2008-03-21 (+7d) |  |  | 74d → 91d |  |  |
| 122 | **WiFiエミュレーション** | 2008-02-08 → 2008-02-11 (+3d) | 2008-02-08 → 2008-03-30 (+51d) | 1d? → 48d |  | 99d → 83d |  |  |
| 123 | コンポーネント作成 | 2008-02-08 → 2008-02-11 (+3d) | 2008-02-08 → 2008-03-30 (+51d) | 1d? → 35d |  | 99d → 83d | none → 19, 22SF |  |
| 124 | ロード処理 | 2008-02-08 → 2008-02-11 (+3d) | 2008-02-08 → 2008-03-30 (+51d) | 1d? → 35d |  | 99d → 83d | none → 19, 22SF |  |
| 125 | 無線終端処理 | 2008-02-08 → 2008-02-11 (+3d) | 2008-02-08 → 2008-03-16 (+37d) | 1d? → 25d |  | 99d → 97d | none → 19, 21SF |  |
| 126 | アプリリスト取得 | 2008-02-08 A → 2008-02-11 A (+3d) | 2008-02-08 → 2008-03-02 (+23d) | 1d? → 15d |  | 99d → 111d | none → 19, 20SF |  |
| 127 | **バナー** | 2008-02-08 A → 2008-02-11 A (+3d) | 2008-02-08 → 2008-03-02 (+23d) | 1d? → 20d |  | 99d → 111d |  |  |
| 128 | バナードライバ | 2008-02-08 A → 2008-02-11 A (+3d) | 2008-02-08 → 2008-03-02 (+23d) | 1d? → 15d |  | 99d → 111d | none → 19, 20SF |  |
| 129 | サブバナーファイル（FSレイヤ） | 2008-02-08 A → 2008-02-11 A (+3d) | 2008-02-08 → 2008-03-02 (+23d) | 0.5d? → 15d |  | 99.5d → 111d | none → 19, 20SF |  |
| 130 | **活線挿抜** | 2008-02-08 A → 2008-02-11 A (+3d) | 2008-02-29 → 2008-03-02 (+2d) | 16d? → 20d | 19% → 18% | 74d → 97d |  |  |
| 131 | **活線挿抜アルゴリズムをFIX** | 2008-02-08 A → 2008-02-11 (+3d) | 2008-02-29 → 2008-03-02 (+2d) | 16d? → 20d | 1% → 0% | 74d → 97d |  |  |
| 132 | コードの整理 | 2008-02-08 → 2008-02-11 (+3d) | 2008-02-29 → 2008-03-02 (+2d) | 16d? → 15d |  | 74d → 97d | none → 19, 20SF |  |
| 133 | 挿抜負荷耐性 | 2008-02-08 A → 2008-02-11 (+3d) | 2008-02-29 → 2008-03-02 (+2d) | 16d? → 15d | 2% → 0% | 74d → 97d | none → 19, 20SF |  |
| 134 | **ロード** | 2008-02-08 A → 2008-02-11 A (+3d) | 2008-02-29 → 2008-03-02 (+2d) | 16d? → 20d | 23% → 22% | 74d → 97d |  |  |
| 135 | NTRカード対応 | 2008-02-08 A → 2008-02-11 A (+3d) | 2008-02-29 A → 2008-03-02 A (+2d) | 16d? → 15d |  |  | none → 19, 20SF |  |
| 136 | TWLカード対応 | 2008-02-08 A → 2008-02-11 (+3d) | 2008-02-29 → 2008-03-02 (+2d) | 16d? → 15d | 1% → 0% | 74d → 97d | none → 19, 20SF |  |
| 137 | カードType1,Type2対応 | 2008-02-08 A → 2008-02-11 (+3d) | 2008-02-29 → 2008-03-02 (+2d) | 16d? → 15d | 5% → 0% | 74d → 97d | none → 19, 20SF |  |
| 138 | **Blowfishデコード** | 2008-02-08 A → 2008-02-11 A (+3d) | 2008-02-29 → 2008-03-02 (+2d) | 16d? → 20d | 53% → 50% | 74d → 97d |  |  |
| 139 | SRLの先頭2KB | 2008-02-08 A → 2008-02-11 A (+3d) | 2008-02-29 A → 2008-03-02 A (+2d) | 16d? → 15d |  |  | none → 19, 20SF |  |
| 140 | カードのコマンド処理 | 2008-02-08 A → 2008-02-11 (+3d) | 2008-02-29 → 2008-03-02 (+2d) | 16d? → 15d | 6% → 0% | 74d → 97d | none → 19, 20SF |  |
| 141 | **カードスロットAでの動作** | 2008-02-08 → 2008-02-11 (+3d) | 2008-02-29 → 2008-03-02 (+2d) | 16d? → 20d |  | 74d → 97d |  |  |
| 142 | SDKコードとのカードアクセス排他制御 | 2008-02-08 → 2008-02-11 (+3d) | 2008-02-29 → 2008-03-02 (+2d) | 16d? → 15d |  | 74d → 97d | none → 19, 20SF |  |
| 143 | Blowfish鍵の受け渡し | 2008-02-08 → 2008-02-11 (+3d) | 2008-02-29 → 2008-03-02 (+2d) | 16d? → 15d |  | 74d → 97d | none → 19, 20SF |  |
| 144 | 表示との連動 | 2008-02-08 → 2008-02-11 (+3d) | 2008-02-29 → 2008-03-02 (+2d) | 16d? → 15d |  | 74d → 97d | none → 19, 20SF |  |
| 145 | 起動との連動 | 2008-02-08 → 2008-02-11 (+3d) | 2008-02-29 → 2008-03-02 (+2d) | 16d? → 15d |  | 74d → 97d | none → 19, 20SF |  |
| 146 | ARM9/ARM7対応 |  | 2008-03-07 → 2008-03-16 (+9d) | 5d → 10d |  | 79d → 97d | 131, 134 → 131, 134, 21SF |  |
| 147 | 速度チューニング |  | 2008-03-14 → 2008-03-16 (+2d) |  |  | 74d → 97d | 131, 134 → 131, 134, 21SF |  |
| 148 | **ホットスポットサーチ** | 2008-02-08 → 2008-02-11 (+3d) | 2008-02-26 → 2008-03-02 (+5d) | 13d? → 20d |  | 87d → 111d |  |  |
| 149 | ライブラリ作成 | 2008-02-08 → 2008-02-11 (+3d) |  | 11d? → 10d |  | 87d → 112d | none → 19 |  |
| 150 | ランチャーへの組み込み |  | 2008-02-26 → 2008-03-02 (+5d) | 2d → 5d |  | 87d → 111d | 149 → 149, 20SF | resources none → 吉田光寿 |
| 151 | バッテリエクステンション |  | 2008-03-07 → 2008-03-16 (+9d) | 5d → 10d |  | 79d → 97d | 59 → 59, 21SF |  |
| 152 | **ISデバッガ対応** | 2008-02-08 → 2008-02-11 (+3d) | 2008-04-30 → 2008-04-14 (-16d) | 59d? → 64d |  | 41d → 67d |  |  |
| 153 | 開発サポート | 2008-04-30 → 2008-02-11 (-79d) | 2008-04-30 → 2008-04-14 (-16d) | 1d? → 46d |  | 41d → 67d | IS-TWL-DEBUGGER(100台)FF → 7FF |  |
| 154 | 安定度を上げる | 2008-02-08 → 2008-02-11 (+3d) | 2008-02-29 → 2008-03-02 (+2d) | 16d? → 15d |  | 84d → 111d | none → 19, 20SF |  |
| 155 | NTRモードデバッグ | 2008-02-08 → 2008-02-11 (+3d) | 2008-03-14 → 2008-03-16 (+2d) | 26d? → 25d |  | 74d → 97d | none → 19, 21SF |  |
| 156 | **NANDアプリデバッグ** | 2008-03-03 → 2008-02-11 (-21d) | 2008-03-28 → 2008-03-30 (+2d) | 20d? → 48d |  | 64d → 83d |  |  |
| 157 | 暫定対応 | 2008-03-03 → 2008-02-11 (-21d) | 2008-03-14 → 2008-03-16 (+2d) | 10d? → 25d |  | 64d → 83d | none → 19, 21SF | constraint start no earlier than 2008-03-03 → none |
| 158 | 本対応 |  | 2008-03-28 → 2008-03-30 (+2d) |  |  | 64d → 83d | 157 → 157, 22SF |  |
| 159 | ハードウェアリセット対応 | 2008-04-04 → 2008-02-11 (-53d) | 2008-04-14 → 2008-03-16 (-29d) | 6d → 25d |  | 54d → 97d | IS-TWL-DEBUGGER(100台)SF → 19, 21SF | resources none → 吉岡照幸 |
| 160 | WiFi設定 | 2008-02-08 → 2008-02-11 (+3d) | 2008-02-08 → 2008-03-02 (+23d) | 1d? → 15d |  | 99d → 111d | none → 19, 20SF | resources none → ？ |
| 161 | **本体設定** |  | 2008-02-08 → 2008-03-02 (+23d) | 1d? → 23d? |  | 99d → 111d |  |  |
| 162 | ネットワークアップデート |  |  |  |  | 99d → 133d |  | resources none → 吉岡照幸 |
| 163 | **本体初期化** | 2008-02-08 → 2008-02-11 (+3d) | 2008-02-08 → 2008-03-02 (+23d) | 1d? → 20d |  | 99d → 111d |  |  |
| 164 | ツール | 2008-02-08 → 2008-02-11 (+3d) | 2008-02-08 → 2008-03-02 (+23d) | 1d? → 15d |  | 99d → 111d | none → 19, 20SF |  |
| 165 | ライブラリ | 2008-02-08 → 2008-02-11 (+3d) | 2008-02-08 → 2008-03-02 (+23d) | 1d? → 15d |  | 99d → 111d | none → 19, 20SF |  |
| 167 | **SDK** | 2008-02-08 A → 2008-02-11 A (+3d) | 2008-02-08 → 2008-03-16 (+37d) | 1d? → 34d |  | 99d → 97d |  |  |
| 168 | **ツール** | 2008-02-08 → 2008-02-11 (+3d) | 2008-02-08 → 2008-03-16 (+37d) | 1d? → 34d |  | 94d → 91d |  |  |
| 169 | **makerom** | 2008-02-08 → 2008-02-11 (+3d) | 2008-02-08 → 2008-03-02 (+23d) | 1d? → 20d |  | 99d → 111d |  |  |
| 170 | 領域のワーニング修正 | 2008-02-08 → 2008-02-11 (+3d) | 2008-02-08 → 2008-03-02 (+23d) | 1d? → 15d |  | 99d → 111d | none → 19, 20SF |  |
| 171 | TWL領域用キーテーブル埋め込み | 2008-02-08 → 2008-02-11 (+3d) | 2008-02-08 → 2008-03-02 (+23d) | 1d? → 15d |  | 99d → 111d | none → 19, 20SF |  |
| 172 | NTR署名対応 | 2008-02-08 → 2008-02-11 (+3d) | 2008-02-08 → 2008-03-02 (+23d) | 1d? → 15d |  | 99d → 111d | none → 19, 20SF |  |
| 173 | ペアレンタルコントロール対応 | 2008-02-08 → 2008-02-11 (+3d) | 2008-02-08 → 2008-03-02 (+23d) | 1d? → 15d |  | 99d → 111d | none → 19, 20SF |  |
| 174 | SD使用可能特別版対応 | 2008-02-08 → 2008-02-11 (+3d) | 2008-02-08 → 2008-03-02 (+23d) | 1d? → 15d |  | 99d → 111d | none → 19, 20SF |  |
| 175 | システム/ショップアプリ開発特別版対応 | 2008-02-08 → 2008-02-11 (+3d) | 2008-02-08 → 2008-03-02 (+23d) | 1d? → 15d |  | 99d → 111d | none → 19, 20SF |  |

| ID | Task | Start | Finish | Duration | Complete | Total float | Predecessors | Other |
| --- | --- | --- | --- | --- | --- | --- | --- | --- |
| 176 | **maketad** | 2008-02-08 → 2008-02-11 (+3d) | 2008-02-08 → 2008-03-16 (+37d) | 1d? → 34d |  | 94d → 90d |  |  |
| 177 | バイナリファイル対応 | 2008-02-08 → 2008-02-11 (+3d) | 2008-02-08 → 2008-03-16 (+37d) | 1d? → 25d |  | 94d → 90d | none → 19, 21SF |  |
| 178 | **makebanner** | 2008-02-08 → 2008-02-11 (+3d) | 2008-02-08 → 2008-03-02 (+23d) | 1d? → 20d |  | 99d → 111d |  |  |
| 179 | NTRアイコンIN→TWLバナーOUT対応 | 2008-02-08 → 2008-02-11 (+3d) | 2008-02-08 → 2008-03-02 (+23d) | 1d? → 15d |  | 99d → 111d | none → 19, 20SF |  |
| 180 | bannercvtr | 2008-02-08 → 2008-02-11 (+3d) | 2008-02-08 → 2008-03-16 (+37d) | 1d? → 25d |  | 99d → 97d | none → 19, 21SF |  |
| 181 | **ライブラリ** | 2008-02-08 A → 2008-02-11 A (+3d) | 2008-02-08 → 2008-03-16 (+37d) | 1d? → 34d | 5% → 3% | 99d → 97d |  |  |
| 182 | reboot | 2008-02-08 A → 2008-02-11 A (+3d) | 2008-02-08 → 2008-03-02 (+23d) | 1d? → 15d |  | 99d → 111d | none → 19, 20SF |  |
| 183 | os/launcherParam | 2008-02-08 → 2008-02-11 (+3d) | 2008-02-08 → 2008-03-02 (+23d) | 1d? → 15d |  | 99d → 111d | none → 19, 20SF |  |
| 184 | lcfg | 2008-02-08 → 2008-02-11 (+3d) | 2008-02-08 → 2008-03-02 (+23d) | 1d? → 15d |  | 99d → 111d | none → 19, 20SF |  |
| 185 | nam | 2008-02-08 → 2008-02-11 (+3d) | 2008-02-08 → 2008-03-16 (+37d) | 1d? → 25d |  | 99d → 97d | none → 19, 21SF |  |
| 186 | マイコン | 2008-02-08 → 2008-02-11 (+3d) | 2008-02-08 → 2008-03-02 (+23d) | 1d? → 15d |  | 99d → 111d | none → 19, 20SF |  |
| 187 | カメラ | 2008-02-08 → 2008-02-11 (+3d) | 2008-02-08 → 2008-03-16 (+37d) | 1d? → 25d |  | 99d → 97d | none → 19, 21SF |  |
| 188 | Codec | 2008-02-08 → 2008-02-11 (+3d) | 2008-02-08 → 2008-03-02 (+23d) | 1d? → 15d |  | 99d → 111d | none → 19, 20SF |  |
| 189 | **FS** | 2008-02-08 → 2008-02-11 (+3d) | 2008-02-08 → 2008-03-16 (+37d) | 1d? → 34d |  | 99d → 97d |  |  |
| 190 | 電源OFF,リセット時の終端処理 | 2008-02-08 → 2008-02-11 (+3d) | 2008-02-08 → 2008-03-16 (+37d) | 1d? → 25d |  | 99d → 97d | none → 19, 21SF |  |
| 191 | FSのAES暗号化 | 2008-02-08 → 2008-02-11 (+3d) | 2008-02-08 → 2008-03-16 (+37d) | 0.5d? → 25d |  | 99.5d → 97d | none → 19, 21SF |  |
| 192 | 速度チューニング | 2008-02-08 → 2008-02-11 (+3d) | 2008-02-08 → 2008-03-16 (+37d) | 1d? → 25d |  | 99d → 97d | none → 19, 21SF |  |
| 193 | SRLのハッシュチェック | 2008-02-08 → 2008-02-11 (+3d) | 2008-02-08 → 2008-03-16 (+37d) | 1d? → 25d |  | 99d → 97d | none → 19, 21SF |  |
| 194 | NANDアクセス権管理 | 2008-02-08 → 2008-02-11 (+3d) | 2008-02-08 → 2008-03-16 (+37d) | 0.33d? → 25d |  | 99.67d → 97d | none → 19, 21SF |  |
| 196 | TWLカードのTWL領域用キーテーブル生成ツール | 2008-03-21 → 2008-02-11 (-39d) | 2008-03-31 → 2008-03-30 (-1d) | 7d? → 35d |  | 63d → 83d | none → 19, 22SF | constraint finish no earlier than 2008-03-31 → none |
| 198 | **eTicket** | 2008-02-08 → 2008-02-11 (+3d) | 2008-02-08 → 2008-03-30 (+51d) | 1d? → 48d |  | 99d → 83d |  |  |
| 199 | ESライブラリ | 2008-02-08 → 2008-02-11 (+3d) | 2008-02-08 → 2008-03-16 (+37d) | 1d? → 25d |  | 99d → 97d | none → 19, 21SF |  |
| 200 | **CLSサーバ** | 2008-02-08 → 2008-02-11 (+3d) | 2008-02-08 → 2008-03-30 (+51d) | 1d? → 48d |  | 99d → 83d |  |  |
| 201 | 開発用セットアップ | 2008-02-08 → 2008-02-11 (+3d) | 2008-02-08 → 2008-03-02 (+23d) | 1d? → 15d |  | 99d → 111d | none → 19, 20SF | resources none → 畠本 稔 |
| 202 | 製品用セットアップ | 2008-02-08 → 2008-02-11 (+3d) | 2008-02-08 → 2008-03-30 (+51d) | 1d? → 35d |  | 99d → 83d | none → 19, 22SF | resources none → 畠本 稔 |
| 203 | **NUPサーバ** | 2008-02-08 → 2008-02-11 (+3d) | 2008-02-08 → 2008-03-30 (+51d) | 1d? → 48d |  | 99d → 83d |  | was named ショップサーバ |
| 204 | 開発用セットアップ | 2008-02-08 → 2008-02-11 (+3d) | 2008-02-08 → 2008-03-02 (+23d) | 1d? → 15d |  | 99d → 111d | none → 19, 20SF | resources none → ネットワーク開発部 |
| 205 | 製品用セットアップ | 2008-02-08 → 2008-02-11 (+3d) | 2008-02-08 → 2008-03-30 (+51d) | 1d? → 35d |  | 99d → 83d | none → 19, 22SF | resources none → ネットワーク開発部 |
| 212 | ショップ |  |  | 0.5d? → 1d |  | 99.5d → 133d |  |  |

## Version 5 (saved 2008-02-19)

Note of the change: ・ドキュメント追加・更新。 ・rom_header.template.sbinの追加。

Last finish stays 2008-06-20.

Added:

| ID | Task | Duration | Start | Finish | Predecessors | Constraint | Resources |
| --- | --- | --- | --- | --- | --- | --- | --- |
| 32 | ゲームバージョンの運用方法 | 12d? | 2008-02-18 | 2008-02-29 |  | start no earlier than 2008-02-18 |  |
| 46 | shared2の運用方針 | 12d? | 2008-02-14 | 2008-02-29 |  | finish no earlier than 2008-02-29 | 吉岡照幸 |
| 55 | TMPブート、メモリブートのNTRアプリ対応 | 5d? | 2008-02-18 | 2008-02-22 |  | start no earlier than 2008-02-18 | 吉岡照幸 |
| 56 | NTRモード移行後のHWリセットでは、アプリジャンプを無効にする仕組み | 1d? | 2008-02-08 | 2008-02-08 |  |  | 吉岡照幸 |
| 102 | TMPブートアプリ | 10d? | 2008-02-18 | 2008-03-02 | 19, 20SF | finish no earlier than 2008-03-02 | 吉田光寿 |
| 103 | メモリブートアプリ | 10d? | 2008-02-18 | 2008-03-02 | 19, 20SF | finish no earlier than 2008-03-02 | 吉田光寿 |
| 104 | NTRアプリ | 20d? | 2008-02-18 | 2008-03-14 | 19, 20SF | finish no earlier than 2008-03-14 | 吉田光寿 |
| 148 | **AESデコード** | 1d? | 2008-02-08 | 2008-02-08 |  |  |  |
| 149 | 鍵のセット | 1d? | 2008-02-08 | 2008-02-08 |  |  |  |
| 150 | ARM9.Ltd.staticの先頭16KB | 1d? | 2008-02-08 | 2008-02-08 |  |  |  |
| 205 | TwlSystem | 1d? | 2008-02-08 | 2008-02-08 |  |  |  |
| 207 | **WiFi関係ライブラリ** | 11d? | 2008-02-08 | 2008-02-18 |  |  |  |
| 208 | TwlDWC？ | 1d? | 2008-02-08 | 2008-02-08 |  |  |  |
| 209 | **ACライブラリ** | 8d? | 2008-02-08 | 2008-02-15 |  |  |  |
| 210 | 第１リリース | 1d? | 2008-02-15 | 2008-02-15 |  | finish no earlier than 2008-02-15 | ネットワーク開発部 |
| 211 | FIX | 1d? | 2008-02-08 | 2008-02-08 |  |  | ネットワーク開発部 |
| 212 | WiFi設定ユーティリティ | 7d? | 2008-02-08 | 2008-02-18 |  | start no earlier than 2008-02-08 | 安達 洋明; 清木 昌 |
| 216 | NUPライブラリ | 26d? | 2008-02-11 | 2008-03-17 | 19, 21SF | finish no earlier than 2008-03-14 | BroadOn |
| 224 | **ROMマスター作成** | 51d? | 2008-02-08 | 2008-03-30 |  |  |  |
| 225 | ROMマスタリングツール | 22d? | 2008-02-08 | 2008-03-10 |  | start no earlier than 2008-02-08 | 西川猛司 |
| 232 | 実装 | 83d? | 2008-02-08 | 2008-04-30 |  | start no earlier than 2008-02-08 |  |
| 233 | デバッグ | 31d? | 2008-04-15 | 2008-05-15 |  | finish no earlier than 2008-05-15 |  |
| 235 | 実装 | 83d? | 2008-02-08 | 2008-04-30 |  | start no earlier than 2008-02-08 |  |
| 236 | デバッグ | 31d? | 2008-04-15 | 2008-05-15 |  | finish no earlier than 2008-05-15 |  |
| 238 | 実装 | 83d? | 2008-02-08 | 2008-04-30 |  | start no earlier than 2008-02-08 |  |
| 239 | デバッグ | 31d? | 2008-04-15 | 2008-05-15 |  | finish no earlier than 2008-05-15 |  |
| 241 | 実装 | 83d? | 2008-02-08 | 2008-04-30 |  | start no earlier than 2008-02-08 |  |
| 242 | デバッグ | 31d? | 2008-04-15 | 2008-05-15 |  | finish no earlier than 2008-05-15 |  |
| 244 | 実装 | 83d? | 2008-02-08 | 2008-04-30 |  | start no earlier than 2008-02-08 |  |
| 245 | デバッグ | 31d? | 2008-04-15 | 2008-05-15 |  | finish no earlier than 2008-05-15 |  |
| 247 | 実装 | 83d? | 2008-02-08 | 2008-04-30 |  | start no earlier than 2008-02-08 |  |
| 248 | デバッグ | 31d? | 2008-04-15 | 2008-05-15 |  | finish no earlier than 2008-05-15 |  |
| 250 | 実装 | 83d? | 2008-02-08 | 2008-04-30 |  | start no earlier than 2008-02-08 |  |
| 251 | デバッグ | 31d? | 2008-04-15 | 2008-05-15 |  | finish no earlier than 2008-05-15 |  |
| 253 | **生産工程用プログラム** | 22d | 2008-04-21 | 2008-05-13 |  |  |  |
| 254 | **生産工程用RED仮ランチャー** | 22d | 2008-04-21 | 2008-05-13 |  |  |  |
| 255 | 仕様FIX | 10d | 2008-04-21 | 2008-04-30 |  | start no earlier than 2008-04-21 |  |
| 256 | 実装 | 10d | 2008-05-03 | 2008-05-13 | 255, 14SF-10d |  |  |

Removed: 160 WiFi設定

Changed:

| ID | Task | Start | Finish | Duration | Complete | Total float | Other |
| --- | --- | --- | --- | --- | --- | --- | --- |
| 30 | **仕様策定** |  |  |  | 1% → 5% |  |  |
| 31 | **ランチャー** |  |  |  | 1% → 5% |  |  |
| 33 | アプリのNintendoロゴ表示 | 2008-02-11 A |  | 15d → 6d | 0% → 80% |  |  |
| 40 | **NANDファイルアクセス制限** |  |  | 34d → 34d? |  |  |  |
| 53 | **アプリジャンプ** | 2008-02-11 → 2008-02-08 (-3d) |  | 20d → 23d? |  | 97d → 101d | was named アプリジャンプの取捨選択 |
| 57 | **バナー仕様** |  | 2008-02-08 A → 2008-02-15 A (+7d) | 1d → 8d |  |  |  |
| 58 | TWLバナー |  | 2008-02-08 A → 2008-02-15 A (+7d) | 1d → 6d |  |  |  |
| 59 | サブバナー |  | 2008-02-08 A → 2008-02-15 A (+7d) | 1d → 6d |  |  |  |
| 73 | **REDシステムメニュー** |  |  |  | 23% → 24% |  |  |
| 74 | **ランチャー** |  |  |  | 24% → 25% |  |  |
| 75 | ランチャー用ARM7コンポーネント | 2008-02-11 A |  |  | 0% → 50% |  |  |
| 76 | **アプリ起動** |  |  | 48d → 48d? | 27% → 24% |  |  |
| 94 | **アプリ認証処理** |  |  | 48d → 48d? | 15% → 11% |  |  |
| 99 | **TWLアプリ** |  | 2008-03-02 → 2008-03-14 (+12d) | 20d → 33d? | 50% → 21% | 111d → 98d |  |
| 123 | **ファーム** |  | 2008-02-25 → 2008-03-05 (+9d) | 18d? → 27d? |  | 116d → 107d |  |
| 124 | ファーム作成 |  | 2008-02-25 → 2008-03-05 (+9d) | 12d? → 19d? |  | 116d → 107d | constraint finish no earlier than 2008-02-25 → finish no earlier than 2008-03-05 |
| 137 | **活線挿抜** | 2008-02-11 A → 2008-02-08 A (-3d) |  | 20d → 23d? |  | 97d → 99d |  |
| 141 | **ロード** | 2008-02-11 A → 2008-02-08 A (-3d) |  | 20d → 23d? |  | 97d → 99d |  |
| 176 | **TwlSDK** |  |  |  |  |  | was named SDK |
| 214 | **eTicket** |  |  | 48d → 48d? |  |  |  |
| 215 | ESライブラリ |  | 2008-03-16 → 2008-03-17 (+1d) | 25d → 26d |  | 97d → 95d | constraint none → finish no earlier than 2008-03-14 |
| 228 | **UIGシステムメニュー** |  | 2008-02-08 → 2008-05-15 (+97d) | 1d? → 98d? |  | 133d → 36d |  |
| 231 | **ランチャー** |  | 2008-02-08 → 2008-05-15 (+97d) | 1d? → 98d? |  | 133d → 36d |  |
| 234 | **本体設定** |  | 2008-02-08 → 2008-05-15 (+97d) | 1d? → 98d? |  | 133d → 36d |  |
| 237 | **ショップ** |  | 2008-02-08 → 2008-05-15 (+97d) | 1d → 98d? |  | 133d → 36d |  |
| 240 | **写真帳** |  | 2008-02-08 → 2008-05-15 (+97d) | 1d? → 98d? |  | 133d → 36d |  |
| 243 | **ピクトチャット** |  | 2008-02-08 → 2008-05-15 (+97d) | 1d? → 98d? |  | 133d → 36d |  |
| 246 | **DSダウンロードプレイ** |  | 2008-02-08 → 2008-05-15 (+97d) | 1d? → 98d? |  | 133d → 36d |  |
| 249 | **新型配信システム** |  | 2008-02-08 → 2008-05-15 (+97d) | 1d? → 98d? |  | 133d → 36d |  |

## Version 6 (saved 2008-02-21)

Note of the change: ドキュメント更新。

Last finish stays 2008-06-20. Complete tasks 13 → 18.

Added:

| ID | Task | Duration | Start | Finish | Predecessors | Constraint | Resources |
| --- | --- | --- | --- | --- | --- | --- | --- |
| 36 | **ペアレンタルコントロール** | 22d? | 2008-02-08 A | 2008-02-29 |  |  |  |
| 37 | レーティング以外の制御 | 16d | 2008-02-08 A | 2008-02-29 |  |  | 松島愛佑 |
| 38 | 秘密の質問項目 | 22d? | 2008-02-08 | 2008-02-29 |  | start no earlier than 2008-02-08 |  |
| 39 | NOA,NOE承認 | 22d? | 2008-02-08 | 2008-02-29 |  | start no earlier than 2008-02-08 |  |
| 66 | UIG承認 | 7d? | 2008-02-21 | 2008-02-29 | 64, 65 | start no earlier than 2008-02-21 | 松島愛佑 |
| 68 | データ測定 | 11d? | 2008-02-08 A | 2008-02-22 |  | finish no earlier than 2008-02-22 | 藤田僚平 |
| 69 | 仕様策定 | 5d | 2008-02-25 | 2008-02-29 | 68 | finish no earlier than 2008-02-29 | 桑原雅人 |
| 70 | **ネットワークアップデート** | 16d? | 2008-02-18 | 2008-03-04 |  |  |  |
| 76 | **ISデバッガ** | 1d? | 2008-02-08 | 2008-02-08 |  |  |  |
| 77 | 開発マイルストーンをまとめる | 1d? | 2008-02-08 | 2008-02-08 |  |  |  |
| 78 | 開発用カード、製品用カード動作をどのように対応するか？ | 1d? | 2008-02-08 | 2008-02-08 |  |  |  |
| 79 | デバッガ、キャプチャで、開発用SRL、製品用SRLをどのように動作させるか？ | 1d? | 2008-02-08 | 2008-02-08 |  |  |  |
| 80 | システムアップデートをどのようにサポートするか？ | 1d? | 2008-02-08 | 2008-02-08 |  |  |  |
| 81 | NANDアプリインポート方法（NMenuのみに制限？） | 1d? | 2008-02-08 | 2008-02-08 |  |  |  |
| 101 | 速度チューニング | 10d? | 2008-03-03 | 2008-03-14 |  | start no earlier than 2008-03-03 | 吉田光寿; 村上豊 |
| 148 | セーブバナー | 17d? | 2008-02-21 | 2008-03-14 |  | start no earlier than 2008-02-21 | 吉田光寿 |
| 179 | NANDファイルシステム終了処理 | 1d? | 2008-02-08 | 2008-02-08 |  |  |  |
| 181 | TWL-HYBアプリのNTRモードデバッグ | 1d? | 2008-02-08 | 2008-02-08 |  |  |  |
| 182 | バナーViewモード対応 | 1d? | 2008-02-08 | 2008-02-08 |  |  |  |
| 183 | TLFモードフラグ対応（署名やAESチェックを無効にする） | 1d? | 2008-02-08 | 2008-02-08 |  |  |  |
| 188 | 実装 | 1d? | 2008-02-08 A | 2008-02-08 |  |  | 吉田光寿 |
| 189 | ペアレンタルコントロール設定 | 17d? | 2008-02-21 | 2008-03-14 |  | finish no earlier than 2008-03-14 | 西川猛司 |
| 203 | TMPブート対応ビットの新設 | 1d? | 2008-02-08 | 2008-02-08 |  |  | 吉岡照幸 |
| 227 | WiFi設定移行 | 1d? | 2008-02-08 | 2008-02-08 |  |  | ネットワーク開発部 |
| 248 | WiFi設定 | 36d? | 2008-02-08 | 2008-03-14 |  | start no earlier than 2008-02-08 |  |
| 270 | **デバッグ関係** | 25d? | 2008-04-01 | 2008-04-25 |  |  |  |
| 271 | 必要となるプログラム洗い出し | 4d? | 2008-04-01 | 2008-04-04 |  | finish no earlier than 2008-04-04 |  |
| 272 | テストプログラム作成 | 19d? | 2008-04-07 | 2008-04-25 | 271 | start no earlier than 2008-04-07 |  |
| 278 | SDカードダイレクトブート | 1d? | 2008-04-01 A | 2008-04-01 |  |  | 村上豊 |

Removed: 103 メモリブートアプリ; 111 メモリ上にロードされた状態のアプリ起動; 114 ファイル関連付けアプリ起動; 171 ネットワークアップデート; 205 TwlSystem; 210 第１リリース; 211 FIX

Changed:

| ID | Task | Start | Finish | Duration | Complete | Total float | Predecessors | Other |
| --- | --- | --- | --- | --- | --- | --- | --- | --- |
| 30 | **仕様策定** |  |  |  | 5% → 12% |  |  |  |
| 31 | **ランチャー** |  |  |  | 5% → 13% |  |  |  |
| 32 | アプリのNintendoロゴ表示 |  | 2008-03-02 → 2008-02-20 A (-11d) | 6d → 8d | 80% → 100% | 111d → none | 19, 20SF → none | constraint start no earlier than 2008-02-08 → finish no earlier than 2008-02-20 |
| 35 | NOA, NOE承認 |  |  |  |  |  |  | was named NOA, NOE Fix |
| 63 | **バックライト輝度の値、段階** | 2008-02-11 → 2008-02-08 A (-3d) | 2008-03-02 → 2008-02-29 (-2d) | 20d → 22d? | 0% → 72% | 111d → 112d |  |  |
| 64 | 上限、下限決定 | 2008-02-11 → 2008-02-08 A (-3d) | 2008-03-02 → 2008-02-20 A (-11d) | 15d → 9d | 0% → 100% | 111d → none | 19, 20SF → none |  |
| 65 | 段階数、各輝度レベル決定 | 2008-02-11 → 2008-02-08 A (-3d) | 2008-03-02 → 2008-02-20 A (-11d) | 15d → 9d | 0% → 100% | 111d → none | 19, 20SF → none | constraint finish no earlier than 2008-02-29 → start no earlier than 2008-02-08; resources 桑原雅人 → 斉藤潤一; 喜友名毅 |
| 67 | **バッテリエクステンション** | 2008-02-11 → 2008-02-08 A (-3d) | 2008-03-02 → 2008-02-29 (-2d) | 15d → 22d? | 0% → 41% | 97d → 98d | 19, 20SF → none | constraint start no earlier than 2008-02-08 → none; resources 桑原雅人; 藤田僚平; 村上豊 → none |
| 71 | ゲームバージョンの運用方法 |  | 2008-02-29 → 2008-03-04 (+4d) |  |  | 112d → 108d |  | resources none → 廣瀬 和樹 |
| 87 | **REDシステムメニュー** |  |  |  | 24% → 25% |  |  |  |
| 88 | **ランチャー** |  |  |  | 25% → 24% |  |  |  |
| 90 | **アプリ起動** |  |  |  | 24% → 25% |  |  |  |
| 91 | **起動時処理** |  | 2008-03-02 → 2008-03-14 (+12d) | 20d → 33d? | 40% → 39% | 111d → 98d |  |  |
| 102 | **レジスタクリア** | 2008-02-11 A |  |  | 0% → 13% |  |  |  |
| 103 | 各ハード担当者にクリアする領域を洗い出してもらう | 2008-02-11 A |  |  | 0% → 20% |  |  |  |
| 109 | **アプリ認証処理** |  |  |  | 11% → 12% |  |  |  |
| 114 | **TWLアプリ** |  |  |  | 21% → 25% |  |  |  |
| 122 | **アプリジャンプ** |  | 2008-03-16 → 2008-03-02 (-14d) | 34d → 20d | 77% → 93% | 97d → 111d |  |  |
| 123 | **任意アプリの直接起動** |  |  |  | 87% → 90% |  |  |  |
| 146 | **バナー** |  | 2008-03-02 → 2008-03-14 (+12d) | 20d → 33d? | 90% → 57% | 111d → 98d |  |  |
| 175 | **ISデバッガ対応** | 2008-02-11 → 2008-02-08 (-3d) |  | 64d → 67d? |  |  |  |  |
| 187 | **本体設定** | 2008-02-08 A | 2008-03-02 → 2008-03-14 (+12d) | 23d? → 36d? | 0% → 52% | 111d → 98d |  | resources 吉田光寿; 吉岡照幸 → none |
| 190 | **本体初期化** | 2008-02-11 A |  |  | 0% → 80% |  |  |  |
| 191 | ツール（NandInitializer） | 2008-02-11 A |  |  | 0% → 80% |  |  | was named ツール |
| 192 | ライブラリ | 2008-02-11 A |  |  | 0% → 80% |  |  |  |
| 194 | **TwlSDK** | 2008-02-11 A → 2008-02-08 A (-3d) |  | 34d → 37d? | 2% → 15% |  |  |  |
| 195 | **ツール** | 2008-02-11 → 2008-02-08 A (-3d) |  | 34d → 37d? | 0% → 4% | 91d → 97d |  |  |
| 196 | **makerom.TWL** | 2008-02-11 → 2008-02-08 (-3d) |  | 20d → 23d? |  |  |  | was named makerom |
| 206 | **makebanner.TWL** | 2008-02-11 → 2008-02-08 A (-3d) | 2008-03-02 → 2008-02-13 A (-18d) | 20d → 6d | 0% → 100% | 111d → none |  | was named makebanner |
| 207 | NTRアイコンIN→TWLバナーOUT対応 | 2008-02-11 → 2008-02-08 A (-3d) | 2008-03-02 → 2008-02-13 A (-18d) | 15d → 4d | 0% → 100% | 111d → none |  |  |
| 208 | bannercvtr | 2008-02-11 → 2008-02-08 A (-3d) | 2008-03-16 → 2008-02-08 A (-37d) | 25d → 1d | 0% → 100% | 97d → none |  |  |
| 209 | **ライブラリ** |  |  |  | 3% → 20% |  |  |  |
| 211 | os/launcherParam | 2008-02-11 A |  |  | 0% → 80% |  |  |  |
| 212 | lcfg | 2008-02-11 A |  |  | 0% → 80% |  |  |  |
| 213 | nam | 2008-02-11 A |  |  | 0% → 70% |  |  |  |
| 224 | **WiFi関係ライブラリ** | 2008-02-08 A | 2008-02-18 → 2008-03-07 (+18d) | 11d? → 29d? | 0% → 35% | 123d → 105d |  |  |
| 226 | ACライブラリ | 2008-02-08 A | 2008-02-15 → 2008-03-07 (+21d) | 8d? → 21d? | 0% → 50% | 126d → 21d |  | constraint none → start no earlier than 2008-02-08; resources none → ネットワーク開発部 |
| 240 | **UIGシステムメニュー** |  | 2008-05-15 → 2008-05-29 (+14d) | 98d? → 112d? |  | 36d → 22d |  |  |
| 246 | **本体設定** |  | 2008-05-15 → 2008-05-29 (+14d) | 98d? → 112d? |  | 36d → 22d |  |  |
| 247 | 実装 | 2008-02-08 → 2008-03-08 (+29d) | 2008-04-30 → 2008-05-29 (+29d) |  |  | 51d → 22d | none → 226, 227 |  |
| 274 | **生産工程用プログラム** | 2008-04-21 → 2008-04-01 A (-20d) |  | 22d → 42d? | 0% → 4% |  |  |  |

## Version 7 (saved 2008-02-22)

Note of the change: update Trial Production/Debugger

Last finish 2008-06-20 → 2008-07-10 (+20d).

Changed:

| ID | Task | Start | Finish | Duration | Total float | Other |
| --- | --- | --- | --- | --- | --- | --- |
| 3 | 480台(BO:12/170/298) |  |  |  | 99d → 119d | was named 380台 |
| 4 | ワーキングモデル(10台 BO:0/7/3)納品予定 |  |  |  | 126d → 146d | was named ワーキングモデル(10台 0x01=7台, 0x10=3台)納品予定 |
| 5 | **IS-TWL-DEBUGGER納品開始** |  | 2008-06-02 → 2008-07-01 (+29d) | 92d → 121d | 18d → 9d |  |
| 9 | 第三弾300台 | 2008-05-20 → 2008-06-02 (+13d) | 2008-05-20 → 2008-06-02 (+13d) |  | 31d → 38d | constraint start no earlier than 2008-05-20 → start no earlier than 2008-06-02 |
| 10 | 月産500台 | 2008-06-02 → 2008-07-01 (+29d) | 2008-06-02 → 2008-07-01 (+29d) |  | 18d → 9d | constraint start no earlier than 2008-06-02 → start no earlier than 2008-07-01 |
| 11 | **量産試作納品開始** | 2008-02-26 → 2008-04-09 (+43d) | 2008-06-20 → 2008-07-10 (+20d) | 116d → 93d |  |  |
| 12 | ミニ量試200台 | 2008-02-26 → 2008-04-09 (+43d) | 2008-02-26 → 2008-04-09 (+43d) |  | 115d → 92d | constraint start no earlier than 2008-02-26 → start no earlier than 2008-04-09 |
| 13 | 量試1 600台 | 2008-04-21 → 2008-05-01 (+10d) | 2008-04-21 → 2008-05-01 (+10d) |  | 60d → 70d | constraint start no earlier than 2008-04-21 → start no earlier than 2008-05-01 |
| 14 | 量試2 600台 | 2008-05-23 → 2008-06-04 (+12d) | 2008-05-23 → 2008-06-04 (+12d) |  | 28d → 36d | constraint start no earlier than 2008-05-23 → start no earlier than 2008-06-04 |
| 15 | 量試3 600台 | 2008-06-20 → 2008-07-10 (+20d) | 2008-06-20 → 2008-07-10 (+20d) |  |  | constraint start no earlier than 2008-06-20 → start no earlier than 2008-07-10 |
| 274 | **生産工程用プログラム** |  | 2008-05-13 → 2008-05-25 (+12d) | 42d? → 54d? | 39d → 47d |  |
| 275 | **生産工程用RED仮ランチャー** |  | 2008-05-13 → 2008-05-25 (+12d) | 22d → 34d | 39d → 47d |  |
| 277 | 実装 | 2008-05-03 → 2008-05-15 (+12d) | 2008-05-13 → 2008-05-25 (+12d) |  | 39d → 47d |  |

## Version 8 (saved 2008-03-03)

Note of the change: ・EULA表示NCL-fixの締切を第２ステップに変更 ・ペアレンタル仕様のNOA/NOE承認を第５ステップに変更 ・SDフォルダ名叩き台作成は完了 ・バッテリエクステンション締切を３月９日に変更 ・TWLアプリ起動（カード、NAND、TMPブート）起動は完了 ・NTRアプリ起動のタスク名に（PictChat,DS-DLプレイ）を追記 ・TMPブートの実装は完了（実際はESのバグにより、TMPではなくImportでやってるので後日差し替えタスクを追加） ・ペアレンタル設定は90% ・本体初期化タスク名に状況を追記 ・ROMマスタリングツールは80%

Last finish stays 2008-07-10. Complete tasks 18 → 24.

Added:

| ID | Task | Duration | Start | Finish | Predecessors | Constraint | Resources |
| --- | --- | --- | --- | --- | --- | --- | --- |
| 126 | ImportフォルダからTMPフォルダへの一時格納場所変更（ES待ち） | 5d | 2008-03-18 | 2008-03-24 | 233 | start no earlier than 2008-03-17 | 吉田光寿 |
| 129 | TMP（ESのバグのためImport）フォルダクリーン | 15d | 2008-02-11 A | 2008-03-02 A | 19, 20SF |  | 吉田光寿 |

Changed:

| ID | Task | Start | Finish | Duration | Complete | Total float | Predecessors | Other |
| --- | --- | --- | --- | --- | --- | --- | --- | --- |
| 30 | **仕様策定** |  | 2008-03-30 → 2008-04-11 (+12d) | 51d? → 64d? | 12% → 15% | 103d → 90d |  |  |
| 31 | **ランチャー** |  | 2008-03-30 → 2008-04-11 (+12d) | 51d? → 64d? | 13% → 16% | 103d → 90d |  |  |
| 33 | **EURA表示** |  | 2008-03-30 → 2008-04-11 (+12d) | 48d → 61d |  | 102d → 88d |  |  |
| 34 | NCL Fix |  | 2008-03-02 → 2008-03-16 (+14d) | 15d → 25d |  | 102d → 88d |  | constraint start no earlier than 2008-02-08 → finish no earlier than 2008-03-16 |
| 35 | NOA, NOE承認 | 2008-03-03 → 2008-03-17 (+14d) | 2008-03-30 → 2008-04-11 (+12d) |  |  | 102d → 88d |  |  |
| 36 | **ペアレンタルコントロール** |  | 2008-02-29 → 2008-04-06 (+37d) | 22d? → 59d? | 11% → 10% | 132d → 95d |  |  |
| 39 | NOA,NOE承認 | 2008-02-08 → 2008-03-03 (+24d) | 2008-02-29 → 2008-04-06 (+37d) | 22d? → 25d? |  | 132d → 95d | none → 37 | constraint start no earlier than 2008-02-08 → finish no earlier than 2008-04-06; resources none → 三田健太朗; 総務部; 松島愛佑 |
| 40 | **本体設定データ** |  | 2008-03-02 → 2008-03-16 (+14d) | 20d → 35d |  | 130d → 116d |  |  |
| 41 | ペアレンタルコントロール（レーティング以外のデータ構造） |  | 2008-03-02 → 2008-03-16 (+14d) | 15d → 25d |  | 130d → 116d |  | constraint start no earlier than 2008-02-11 → finish no earlier than 2008-03-16 |
| 50 | **SDに作成するフォルダ名** |  |  |  | 2% → 39% |  |  |  |
| 53 | TWLでのフォルダ構成のたたき台 | 2008-02-11 A | 2008-03-02 A |  | 0% → 100% | 130d → none |  |  |
| 67 | **バッテリエクステンション** |  | 2008-02-29 → 2008-03-11 (+11d) | 22d? → 33d? | 41% → 29% | 118d → 107d |  |  |
| 68 | データ測定 |  | 2008-02-22 → 2008-03-09 (+16d) | 11d? → 21d? | 60% → 31% | 118d → 107d |  | constraint finish no earlier than 2008-02-22 → finish no earlier than 2008-03-09 |
| 69 | 仕様策定 | 2008-02-25 → 2008-03-10 (+14d) | 2008-02-29 → 2008-03-11 (+11d) | 5d → 2d |  | 116d → 107d |  |  |
| 87 | **REDシステムメニュー** |  |  |  | 25% → 29% |  |  |  |
| 88 | **ランチャー** |  |  |  | 24% → 27% |  |  |  |
| 90 | **アプリ起動** |  |  |  | 25% → 31% |  |  |  |
| 109 | **アプリ認証処理** |  |  |  | 12% → 31% |  |  |  |
| 114 | **TWLアプリ** |  |  |  | 25% → 67% |  |  |  |
| 115 | カードアプリ |  | 2008-03-02 A |  | 50% → 100% | 131d → none |  |  |
| 116 | NANDアプリ |  | 2008-03-02 A |  | 50% → 100% | 131d → none |  |  |
| 117 | TMPブートアプリ | 2008-02-18 A | 2008-03-02 A |  | 0% → 100% | 130d → none |  |  |
| 118 | NTRアプリ（PictChat,DS-DSプレイ） |  |  |  |  |  |  | was named NTRアプリ |
| 122 | **アプリジャンプ** |  | 2008-03-02 → 2008-03-24 (+22d) | 20d → 43d | 93% → 90% | 131d → 108d |  |  |
| 123 | **任意アプリの直接起動** |  | 2008-03-02 → 2008-03-24 (+22d) | 20d → 43d | 90% → 86% | 131d → 108d |  |  |
| 125 | NANDのImport（本来はTMP）フォルダに一時格納された状態のアプリ起動 |  | 2008-03-02 A |  | 80% → 100% | 131d → none |  | was named NANDのTMPフォルダに一時格納された状態のアプリ起動 |
| 130 | TMPフォルダクリーン | 2008-02-11 A → 2008-03-18 (+36d) | 2008-03-02 → 2008-03-24 (+22d) | 15d → 5d | 50% → 0% | 131d → 108d | 19, 20SF → 233 |  |
| 148 | **バナー** |  |  |  | 57% → 61% |  |  |  |
| 150 | セーブバナー | 2008-02-21 A |  |  | 0% → 10% |  |  |  |
| 176 | バッテリエクステンション | 2008-03-03 → 2008-03-12 (+9d) | 2008-03-16 → 2008-03-25 (+9d) |  |  | 116d → 107d |  |  |
| 189 | **本体設定** |  |  |  | 52% → 84% |  |  |  |
| 191 | ペアレンタルコントロール設定（仕様確定待ち） | 2008-02-21 A |  |  | 0% → 90% |  |  | was named ペアレンタルコントロール設定 |
| 192 | **本体初期化（各モジュールの初期化仕様fix待ち）** |  |  |  |  |  |  | was named 本体初期化 |
| 268 | **ROMマスター作成** | 2008-02-08 A |  |  | 0% → 31% |  |  |  |
| 269 | ROMマスタリングツール | 2008-02-08 A |  |  | 0% → 80% |  |  |  |

## Version 9 (saved 2008-03-06)

Note of the change: スケジュール更新。 ドキュメント更新。

Last finish stays 2008-07-10. Complete tasks 24 → 52.

Added:

| ID | Task | Duration | Start | Finish | Predecessors | Constraint | Resources |
| --- | --- | --- | --- | --- | --- | --- | --- |
| 34 | 通信方式や通信内容に対する制限 | 50d? | 2008-02-08 | 2008-04-17 |  | start no earlier than 2008-02-08 | 三田健太朗 |
| 55 | 仕様案策定 | 19d? | 2008-02-08 A | 2008-03-05 A |  | finish no earlier than 2008-03-05 | 吉岡照幸 |
| 56 | 仕様案アンケート | 4d | 2008-03-06 | 2008-03-11 | 55 | start no earlier than 2008-03-06 | 三田健太朗 |
| 57 | 仕様FIX | 3d | 2008-03-12 | 2008-03-14 | 56 | finish no earlier than 2008-03-14 | 吉岡照幸 |
| 61 | 特許調査 | 7d? | 2008-03-06 | 2008-03-14 |  | finish no earlier than 2008-03-14 | 知財部 |
| 72 | 鍵の引渡し | 3d? | 2008-03-06 A | 2008-03-10 |  | finish no earlier than 2008-03-10 | 吉岡照幸 |
| 73 | **eTicket** | 29d? | 2008-02-08 A | 2008-03-07 |  |  |  |
| 74 | 鍵管理 | 21d? | 2008-02-08 A | 2008-03-07 A |  | start no earlier than 2008-02-08 | 廣瀬 和樹 |
| 75 | TitleID | 21d? | 2008-02-08 A | 2008-03-07 A |  | start no earlier than 2008-02-08 | 廣瀬 和樹 |
| 78 | ACアダプタを差した状態でNUPしたらシャットダウンしない保証があるか調査 | 13d? | 2008-02-20 A | 2008-03-07 |  | finish no earlier than 2008-03-07 | 斉藤潤一 |
| 80 | **WiFi設定** | 0.5d? | 2008-02-08 A | 2008-02-08 |  |  |  |
| 81 | WiFi設定移行ルーチン仕様 | 0.5d? | 2008-02-08 A | 2008-02-08 |  |  | 水口裕基; ネットワーク開発部 |
| 82 | MTUなどの設定項目仕様 | 0.5d? | 2008-02-08 A | 2008-02-08 |  |  | 水口裕基; ネットワーク開発部 |
| 103 | AES鍵・AES種引渡し | 1d? | 2008-02-08 | 2008-02-08 |  |  | 吉岡照幸 |
| 104 | ハードウェアAESスロット設定・クリア | 1d? | 2008-02-08 | 2008-02-08 |  |  | 吉岡照幸 |
| 135 | ラッパーAPI作成 | 4d | 2008-03-07 | 2008-03-10 |  | finish no earlier than 2008-03-10 |  |
| 148 | **NAND保存フォーマットに変換** | 15d? | 2008-02-25 A | 2008-03-10 |  |  |  |
| 149 | 仕様策定 | 1d | 2008-03-03 A | 2008-03-03 A |  |  | 佐藤雅樹; 吉岡照幸 |
| 150 | 旧フォーマット実装 | 2d? | 2008-02-25 A | 2008-02-26 A |  |  | 佐藤雅樹 |
| 151 | 新フォーマット実装 | 2d | 2008-03-07 | 2008-03-10 |  | start no earlier than 2008-03-07 | 佐藤雅樹 |
| 157 | 無線ライブラリ | 1d? | 2008-02-08 A | 2008-02-08 A |  |  | 佐藤雅樹 |
| 158 | ランチャー実装 | 1d? | 2008-02-08 | 2008-02-08 |  |  | 吉田光寿 |
| 180 | **Blowfish鍵管理** | 2d? | 2008-03-06 A | 2008-03-07 |  |  |  |
| 182 | 受け渡された鍵の使用 | 1d? | 2008-03-07 | 2008-03-07 | 181 |  | 赤羽淳平 |
| 183 | DMAの使用 | 10d? | 2008-03-03 A | 2008-03-14 A |  | finish no earlier than 2008-03-14 | 赤羽淳平 |
| 219 | 鍵アクセスコントロール情報の新設 | 1d? | 2008-03-14 | 2008-03-14 | 19, 20SF | finish no earlier than 2008-03-14 | 吉岡照幸 |
| 220 | カードリージョン情報の新設 | 1d? | 2008-03-14 | 2008-03-14 | 19, 20SF | finish no earlier than 2008-03-14 | 吉岡照幸 |
| 221 | Privateセーブデータのサイズ固定 | 1d? | 2008-03-14 | 2008-03-14 | 19, 20SF | finish no earlier than 2008-03-14 | 吉岡照幸 |
| 229 | サブバナー対応 | 1d? | 2008-02-29 A | 2008-02-29 A | 19, 20SF | start no earlier than 2008-02-29 | 吉岡照幸 |
| 247 | ncfgライブラリ | 1d? | 2008-02-08 A | 2008-02-08 A |  |  | 清木 昌 |
| 248 | WPAを使ったAOSSの接続情報の保存 | 1d? | 2008-02-08 | 2008-02-08 |  |  | Buffalo外注 |
| 249 | WPAを使ったらくらくの接続情報の保存 | 1d? | 2008-02-08 | 2008-02-08 |  |  | NEC外注 |
| 251 | 1stリリース | 9d? | 2008-02-08 A | 2008-02-20 A |  | start no earlier than 2008-02-08 | ネットワーク開発部 |
| 252 | FIX | 12d | 2008-02-21 A | 2008-03-07 | 251 | start no earlier than 2008-02-21 | ネットワーク開発部 |
| 258 | 実装 | 36d? | 2008-02-08 A | 2008-03-28 |  | finish no earlier than 2008-03-28 | BroadOn |
| 259 | 検証 | 36d? | 2008-02-08 A | 2008-03-28 |  | finish no earlier than 2008-03-28 | 大島 洋一; 畠本 稔 |
| 261 | 実装 | 36d? | 2008-02-08 A | 2008-03-28 |  | finish no earlier than 2008-03-28 | BroadOn |
| 262 | 検証 | 36d? | 2008-02-08 A | 2008-03-28 |  | finish no earlier than 2008-03-28 | 稲葉 公崇 |
| 305 | 必要となるプログラム洗い出し | 1d? | 2008-02-08 | 2008-02-08 |  |  | 製品技術部 |

Removed: 26 無線モジュール（ファームロード対応版）受領; 105 起動チェック; 106 AGBカートリッジが必要なソフトは起動禁止; 107 該当ソフト調査; 108 チェックルーチン; 143 WiFiエミュレーション; 144 コンポーネント作成; 145 ロード処理; 171 ARM9/ARM7対応; 228 ACライブラリ

Changed:

| ID | Task | Start | Finish | Duration | Complete | Total float | Predecessors | Other |
| --- | --- | --- | --- | --- | --- | --- | --- | --- |
| 27 | **仕様策定** |  | 2008-04-11 → 2008-04-17 (+6d) | 64d? → 70d? | 15% → 43% | 90d → 84d |  |  |
| 28 | **ランチャー** |  | 2008-04-11 → 2008-04-17 (+6d) | 64d? → 70d? | 16% → 31% | 90d → 84d |  |  |
| 33 | **ペアレンタルコントロール** |  | 2008-04-06 → 2008-04-17 (+11d) | 59d? → 70d? | 10% → 13% | 95d → 84d |  |  |
| 35 | レーティング以外の制御 |  |  |  | 40% → 90% |  |  |  |
| 38 | **本体設定データ** | 2008-02-11 A |  |  | 0% → 75% |  |  |  |
| 39 | ペアレンタルコントロール（レーティング以外のデータ構造） | 2008-02-11 A |  |  | 0% → 90% |  |  |  |
| 40 | 顔写真 | 2008-02-11 A |  |  | 0% → 50% | 130d → 131d |  | resources 松島愛佑 → 正木義文 |
| 54 | **アプリジャンプ** | 2008-02-08 A | 2008-03-02 → 2008-03-14 (+12d) | 23d? → 36d? | 0% → 74% | 131d → 118d |  |  |
| 58 | ファイル関連付けアプリ起動をやるかやらないか？ | 2008-02-11 A | 2008-03-02 A |  | 0% → 100% | 130d → none |  |  |
| 59 | TMPブート、メモリブートのNTRアプリ対応 | 2008-02-18 A | 2008-02-22 A |  | 0% → 100% | 137d → none |  |  |
| 60 | NTRモード移行後のHWリセットでは、アプリジャンプを無効にする仕組み | 2008-02-08 A | 2008-02-08 A |  | 0% → 100% | 153d → none |  |  |
| 69 | **バッテリエクステンション** |  |  |  | 29% → 82% |  |  |  |
| 70 | データ測定 |  |  |  | 31% → 90% |  |  |  |
| 76 | **ネットワークアップデート** | 2008-02-18 A | 2008-03-04 → 2008-03-07 (+3d) | 16d? → 19d? | 0% → 85% | 128d → 125d |  |  |
| 77 | ゲームバージョンの運用方法 | 2008-02-18 A |  |  | 0% → 80% |  |  |  |
| 79 | **無線** |  | 2008-03-02 → 2008-03-07 (+5d) | 23d? → 29d? | 12% → 99% | 131d → 125d |  |  |
| 83 | WiFiエミュレーション | 2008-02-11 A | 2008-03-02 A |  | 0% → 100% | 130d → none |  |  |
| 84 | ファームロード |  | 2008-02-08 A → 2008-03-07 A (+28d) | 1d? → 21d? |  |  |  |  |
| 85 | 無線終端処理 |  | 2008-02-08 A → 2008-03-07 A (+28d) | 1d? → 21d? |  |  |  |  |
| 87 | 開発マイルストーンをまとめる |  |  |  |  |  |  | resources none → ？ |
| 88 | 開発用カード、製品用カード動作をどのように対応するか？ |  |  |  |  |  |  | resources none → ？ |
| 89 | デバッガ、キャプチャで、開発用SRL、製品用SRLをどのように動作させるか？ |  |  |  |  |  |  | resources none → ？ |
| 90 | システムアップデートをどのようにサポートするか？ |  |  |  |  |  |  | resources none → ？ |
| 91 | NANDアプリインポート方法（NMenuのみに制限？） |  |  |  |  |  |  | resources none → ？ |
| 93 | **X3ボード対応** |  | 2008-03-02 A |  | 30% → 100% | 131d → none |  |  |
| 94 | ランチャー |  | 2008-03-02 A |  | 30% → 100% | 131d → none |  |  |
| 95 | ISデバッガ |  | 2008-03-02 A |  | 30% → 100% | 131d → none |  |  |
| 97 | **REDシステムメニュー** |  |  |  | 29% → 48% |  |  |  |
| 98 | **ランチャー** |  |  |  | 27% → 46% |  |  |  |
| 100 | **アプリ起動** | 2008-02-11 A → 2008-02-08 A (-3d) |  | 48d? → 51d? | 31% → 46% |  |  |  |
| 101 | **起動時処理** | 2008-02-11 A → 2008-02-08 A (-3d) |  | 33d? → 36d? | 39% → 46% |  |  |  |
| 102 | **鍵の引渡し** | 2008-02-11 → 2008-02-08 (-3d) | 2008-03-02 → 2008-02-08 (-23d) | 15d → 1d? |  | 130d → 153d | 19, 20SF → none |  |
| 105 | NANDファイルのアクセス制限 |  | 2008-03-02 → 2008-02-29 (-2d) |  |  | 131d → 132d | 19, 20SF → none |  |
| 106 | カード電源状態 | 2008-02-11 → 2008-02-08 (-3d) | 2008-03-02 → 2008-02-28 (-3d) |  |  | 130d → 133d | 19, 20SF → none |  |
| 107 | カード活線挿抜可否 | 2008-02-11 → 2008-02-08 (-3d) | 2008-03-02 → 2008-02-28 (-3d) |  |  | 130d → 133d | 19, 20SF → none |  |
| 108 | SDカードアクセス可否 |  | 2008-03-02 → 2008-02-29 (-2d) |  |  | 131d → 132d | 19, 20SF → none |  |
| 109 | Codecモード切替 |  |  |  |  |  | 19, 20SF → none |  |
| 110 | SCFGレジスタロック（ユーザーアプリは必ず） |  |  |  |  |  | 19, 20SF → none |  |
| 111 | アプリ再配置 |  |  |  |  |  | 19, 20SF → none |  |
| 112 | メモリクリア | 2008-02-11 → 2008-02-08 A (-3d) | 2008-03-02 → 2008-02-28 (-3d) |  | 0% → 70% | 130d → 133d | 19, 20SF → none |  |
| 114 | **レジスタクリア** |  | 2008-03-02 → 2008-03-14 (+12d) | 20d → 33d | 13% → 8% | 131d → 118d |  |  |
| 115 | 各ハード担当者にクリアする領域を洗い出してもらう |  | 2008-02-22 → 2008-03-07 (+14d) | 10d → 20d | 20% → 10% | 132d → 118d |  | constraint start no earlier than 2008-02-08 → finish no earlier than 2008-03-07 |
| 116 | クリア処理実装 | 2008-02-25 → 2008-03-10 (+14d) | 2008-03-02 → 2008-03-14 (+12d) |  |  | 130d → 116d |  |  |
| 127 | **NTRアプリ起動** |  | 2008-03-16 → 2008-03-06 A (-10d) | 34d → 25d | 25% → 100% | 117d → none |  |  |
| 128 | NTRモード切替 |  | 2008-03-16 → 2008-03-06 A (-10d) | 25d → 19d | 50% → 100% | 117d → none |  |  |
| 129 | NTR無線パッチ | 2008-02-11 A | 2008-03-16 → 2008-03-06 A (-10d) | 25d → 19d | 0% → 100% | 116d → none |  |  |
| 130 | **アプリジャンプ** |  | 2008-03-24 → 2008-04-04 (+11d) | 43d → 54d | 90% → 83% | 108d → 97d |  |  |
| 131 | **任意アプリの直接起動** |  | 2008-03-24 → 2008-04-04 (+11d) | 43d → 54d |  | 108d → 97d |  |  |
| 134 | ImportフォルダからTMPフォルダへの一時格納場所変更（ES待ち） | 2008-03-18 → 2008-03-31 (+13d) | 2008-03-24 → 2008-04-04 (+11d) |  |  | 108d → 95d |  |  |
| 139 | TMPフォルダクリーン | 2008-03-18 → 2008-03-31 (+13d) | 2008-03-24 → 2008-04-04 (+11d) |  |  | 108d → 95d |  |  |
| 143 | **無線** |  | 2008-03-30 → 2008-03-21 (-9d) | 51d? → 43d? | 1% → 57% | 103d → 111d |  |  |
| 144 | **新無線ファームロード** |  |  |  | 2% → 57% |  |  |  |
| 146 | **ファーム** | 2008-02-08 A | 2008-03-05 → 2008-03-10 (+5d) | 27d? → 32d? | 0% → 52% | 127d → 122d |  |  |
| 147 | ファーム作成 | 2008-02-08 A |  |  | 0% → 50% |  |  |  |
| 152 | **実装** | 2008-02-08 A |  |  | 0% → 59% |  |  |  |
| 153 | 無線ライブラリ | 2008-02-08 A |  |  | 0% → 70% |  |  |  |
| 154 | ランチャー仮実装 | 2008-02-11 A |  |  | 0% → 70% | 130d → 131d |  |  |
| 156 | **無線終端処理** | 2008-02-11 → 2008-02-08 A (-3d) | 2008-03-16 → 2008-02-08 (-37d) | 25d → 1d? | 0% → 50% | 116d → 153d | 19, 21SF → none | resources 佐藤雅樹 → none |
| 160 | **バナー** |  |  |  | 61% → 76% |  |  |  |
| 162 | サブバナー |  |  |  | 10% → 50% |  |  | was named セーブバナー |
| 164 | **活線挿抜** |  | 2008-03-02 → 2008-03-28 (+26d) | 23d? → 50d? | 18% → 43% | 117d → 104d |  |  |
| 165 | **活線挿抜アルゴリズムをFIX** | 2008-02-11 A | 2008-03-02 → 2008-03-14 (+12d) | 20d → 33d | 0% → 70% | 116d → 104d |  |  |
| 166 | コードの整理 | 2008-02-11 A | 2008-03-02 → 2008-03-14 (+12d) | 15d → 25d | 0% → 70% | 116d → 104d |  | constraint start no earlier than 2008-02-08 → finish no earlier than 2008-03-14 |
| 167 | 挿抜負荷耐性 | 2008-02-11 A | 2008-03-02 → 2008-03-14 (+12d) | 15d → 25d | 0% → 70% | 116d → 104d |  | constraint finish no earlier than 2008-02-29 → finish no earlier than 2008-03-14 |
| 168 | **ロード** |  | 2008-03-02 → 2008-03-28 (+26d) | 23d? → 50d? | 22% → 37% | 117d → 104d |  |  |
| 170 | TWLカード対応 | 2008-02-11 → 2008-02-25 (+14d) | 2008-03-02 → 2008-03-14 (+12d) |  |  |  |  | constraint finish no earlier than 2008-02-29 → finish no earlier than 2008-03-14 |
| 171 | カードType1,Type2対応 | 2008-02-11 A | 2008-03-02 A |  | 0% → 100% | 116d → none |  |  |
| 172 | **Blowfishデコード** |  | 2008-03-02 A |  | 50% → 100% | 117d → none |  |  |
| 173 | カードのコマンド | 2008-02-11 A | 2008-03-02 A |  | 0% → 100% | 116d → none |  | was named カードのコマンド処理 |
| 175 | **AESデコード** |  | 2008-02-08 → 2008-03-14 (+35d) | 1d? → 36d? |  | 139d → 118d |  |  |

| ID | Task | Start | Finish | Duration | Complete | Total float | Predecessors | Other |
| --- | --- | --- | --- | --- | --- | --- | --- | --- |
| 176 | 鍵のセット |  | 2008-02-08 → 2008-03-14 (+35d) | 1d? → 26d? |  | 139d → 118d |  | constraint none → finish no earlier than 2008-03-14; resources none → 赤羽淳平 |
| 177 | ARM9.Ltd.staticの先頭16KB |  | 2008-02-08 → 2008-03-14 (+35d) | 1d? → 26d? |  | 139d → 118d |  | constraint none → finish no earlier than 2008-03-14; resources none → 赤羽淳平 |
| 178 | **カードスロットAでの動作** | 2008-02-11 → 2008-02-25 (+14d) | 2008-03-02 → 2008-03-14 (+12d) | 20d → 19d |  |  |  |  |
| 179 | SDKコードとのカードアクセス排他制御 | 2008-02-11 → 2008-02-25 (+14d) | 2008-03-02 → 2008-03-14 (+12d) |  |  |  |  | constraint start no earlier than 2008-02-08 → finish no earlier than 2008-03-14 |
| 181 | Blowfish鍵の受け渡し | 2008-02-11 → 2008-03-06 A (+24d) | 2008-03-02 → 2008-03-06 A (+4d) | 15d → 1d | 0% → 100% | 116d → none |  | constraint start no earlier than 2008-02-08 → start no earlier than 2008-03-06; resources 中島高伸; 赤羽淳平 → 中島高伸 |
| 186 | 速度チューニング | 2008-03-03 → 2008-03-17 (+14d) | 2008-03-16 → 2008-03-28 (+12d) |  |  | 116d → 102d | 165, 168, 21SF → 165, 21SF |  |
| 187 | **ホットスポットサーチ** | 2008-02-11 A |  |  | 0% → 53% | 130d → 131d |  |  |
| 188 | ライブラリ作成 | 2008-02-11 A |  |  | 0% → 80% | 130d → 132d |  |  |
| 191 | **ISデバッガ対応** | 2008-02-08 A |  |  | 0% → 16% |  |  |  |
| 192 | 開発サポート | 2008-02-11 A |  |  | 0% → 30% |  |  |  |
| 193 | 安定度を上げる | 2008-02-11 A | 2008-03-02 → 2008-03-14 (+12d) | 15d → 25d | 0% → 50% | 130d → 118d |  | constraint start no earlier than 2008-02-08 → finish no earlier than 2008-03-14 |
| 203 | **本体設定** |  | 2008-03-14 → 2008-03-03 (-11d) | 36d? → 25d? |  | 118d → 129d |  |  |
| 205 | ペアレンタルコントロール設定（仕様確定待ち） |  | 2008-03-14 → 2008-03-03 A (-11d) | 17d? → 8d? | 90% → 100% | 118d → none |  | constraint finish no earlier than 2008-03-14 → finish no earlier than 2008-03-03 |
| 210 | NANDファーム | 2008-02-11 A |  |  | 0% → 98% | 116d → 117d |  |  |
| 212 | **TwlSDK** |  |  | 37d? → 38d? | 15% → 50% | 117d → 116d |  |  |
| 213 | **ツール** |  |  |  | 4% → 18% |  |  |  |
| 214 | **makerom.TWL** | 2008-02-08 A | 2008-03-02 → 2008-03-14 (+12d) | 23d? → 36d? | 0% → 14% | 131d → 118d |  |  |
| 215 | 領域のワーニング修正 | 2008-02-11 → 2008-03-14 (+32d) | 2008-03-02 → 2008-03-14 (+12d) | 15d → 1d |  | 130d → 118d |  | constraint none → finish no earlier than 2008-03-14 |
| 216 | TWL領域用キーテーブル埋め込み | 2008-02-11 → 2008-03-14 (+32d) | 2008-03-02 → 2008-03-14 (+12d) | 15d → 1d |  | 130d → 118d |  | constraint none → finish no earlier than 2008-03-14 |
| 217 | ペアレンタルコントロール対応 | 2008-02-11 → 2008-03-14 (+32d) | 2008-03-02 → 2008-03-14 (+12d) | 15d → 1d |  | 130d → 118d |  | constraint none → finish no earlier than 2008-03-14 |
| 218 | TMPブート対応ビットの新設 | 2008-02-08 A | 2008-02-08 A |  | 0% → 100% | 153d → none |  |  |
| 222 | SD使用可能特別版対応 | 2008-02-11 → 2008-03-14 (+32d) | 2008-03-02 → 2008-03-14 (+12d) | 15d → 1d |  | 130d → 118d |  | constraint none → finish no earlier than 2008-03-14 |
| 223 | システム/ショップアプリ開発特別版対応 | 2008-02-11 A | 2008-03-02 → 2008-02-11 A (-20d) | 15d → 1d | 0% → 100% | 130d → none |  |  |
| 224 | NTR-SRL署名対応特別版 | 2008-02-11 → 2008-03-10 (+28d) | 2008-03-02 → 2008-03-14 (+12d) | 15d → 5d |  | 130d → 116d |  | was named NTR署名対応; constraint none → finish no earlier than 2008-03-14 |
| 227 | **makebanner.TWL** |  | 2008-02-13 A → 2008-02-29 A (+16d) | 6d → 22d? |  |  |  |  |
| 231 | **ライブラリ** |  |  | 34d → 35d | 20% → 56% | 117d → 116d |  |  |
| 232 | reboot |  |  |  | 50% → 80% |  |  |  |
| 236 | マイコン | 2008-02-11 A | 2008-03-02 A |  | 0% → 100% | 130d → none |  |  |
| 237 | カメラ | 2008-02-11 A |  |  | 0% → 70% | 116d → 117d |  |  |
| 238 | Codec | 2008-02-11 A |  |  | 0% → 70% | 130d → 131d |  |  |
| 239 | **FS** | 2008-02-11 A |  | 34d → 35d | 0% → 34% |  |  |  |
| 240 | 電源OFF,リセット時の終端処理 |  |  |  |  |  |  | constraint none → finish no earlier than 2008-03-16; resources 白井達広 → 吉崎 浩二 |
| 241 | FSのAES暗号化 | 2008-02-11 A | 2008-03-16 A |  | 0% → 100% | 116d → none |  |  |
| 243 | SRLのハッシュチェック | 2008-02-11 A |  |  | 0% → 20% | 116d → 117d |  |  |
| 244 | NANDアクセス権管理 | 2008-02-11 A |  |  | 0% → 50% | 116d → 117d |  |  |
| 246 | **WiFi関係ライブラリ** |  | 2008-03-07 → 2008-03-14 (+7d) | 29d? → 36d? | 35% → 64% | 125d → 118d |  |  |
| 250 | **ACライブラリ** | 2008-02-08 A | 2008-02-08 → 2008-03-07 (+28d) | 1d? → 29d? | 0% → 77% | 153d → 125d |  | was named TwlDWC？ |
| 254 | WiFi設定ユーティリティ | 2008-02-08 A | 2008-02-18 → 2008-03-14 (+25d) | 7d? → 26d? | 0% → 60% | 143d → 118d |  | constraint start no earlier than 2008-02-08 → finish no earlier than 2008-03-14 |
| 256 | **eTicket** | 2008-02-11 → 2008-02-08 A (-3d) |  | 48d? → 51d? | 0% → 30% | 102d → 103d |  |  |
| 257 | **ESライブラリ** | 2008-02-11 → 2008-02-08 A (-3d) | 2008-03-17 → 2008-03-28 (+11d) | 26d → 50d? | 0% → 50% | 108d → 97d | 19, 21SF → none | constraint finish no earlier than 2008-03-14 → none; resources BroadOn → none |
| 260 | **NUPライブラリ** | 2008-02-11 → 2008-02-08 A (-3d) | 2008-03-17 → 2008-03-28 (+11d) | 26d? → 50d? | 0% → 20% | 115d → 104d | 19, 21SF → none | constraint finish no earlier than 2008-03-14 → none; resources BroadOn → none |
| 263 | **CLSサーバ** | 2008-02-11 → 2008-02-08 A (-3d) |  | 48d → 51d | 0% → 13% | 102d → 103d |  |  |
| 264 | 開発用セットアップ | 2008-02-11 → 2008-02-08 A (-3d) | 2008-03-02 → 2008-02-14 A (-17d) | 15d → 5d | 0% → 100% | 130d → none |  |  |
| 266 | **NUPサーバ** | 2008-02-11 A |  |  | 0% → 30% | 102d → 103d |  |  |
| 267 | 開発用セットアップ | 2008-02-11 A | 2008-03-02 A |  | 0% → 100% | 130d → none |  |  |
| 270 | **UIGシステムメニュー** |  | 2008-05-29 → 2008-05-15 (-14d) | 112d? → 98d? |  | 42d → 56d |  |  |
| 276 | **本体設定** |  | 2008-05-29 → 2008-05-15 (-14d) | 112d? → 98d? |  | 42d → 56d |  |  |
| 277 | 実装 | 2008-03-08 → 2008-02-09 (-28d) | 2008-05-29 → 2008-05-01 (-28d) |  |  | 42d → 70d | ACライブラリ, 253 → 253 |  |
| 304 | **生産工程用プログラム** | 2008-04-01 A → 2008-02-08 A (-53d) |  | 54d? → 107d? |  |  |  |  |
| 308 | 仕様FIX |  | 2008-04-30 → 2008-05-02 (+2d) |  |  | 61d → 53d |  | resources none → 製品技術部 |
| 309 | 実装 | 2008-05-15 → 2008-05-12 (-3d) |  |  |  | 47d → 46d |  | resources none → ？ |

## Version 10 (saved 2008-04-09)

Note of the change: ・リビジョン情報埋め込み部分で、svnが見つからなかった時の処理を修正。 ・スケジュールのアップデート中。

Last finish stays 2008-07-10. Complete tasks 52 → 104.

Added:

| ID | Task | Duration | Start | Finish | Predecessors | Constraint | Resources |
| --- | --- | --- | --- | --- | --- | --- | --- |
| 72 | **電源LED変化** | 11d? | 2008-04-01 A | 2008-04-11 |  |  |  |
| 73 | 仕様決定 | 1d? | 2008-04-01 A | 2008-04-11 | 71 | finish no earlier than 2008-04-11 | 桑原雅人 |
| 89 | フライトモード | 28d? | 2008-03-03 A | 2008-04-09 A |  |  | 大江徹 |
| 90 | 無線LED制御 | 28d? | 2008-03-03 A | 2008-04-09 A |  |  | 大江徹 |
| 125 | 基本アルゴリズム実装 | 1d? | 2008-02-08 A | 2008-02-08 A |  |  | 村上豊 |
| 129 | AESデコード | 4d? | 2008-04-04 A | 2008-04-09 A |  | finish no earlier than 2008-04-09 | 吉田光寿 |
| 166 | 無線ON/OFFフラグ制御 | 8d | 2008-04-04 | 2008-04-11 |  | finish no earlier than 2008-04-11 |  |
| 167 | 無線LED制御 | 8d | 2008-04-04 | 2008-04-11 |  | finish no earlier than 2008-04-11 |  |
| 213 | 無線ON/OFFフラグ制御 | 1d? | 2008-04-11 | 2008-04-11 |  | start no earlier than 2008-04-11 |  |
| 217 | 本体設定での実装 | 1d? | 2008-02-08 | 2008-02-08 |  |  |  |
| 231 | セキュアアプリ用makerom.TWL.secure | 1d? | 2008-02-08 A | 2008-02-08 A |  |  | 吉岡照幸 |
| 232 | ランチャー用makerom.TWL.launcher | 1d? | 2008-02-08 A | 2008-02-08 A |  |  | 吉岡照幸 |
| 280 | REDシステムメニューとのマージ作業 | 13.5d? | 2008-04-11 | 2008-04-30 |  | finish no earlier than 2008-04-30 | 吉岡照幸; 吉田光寿 |
| 287 | デバッグ項目洗い出し | 22d? | 2008-04-09 | 2008-04-30 |  | finish no earlier than 2008-04-30 |  |
| 294 | 生産工程用NandInitializer（NANDフォーマット、REDランチャーインポート） | 1d? | 2008-02-08 | 2008-02-08 |  |  | 神川洋司 |
| 295 | 生産工程用NandInitializer2（HW情報、リージョンなどの書き込み） | 1d? | 2008-02-08 | 2008-02-08 |  |  | 神川洋司 |
| 296 | 生産工程用NandInitializer3（内蔵アプリインポート） | 1d? | 2008-02-08 | 2008-02-08 |  |  | 神川洋司 |

Removed: 176 鍵のセット; 179 SDKコードとのカードアクセス排他制御; 221 Privateセーブデータのサイズ固定; 222 SD使用可能特別版対応; 271 仕様策定; 272 フォント; 273 ランチャー; 275 デバッグ; 276 本体設定; 277 実装; 278 WiFi設定; 279 デバッグ; 280 ショップ; 281 実装; 282 デバッグ; 283 写真帳; 284 実装; 285 デバッグ; 286 ピクトチャット; 287 実装; 288 デバッグ; 289 DSダウンロードプレイ; 290 実装; 291 デバッグ; 292 新型配信システム; 293 実装; 294 デバッグ

Changed:

| ID | Task | Start | Finish | Duration | Complete | Total float | Predecessors | Other |
| --- | --- | --- | --- | --- | --- | --- | --- | --- |
| 4 | ワーキングモデル(10台 BO:0/7/3)納品予定 | 2008-02-15 A | 2008-02-15 A |  | 0% → 100% | 146d → none |  |  |
| 5 | **IS-TWL-DEBUGGER納品開始** | 2008-03-03 A |  |  | 0% → 20% |  |  |  |
| 6 | 先行5台 | 2008-03-03 A | 2008-03-03 A |  | 0% → 100% | 129d → none |  |  |
| 11 | **量産試作納品開始** | 2008-04-09 A |  |  | 0% → 25% |  |  |  |
| 12 | ミニ量試200台 | 2008-04-09 A | 2008-04-09 A |  | 0% → 100% | 92d → none |  |  |
| 27 | **仕様策定** |  |  |  | 43% → 63% |  |  |  |
| 28 | **ランチャー** |  |  |  | 31% → 53% |  |  |  |
| 38 | **本体設定データ** |  | 2008-03-16 → 2008-04-04 (+19d) | 35d → 54d | 75% → 96% | 116d → 97d |  |  |
| 40 | 顔写真 |  | 2008-03-02 → 2008-04-04 A (+33d) | 15d → 40d | 50% → 100% | 131d → none |  |  |
| 41 | **NANDファイルアクセス制限** | 2008-02-11 A |  |  | 0% → 69% | 116d → 117d |  |  |
| 42 | 同一メーカの他タイトルのセーブデータ（ReadOnly） | 2008-02-11 A | 2008-03-16 A |  | 0% → 100% | 116d → none |  |  |
| 43 | TMPブートをする際のTMPブートアプリファイル（RW） | 2008-02-11 A | 2008-03-16 A |  | 0% → 100% | 116d → none |  | was named TMPブートをする際のTMPフォルダ（Write） |
| 45 | ESライブラリのほぼ全部アクセス | 2008-02-11 A | 2008-03-16 A |  | 0% → 100% | 116d → none |  |  |
| 46 | 本体設定データ（ReadOnly） | 2008-02-11 A |  |  | 0% → 80% | 116d → 117d |  |  |
| 52 | **NTRアプリのR4対策** |  | 2008-03-02 → 2008-04-09 (+38d) | 20d → 59d |  | 130d → 92d |  |  |
| 53 | どのレベルでやるかの方針決定 |  | 2008-03-02 → 2008-04-09 (+38d) | 15d → 43d |  | 130d → 92d |  | constraint start no earlier than 2008-02-08 → start no earlier than 2008-02-11 |
| 54 | **アプリジャンプ** |  | 2008-03-14 → 2008-04-11 (+28d) | 36d? → 64d? | 74% → 49% | 118d → 90d |  |  |
| 56 | 仕様案アンケート | 2008-03-06 A | 2008-03-11 A |  | 0% → 100% | 118d → none |  |  |
| 57 | 仕様FIX | 2008-03-12 A | 2008-03-14 → 2008-04-11 (+28d) | 3d → 23d | 0% → 10% | 118d → 90d |  | constraint finish no earlier than 2008-03-14 → finish no earlier than 2008-04-11 |
| 61 | 特許調査 |  | 2008-03-14 → 2008-04-11 (+28d) | 7d? → 27d? |  | 118d → 90d |  | constraint finish no earlier than 2008-03-14 → finish no earlier than 2008-04-11 |
| 65 | **バックライト輝度の値、段階** |  | 2008-02-29 A |  | 72% → 100% | 132d → none |  |  |
| 68 | UIG承認 | 2008-02-21 A | 2008-02-29 A |  | 0% → 100% | 132d → none |  |  |
| 69 | **バッテリエクステンション** |  | 2008-03-11 → 2008-03-28 A (+17d) | 33d? → 50d? | 82% → 100% | 107d → none |  |  |
| 70 | データ測定 |  | 2008-03-09 A |  | 90% → 100% | 107d → none |  |  |
| 71 | 仕様策定 | 2008-03-10 A | 2008-03-11 → 2008-03-28 A (+17d) | 2d → 15d | 0% → 100% | 107d → none |  |  |
| 74 | 実装 | 2008-02-08 → 2008-04-01 A (+53d) | 2008-04-30 → 2008-04-09 A (-21d) | 83d? → 7d? | 0% → 100% | 71d → none |  | constraint start no earlier than 2008-02-08 → finish no earlier than 2008-04-09; resources none → 村上豊; 藤田僚平 |
| 75 | 鍵の引渡し |  | 2008-03-10 → 2008-03-31 A (+21d) | 3d? → 18d? | 50% → 100% | 122d → none |  |  |
| 76 | **eTicket** |  | 2008-03-07 → 2008-03-17 (+10d) | 29d? → 39d? | 94% → 97% | 125d → 115d |  |  |
| 79 | **ネットワークアップデート** |  | 2008-03-07 → 2008-03-17 (+10d) | 19d? → 29d? | 85% → 92% | 125d → 115d |  |  |
| 81 | ACアダプタを差した状態でNUPしたらシャットダウンしない保証があるか調査 |  | 2008-03-07 → 2008-03-17 A (+10d) | 13d? → 19d? | 90% → 100% | 125d → none |  |  |
| 82 | **無線** |  | 2008-03-07 → 2008-04-09 (+33d) | 29d? → 62d? |  | 125d → 92d |  |  |
| 86 | WiFiエミュレーション | 2008-02-11 A → 2008-02-08 A (-3d) | 2008-03-02 A → 2008-03-07 A (+5d) | 15d → 21d |  |  |  | resources 大江徹; 佐藤雅樹; 水口裕基 → 大江徹; 水口裕基 |
| 87 | ファームロード |  |  |  |  |  |  | resources 大江徹; 佐藤雅樹; 水口裕基 → 大江徹; 佐藤雅樹 |
| 88 | 無線終端処理 |  |  |  |  |  |  | resources 大江徹; 佐藤雅樹; 水口裕基 → 大江徹; 佐藤雅樹 |
| 98 | **X4ボード対応** | 2008-02-11 A → 2008-03-03 A (+21d) | 2008-03-02 A → 2008-04-02 A (+31d) | 20d → 31d |  |  |  | was named X3ボード対応 |
| 99 | ランチャー | 2008-02-11 A → 2008-03-03 A (+21d) | 2008-03-02 A → 2008-04-02 A (+31d) | 15d → 23d |  |  |  | resources 中島高伸 → 中島高伸; 吉田光寿; 吉岡照幸 |
| 100 | ISデバッガ | 2008-02-11 A → 2008-03-03 A (+21d) | 2008-03-02 A → 2008-04-02 A (+31d) | 15d → 23d |  |  |  | resources 中島高伸 → 中島高伸; 吉田光寿; 吉岡照幸 |
| 102 | **REDシステムメニュー** |  | 2008-04-14 → 2008-04-30 (+16d) | 67d? → 83d? | 48% → 75% | 87d → 71d |  |  |
| 103 | **ランチャー** |  | 2008-04-14 → 2008-04-30 (+16d) | 67d? → 83d? | 46% → 74% | 87d → 71d |  |  |
| 105 | **アプリ起動** |  | 2008-03-30 → 2008-04-18 (+19d) | 51d? → 71d? | 46% → 78% | 103d → 83d |  |  |
| 106 | **起動時処理** |  | 2008-03-14 → 2008-04-18 (+35d) | 36d? → 71d? | 46% → 81% | 118d → 83d |  |  |
| 107 | **鍵の引渡し** | 2008-02-08 → 2008-03-24 A (+45d) | 2008-02-08 → 2008-03-31 A (+52d) | 1d? → 8d? | 0% → 100% | 153d → none |  |  |
| 108 | AES鍵・AES種引渡し | 2008-02-08 → 2008-03-24 A (+45d) | 2008-02-08 → 2008-03-31 A (+52d) | 1d? → 6d? | 0% → 100% | 153d → none |  |  |
| 109 | ハードウェアAESスロット設定・クリア | 2008-02-08 → 2008-03-24 A (+45d) | 2008-02-08 → 2008-03-31 A (+52d) | 1d? → 6d? | 0% → 100% | 153d → none |  |  |
| 110 | NANDファイルのアクセス制限 |  | 2008-02-29 → 2008-04-02 A (+33d) | 15d → 38d | 50% → 100% | 132d → none |  |  |
| 112 | カード活線挿抜可否 | 2008-02-08 A | 2008-02-28 A |  | 0% → 100% | 133d → none |  |  |
| 113 | SDカードアクセス可否 |  | 2008-02-29 A |  | 50% → 100% | 132d → none |  |  |
| 117 | メモリクリア |  | 2008-02-28 A |  | 70% → 100% | 133d → none |  |  |
| 118 | アプリロード速度チューニング |  |  |  |  |  |  | was named 速度チューニング |
| 119 | **レジスタクリア** | 2008-02-11 A → 2008-02-18 A (+7d) | 2008-03-14 → 2008-04-18 (+35d) | 33d → 61d | 8% → 72% | 118d → 83d |  |  |
| 120 | 各ハード担当者にクリアする領域を洗い出してもらう | 2008-02-11 A → 2008-02-18 A (+7d) | 2008-03-07 → 2008-04-16 (+40d) | 20d → 43d | 10% → 80% | 118d → 85d |  | constraint finish no earlier than 2008-03-07 → finish no earlier than 2008-04-16 |
| 121 | クリア処理実装 | 2008-03-10 A | 2008-03-14 → 2008-04-18 (+35d) | 5d → 30d | 0% → 60% | 116d → 83d | 120, 20SF → none | constraint none → finish no earlier than 2008-04-18 |
| 122 | **アプリ認証処理** | 2008-02-11 A → 2008-02-08 A (-3d) | 2008-03-30 → 2008-04-09 (+10d) | 48d? → 62d? | 31% → 65% | 103d → 92d |  |  |
| 123 | **NTRアプリのR4対策** | 2008-02-11 → 2008-02-08 A (-3d) |  | 48d → 51d? | 0% → 6% | 102d → 103d |  |  |
| 124 | **ダイジェストとるやつ** | 2008-02-11 → 2008-02-08 A (-3d) |  | 48d → 51d? | 0% → 6% | 102d → 103d |  |  |
| 126 | ダイジェストリスト作成 | 2008-02-11 → 2008-03-26 A (+44d) |  | 35d → 3d | 0% → 50% | 102d → 103d |  |  |
| 128 | **TWLアプリ** |  | 2008-03-14 → 2008-04-09 A (+26d) | 33d? → 59d? | 67% → 100% | 118d → none |  |  |
| 133 | NTRアプリ（PictChat,DS-DSプレイ） | 2008-02-18 A | 2008-03-14 A |  | 0% → 100% | 116d → none |  |  |
| 137 | **アプリジャンプ** |  | 2008-04-04 → 2008-04-18 (+14d) | 54d → 68d | 83% → 90% | 97d → 83d |  |  |
| 138 | **任意アプリの直接起動** |  | 2008-04-04 → 2008-04-18 (+14d) | 54d → 68d | 86% → 97% | 97d → 83d |  |  |
| 141 | ImportフォルダからTMPフォルダへの一時格納場所変更（ES待ち） | 2008-03-31 → 2008-04-18 (+18d) | 2008-04-04 → 2008-04-18 (+14d) | 5d → 1d |  | 95d → 83d |  | constraint start no earlier than 2008-03-17 → finish no earlier than 2008-04-18 |
| 146 | TMPフォルダクリーン | 2008-03-31 A | 2008-04-04 → 2008-03-31 A (-4d) | 5d → 1d | 0% → 100% | 95d → none |  |  |
| 147 | 本体設定データetcのロード | 2008-02-11 A → 2008-03-17 A (+35d) | 2008-03-02 → 2008-04-04 A (+33d) |  | 80% → 100% | 131d → none |  |  |
| 148 | RTC初期化 |  | 2008-03-02 A |  | 80% → 100% | 131d → none |  |  |
| 149 | 初回バックライトON | 2008-02-11 A | 2008-03-02 A |  | 0% → 100% | 130d → none |  |  |
| 150 | **無線** |  | 2008-03-21 → 2008-04-11 (+21d) | 43d? → 64d? | 57% → 58% | 111d → 90d |  |  |
| 151 | **新無線ファームロード** |  |  |  | 57% → 75% |  |  |  |
| 153 | **ファーム** |  |  |  | 52% → 60% |  |  |  |
| 155 | **NAND保存フォーマットに変換** |  | 2008-03-10 A |  | 60% → 100% | 122d → none |  |  |
| 158 | 新フォーマット実装 | 2008-03-07 A | 2008-03-10 A |  | 0% → 100% | 122d → none |  |  |

| ID | Task | Start | Finish | Duration | Complete | Total float | Other |
| --- | --- | --- | --- | --- | --- | --- | --- |
| 159 | **実装** |  |  |  | 59% → 84% |  |  |
| 160 | 無線ライブラリ |  | 2008-02-25 A |  | 70% → 100% | 136d → none |  |
| 161 | ランチャー仮実装 |  | 2008-03-02 A |  | 70% → 100% | 131d → none |  |
| 169 | **バナー** |  | 2008-03-14 A |  | 76% → 100% | 118d → none |  |
| 170 | バナードライバ |  | 2008-03-02 A |  | 90% → 100% | 131d → none |  |
| 171 | サブバナー |  | 2008-03-14 A |  | 50% → 100% | 118d → none |  |
| 172 | サブバナーファイル（FSレイヤ） |  | 2008-03-02 A |  | 90% → 100% | 131d → none |  |
| 173 | **活線挿抜** |  | 2008-03-28 → 2008-04-02 (+5d) | 50d? → 55d? | 43% → 60% | 104d → 99d |  |
| 177 | **ロード** |  | 2008-03-28 → 2008-04-02 (+5d) | 50d? → 55d? | 37% → 57% | 104d → 99d |  |
| 179 | TWLカード対応 | 2008-02-25 → 2008-03-13 (+17d) | 2008-03-14 → 2008-04-02 (+19d) |  |  | 116d → 99d | constraint finish no earlier than 2008-03-14 → finish no earlier than 2008-04-02 |
| 185 | デコード処理 |  |  |  |  |  | was named ARM9.Ltd.staticの先頭16KB |
| 186 | **Blowfish鍵管理** |  | 2008-03-07 A |  | 50% → 100% | 125d → none |  |
| 188 | 受け渡された鍵の使用 | 2008-03-07 A | 2008-03-07 A |  | 0% → 100% | 125d → none |  |
| 189 | カードスロットAでの動作 | 2008-02-25 → 2008-02-08 A (-17d) | 2008-03-14 → 2008-02-08 A (-35d) | 19d → 1d? | 0% → 100% | 116d → none | resources none → 赤羽淳平 |
| 191 | 表示との連動 | 2008-02-11 A |  |  | 0% → 50% | 130d → 131d |  |
| 192 | 起動との連動 | 2008-02-11 A |  |  | 0% → 50% | 130d → 131d |  |
| 197 | バッテリエクステンション | 2008-03-12 → 2008-03-31 A (+19d) | 2008-03-25 → 2008-04-11 A (+17d) |  | 0% → 100% | 107d → none |  |
| 198 | **ISデバッガ対応** |  | 2008-04-14 → 2008-04-30 (+16d) | 67d? → 83d? | 16% → 73% | 87d → 71d |  |
| 199 | 開発サポート |  | 2008-04-14 → 2008-04-30 (+16d) | 46d → 58d | 30% → 50% | 87d → 71d | constraint finish no earlier than 2008-03-13 → finish no earlier than 2008-04-30 |
| 200 | 安定度を上げる |  | 2008-03-14 → 2008-04-30 (+47d) | 25d → 58d |  | 118d → 71d | constraint finish no earlier than 2008-03-14 → finish no earlier than 2008-04-30 |
| 201 | アプリジャンプ対応 | 2008-02-11 A |  |  | 0% → 30% | 116d → 117d | was named ハードウェアリセット対応 |
| 203 | NTRモードデバッグ | 2008-02-11 A | 2008-03-16 → 2008-04-02 A (+17d) | 25d → 38d | 0% → 100% | 116d → none |  |
| 204 | TWL-HYBアプリのNTRモードデバッグ | 2008-02-08 A | 2008-02-08 → 2008-04-02 A (+54d) | 1d? → 55d? | 0% → 100% | 153d → none |  |
| 206 | TLFモードフラグ対応（署名やAESチェックを無効にする） | 2008-02-08 A | 2008-02-08 → 2008-04-02 A (+54d) | 1d? → 55d? | 0% → 100% | 153d → none |  |
| 207 | **NANDアプリデバッグ** | 2008-02-11 A |  |  | 0% → 71% | 102d → 103d |  |
| 208 | 暫定対応 | 2008-02-11 A | 2008-03-16 A |  | 0% → 100% | 102d → none |  |
| 210 | **本体設定** |  | 2008-03-03 → 2008-04-11 (+39d) | 25d? → 64d? | 84% → 87% | 129d → 90d |  |
| 214 | **本体初期化** | 2008-02-11 A → 2008-02-08 A (-3d) |  | 20d → 23d? | 80% → 87% |  | was named 本体初期化（各モジュールの初期化仕様fix待ち） |
| 215 | ツール（NandInitializer） |  | 2008-03-02 A |  | 80% → 100% | 131d → none |  |
| 219 | NANDファーム |  | 2008-03-16 → 2008-04-02 A (+17d) | 25d → 38d | 98% → 100% | 117d → none |  |
| 221 | **TwlSDK** |  |  |  | 50% → 62% |  |  |
| 222 | **ツール** |  |  |  | 18% → 29% |  |  |
| 223 | **makerom.TWL** |  |  |  | 14% → 50% |  |  |
| 224 | 領域チェック修正 |  |  |  |  |  | was named 領域のワーニング修正 |
| 225 | TWL領域用キーテーブル埋め込み | 2008-03-14 A | 2008-03-14 A |  | 0% → 100% | 118d → none |  |
| 228 | 鍵アクセスコントロール情報の新設 | 2008-03-14 A | 2008-03-14 A |  | 0% → 100% | 118d → none |  |
| 229 | カードリージョン情報の新設 | 2008-03-14 A | 2008-03-14 A |  | 0% → 100% | 118d → none |  |
| 230 | システムアプリ用makerom.TWL.sys |  |  |  |  |  | was named システム/ショップアプリ開発特別版対応 |
| 240 | **ライブラリ** |  |  |  | 56% → 67% |  |  |
| 241 | reboot |  |  |  | 80% → 90% |  |  |
| 242 | os/launcherParam |  |  |  | 80% → 90% |  |  |
| 243 | lcfg |  |  |  | 80% → 90% |  |  |
| 244 | nam |  |  |  | 70% → 90% |  |  |
| 248 | **FS** |  |  |  | 34% → 50% |  |  |
| 252 | SRLのハッシュチェック |  |  |  | 20% → 50% |  |  |
| 253 | NANDアクセス権管理 |  | 2008-03-16 A |  | 50% → 100% | 117d → none |  |
| 255 | **WiFi関係ライブラリ** |  |  |  | 64% → 85% |  |  |
| 263 | WiFi設定ユーティリティ |  | 2008-03-14 A |  | 60% → 100% | 118d → none |  |
| 265 | **eTicket** |  | 2008-03-30 → 2008-05-01 (+32d) | 51d? → 84d? | 30% → 35% | 103d → 70d |  |
| 266 | **ESライブラリ** |  |  |  | 50% → 60% | 97d → 103d |  |
| 267 | 実装 |  |  |  | 50% → 70% | 97d → 103d |  |
| 272 | **CLSサーバ** |  | 2008-03-30 → 2008-05-01 (+32d) | 51d → 84d | 13% → 18% | 103d → 70d |  |
| 274 | 製品用セットアップ | 2008-02-11 → 2008-04-01 (+50d) | 2008-03-30 → 2008-05-01 (+32d) | 35d → 23d |  | 102d → 70d | constraint none → start no earlier than 2008-04-01 |
| 279 | **UIGシステムメニュー** | 2008-02-08 → 2008-04-11 (+63d) | 2008-05-15 → 2008-04-30 (-15d) | 98d? → 19.5d? |  | 56d → 71d |  |
| 282 | **ROMマスター作成** |  | 2008-03-30 → 2008-04-30 (+31d) | 51d? → 83d? | 31% → 61% | 103d → 71d |  |
| 283 | ROMマスタリングツール |  | 2008-03-10 → 2008-04-18 (+39d) | 22d? → 51d? | 80% → 70% | 122d → 83d | constraint start no earlier than 2008-02-08 → finish no earlier than 2008-04-18 |
| 284 | TWLカードのTWL領域用キーテーブル生成ツール | 2008-02-11 → 2008-04-21 (+70d) | 2008-03-30 → 2008-04-30 (+31d) | 35d → 8d |  | 102d → 71d | constraint none → start no earlier than 2008-04-21 |
| 286 | **デバッグ関係** | 2008-04-01 → 2008-04-09 (+8d) | 2008-04-25 → 2008-04-30 (+5d) | 25d? → 22d? |  | 76d → 71d |  |
| 288 | 必要となるプログラム洗い出し | 2008-04-01 → 2008-04-21 (+20d) | 2008-04-04 → 2008-04-24 (+20d) |  |  | 78d → 71d | constraint finish no earlier than 2008-04-04 → start no earlier than 2008-04-21 |
| 289 | テストプログラム作成 | 2008-04-07 → 2008-04-25 (+18d) | 2008-04-25 → 2008-04-30 (+5d) | 19d? → 6d? |  | 76d → 71d | constraint start no earlier than 2008-04-07 → finish no earlier than 2008-04-30 |
| 291 | **生産工程用プログラム** |  |  |  | 4% → 35% |  |  |
| 292 | 必要となるプログラム洗い出し | 2008-02-08 A | 2008-02-08 → 2008-04-18 (+70d) | 1d? → 51d? | 0% → 50% | 153d → 83d | constraint none → finish no earlier than 2008-04-18; resources 製品技術部 → 製品技術部; 宮本昌幸; 吉岡照幸 |
| 293 | SDカードダイレクトブート | 2008-04-01 A → 2008-04-02 A (+1d) | 2008-04-01 → 2008-04-02 A (+1d) |  | 90% → 100% | 100d → none |  |

## Version 11 (saved 2008-04-11)

Note of the change: 無線LED処理の追加。 ドキュメント更新。

Last finish stays 2008-07-10. Complete tasks 104 → 136.

Added:

| ID | Task | Duration | Start | Finish | Predecessors | Constraint | Resources |
| --- | --- | --- | --- | --- | --- | --- | --- |
| 18 | **TwlSDKリリースマイルストーン** | 75d | 2008-02-11 | 2008-04-25 |  |  |  |
| 19 | 5.0FC | 1d | 2008-03-25 | 2008-03-25 |  | start no earlier than 2008-03-25 |  |
| 20 | 5.0FC plus1 | 1d | 2008-04-04 | 2008-04-04 |  | start no earlier than 2008-04-04 |  |
| 21 | 5.0FC plus2 | 1d | 2008-04-25 | 2008-04-25 |  | start no earlier than 2008-04-25 |  |
| 22 | 5.0RC | 1d | 2008-02-11 | 2008-02-11 |  | start no earlier than 2008-02-11 |  |
| 23 | 5.0 Release | 1d | 2008-02-11 | 2008-02-11 |  | start no earlier than 2008-02-11 |  |
| 31 | **汎用仕様** | 75d? | 2008-02-08 A | 2008-04-23 |  |  |  |
| 41 | 質問を忘れた場合のサポートセンターコール | 18d? | 2008-03-26 | 2008-04-18 |  | finish no earlier than 2008-04-18 | 桑原雅人 |
| 47 | **ドキュメント** | 12d? | 2008-04-14 | 2008-04-25 |  |  |  |
| 48 | REDランチャーフロー | 4d | 2008-04-14 | 2008-04-17 |  | start no earlier than 2008-04-14 | 吉岡照幸 |
| 49 | アプリジャンプ | 2d | 2008-04-18 | 2008-04-21 | 48 | start no earlier than 2008-04-14 | 吉岡照幸 |
| 50 | NANDアクセス権 | 3d | 2008-04-22 | 2008-04-24 | 49 | start no earlier than 2008-04-14 | 吉岡照幸 |
| 51 | アプリ種別 | 1d? | 2008-04-25 | 2008-04-25 | 50 | start no earlier than 2008-04-14 | 吉岡照幸 |
| 56 | 実装 | 1d? | 2008-02-08 A | 2008-02-08 A |  |  | 吉岡照幸 |
| 57 | 中間レビュー | 2d? | 2008-04-14 | 2008-04-15 | 56 | finish no earlier than 2008-04-15 | 吉岡照幸 |
| 58 | 最終レビュー | 2d | 2008-04-22 | 2008-04-23 | 57 | start no earlier than 2008-04-22 | 吉岡照幸 |
| 62 | **TitleIDリスト作成** | 23d? | 2008-03-19 A | 2008-04-10 A |  |  |  |
| 63 | 実装 | 1d? | 2008-03-19 A | 2008-03-19 A |  | start no earlier than 2008-03-19 | 吉田光寿 |
| 64 | 修正および仕様改定 | 2d | 2008-04-09 A | 2008-04-10 A |  | finish no earlier than 2008-04-10 | 吉田光寿 |
| 65 | HWリセット、電源OFF処理 | 1d? | 2008-03-29 A | 2008-03-29 A | 322 |  |  |
| 66 | **スリープ処理** | 56d? | 2008-02-08 A | 2008-04-03 |  |  |  |
| 67 | 実装 | 1d? | 2008-04-03 A | 2008-04-03 A |  |  | 中島高伸 |
| 68 | デバッガでスリープを有効にすると電源が落ちる対策 | 1d? | 2008-02-08 | 2008-02-08 |  |  | 中島高伸 |
| 70 | 実装 | 3d | 2008-02-08 A | 2008-02-12 A |  |  | 吉田光寿 |
| 71 | ブラッシュアップ | 2d | 2008-04-17 | 2008-04-18 | 103 | start no earlier than 2008-04-14 | 吉田光寿 |
| 76 | 仮実装 | 1d? | 2008-02-08 A | 2008-02-08 A |  | start no earlier than 2008-02-08 | 吉岡照幸 |
| 77 | 改定 | 1d? | 2008-02-15 A | 2008-02-15 A |  |  | 中島高伸 |
| 80 | 元に戻す | 1d? | 2008-04-23 | 2008-04-23 | 315 | start no earlier than 2008-04-18 | 吉田光寿 |
| 82 | 仕様 | 6d? | 2008-03-24 A | 2008-03-31 A |  |  | 吉岡照幸 |
| 83 | 実装 | 2d? | 2008-04-01 A | 2008-04-02 A | 82 |  | 吉岡照幸 |
| 84 | 仕様改定 | 1d | 2008-04-18 | 2008-04-18 |  | finish no earlier than 2008-04-18 | 吉岡照幸 |
| 86 | 仕様 | 5d? | 2008-04-07 | 2008-04-11 |  | start no earlier than 2008-04-07 | 吉岡照幸; 松島愛佑 |
| 87 | **ランチャー起動速度計測** | 69d? | 2008-02-08 | 2008-04-16 |  |  |  |
| 88 | ＵＩＧランチャーサイズ見積もり | 1d? | 2008-02-08 | 2008-02-08 |  |  | 荒木 勉 |
| 89 | フォントへの署名付加 | 1d | 2008-04-14 | 2008-04-14 | 241 | start no earlier than 2008-04-11 | 西川猛司 |
| 90 | フォント署名あり／なしでの計測 | 2d | 2008-04-15 | 2008-04-16 | 89 | start no earlier than 2008-04-11 | 西川猛司 |
| 93 | 基本仕様 | 37d? | 2008-02-08 A | 2008-03-31 A |  | start no earlier than 2008-02-08 | 吉岡照幸; 吉崎 浩二 |
| 95 | **実装** | 49d | 2008-02-08 A | 2008-03-27 A |  |  |  |
| 98 | NAMライブラリの対応 | 2d | 2008-02-08 A | 2008-02-11 A |  |  | 畠本 稔 |
| 99 | **アプリロード** | 69d? | 2008-02-08 A | 2008-04-16 |  |  |  |
| 100 | 基本実装 | 3d | 2008-02-08 A | 2008-02-12 A |  |  | 吉田光寿 |
| 102 | 基本アルゴリズム検討・実装 | 1d? | 2008-02-08 A | 2008-02-08 |  |  | 村上豊 |
| 103 | ランチャー組み込み | 4d | 2008-04-11 | 2008-04-16 |  | start no earlier than 2008-04-11 | 吉田光寿 |
| 113 | **実装** | 3d | 2008-03-24 A | 2008-03-26 A |  |  |  |
| 124 | 本体設定への起動アプリ情報保存（インデックス、プラットホームコード、TitleID） | 1d? | 2008-04-01 A | 2008-04-01 A |  | start no earlier than 2008-04-01 | 吉岡照幸 |
| 126 | 基本ルーチン | 2d | 2008-02-08 A | 2008-02-11 A |  |  | 中島高伸 |
| 127 | NTRアプリのクリア範囲 | 1d | 2008-02-08 A | 2008-02-08 A |  |  | 中島高伸; 吉田光寿 |
| 128 | TWLアプリのクリア範囲 | 1d | 2008-02-08 A | 2008-02-08 A |  |  | 中島高伸; 吉田光寿 |
| 137 | 仕様 | 1d? | 2008-02-08 A | 2008-02-08 A |  |  | 村上豊 |
| 143 | **仕様** | 64d? | 2008-02-08 A | 2008-04-11 |  |  |  |
| 148 | **実装** | 76d? | 2008-02-08 A | 2008-04-23 |  |  |  |
| 149 | アプリ間パラメータ、ランチャーパラメータ | 5d | 2008-02-08 A | 2008-02-14 A |  |  | 吉田光寿 |
| 151 | **ノーマルジャンプ** | 73d | 2008-02-11 A | 2008-04-23 |  |  | 吉田光寿 |
| 155 | **TMPジャンプ** | 15d? | 2008-02-08 A | 2008-02-22 A |  |  |  |
| 156 | TWLアプリ | 1d? | 2008-02-08 A | 2008-02-08 A |  |  | 吉田光寿 |
| 162 | **仕様** | 53d? | 2008-02-08 A | 2008-03-31 A |  |  |  |
| 163 | ロード仕様 | 1d? | 2008-02-08 A | 2008-02-08 A |  |  | 大江徹; 佐藤雅樹 |
| 164 | アップデートを考慮したNANDへの格納仕様 | 3d | 2008-02-08 A | 2008-02-12 A |  |  | 大江徹; 吉岡照幸 |
| 165 | ランチャーによる固定データロード有無 | 37d? | 2008-02-08 A | 2008-03-31 A |  | start no earlier than 2008-02-08 | 大江徹; 佐藤雅樹 |
| 173 | ブラッシュアップ | 44d? | 2008-02-19 | 2008-04-18 |  | finish no earlier than 2008-04-18 | Atheros |
| 182 | 仕様 | 5d? | 2008-04-04 A | 2008-04-10 A |  | finish no earlier than 2008-04-10 | 大江徹 |
| 183 | 実装 | 1d | 2008-04-11 A | 2008-04-11 | 182 |  | 吉岡照幸 |
| 185 | 仕様 | 5d? | 2008-04-04 A | 2008-04-10 A |  | finish no earlier than 2008-04-10 | 大江徹 |
| 186 | 実装 | 1d | 2008-04-11 A | 2008-04-11 | 185 |  | 吉岡照幸 |
| 191 | **実装** | 33d? | 2008-02-11 A | 2008-03-14 A |  |  |  |
| 219 | 実装 | 39d? | 2008-02-08 A | 2008-04-02 A |  |  | 中島高伸 |
| 220 | ブラッシュアップ | 20d? | 2008-04-03 A | 2008-04-30 | 219 | finish no earlier than 2008-04-30 | 中島高伸 |
| 221 | **アプリジャンプ対応** | 5d | 2008-04-12 | 2008-04-16 |  |  | 中島高伸; 吉岡照幸 |
| 222 | ROMヘッダのデバッグ許可フラグを見てJTAG制御を変える | 5d | 2008-04-12 | 2008-04-16 | 295FS+10d |  |  |
| 232 | 基本実装 | 1d? | 2008-02-08 A | 2008-02-08 A |  |  | 吉田光寿 |
| 236 | **仕様** | 54d | 2008-02-11 A | 2008-04-04 |  |  |  |
| 250 | 実装 | 1d? | 2008-02-08 A | 2008-02-08 A |  |  | 村上豊 |
| 251 | HWセキュア情報のランチャーゲームコードを参照してパス解決 | 1d? | 2008-02-08 A | 2008-02-08 A |  |  | 村上豊 |
| 252 | NAND AES暗号仕様変更 | 1d? | 2008-04-02 A | 2008-04-02 A |  |  | 村上豊 |
| 253 | SRL AESデコード修正 | 1d? | 2008-04-03 A | 2008-04-03 A |  | start no earlier than 2008-04-03 | 村上豊 |
| 255 | **マイコン処理** | 64d? | 2008-02-08 A | 2008-04-11 A |  |  |  |
| 283 | **ショップサーバ** | 1d? | 2008-02-08 | 2008-02-08 |  |  |  |
| 284 | 開発用セットアップ | 1d? | 2008-02-08 | 2008-02-08 |  |  |  |
| 285 | 製品用セットアップ | 1d? | 2008-02-08 | 2008-02-08 |  |  |  |
| 290 | **終了分** | 54d? | 2008-02-08 A | 2008-04-01 A |  |  |  |
| 295 | デバッグ許可フラグの新設 | 1d? | 2008-04-01 A | 2008-04-01 A |  | start no earlier than 2008-04-01 | 吉岡照幸 |
| 301 | AES領域を４つに増やす | 1d? | 2008-02-08 | 2008-02-08 |  |  | 吉岡照幸 |
| 302 | makerom.NTR.sys（PictoChat、DLダウンロードプレイ用特別版） | 5d | 2008-02-08 | 2008-02-14 |  |  | 吉岡照幸 |
| 306 | 特定のファイル以外のクリア | 3d | 2008-02-08 A | 2008-02-12 A |  |  | 神川洋司 |
| 307 | リージョン変更 | 3d | 2008-02-08 A | 2008-02-12 A |  |  | 神川洋司 |
| 308 | AESフォーマット対応 | 1d? | 2008-02-08 A | 2008-02-08 A |  |  | 神川洋司 |
| 323 | 実機向け実装 | 1d? | 2008-03-24 A | 2008-03-24 A |  | start no earlier than 2008-03-24 | 吉崎 浩二 |
| 324 | デバッガ向け追加処理（ハートビート処理） | 1d? | 2008-02-08 | 2008-02-08 |  |  | 吉崎 浩二 |
| 345 | 初期仕様実装 | 18d? | 2008-02-25 A | 2008-03-19 A |  | finish no earlier than 2008-03-19 | 西川猛司 |
| 346 | AES拡張 | 1d? | 2008-02-11 | 2008-02-11 | 301 |  | 西川猛司 |
| 347 | 仕様再検討（鍵をハードウェア内に入れるとか） | 0.5d? | 2008-02-08 | 2008-02-08 |  |  | 宮本昌幸; 吉岡照幸 |
| 360 | リージョン変更の対応 | 1d? | 2008-02-08 | 2008-02-08 |  |  |  |
| 362 | HWリセット対応 | 1d? | 2008-03-25 | 2008-03-25 | 322 |  |  |

Removed: 23 第4ステップ; 24 第5ステップ; 28 ランチャー; 45 ESライブラリのほぼ全部アクセス; 46 本体設定データ（ReadOnly）; 54 アプリジャンプ; 82 無線; 87 ファームロード; 89 フライトモード; 90 無線LED制御; 110 NANDファイルのアクセス制限; 124 ダイジェストとるやつ; 138 任意アプリの直接起動; 142 ラッパーAPI作成; 143 ランチャーメニューに戻る; 156 仕様策定; 185 デコード処理; 199 開発サポート; 200 安定度を上げる; 201 アプリジャンプ対応; 202 NANDファイルシステム終了処理; 233 NTR-SRL署名対応特別版

Changed:

| ID | Task | Start | Finish | Duration | Complete | Total float | Predecessors | Other |
| --- | --- | --- | --- | --- | --- | --- | --- | --- |
| 25 | **REDランチャー開発マイルストーン** |  | 2008-04-13 → 2008-04-23 (+10d) | 66d → 76d |  | 88d → 78d |  |  |
| 28 | 第2ステップ（3月中旬）→（4月上旬） | 2008-03-16 → 2008-04-04 (+19d) | 2008-03-16 → 2008-04-04 (+19d) |  |  | 110d → 91d |  | was named 第2ステップ（3月中旬）; constraint start no earlier than 2008-03-16 → start no earlier than 2008-04-04 |
| 29 | 第3ステップ（3月末→4月下旬） FIX | 2008-03-30 → 2008-04-23 (+24d) | 2008-03-30 → 2008-04-23 (+24d) |  |  | 102d → 78d |  | was named 第3ステップ（3月末）; constraint start no earlier than 2008-03-30 → start no earlier than 2008-04-23 |
| 32 | アプリのNintendoロゴ表示仕様 |  |  |  |  |  |  | was named アプリのNintendoロゴ表示 |
| 33 | **EURA表示** | 2008-02-11 A | 2008-04-11 → 2008-04-23 (+12d) | 61d → 72d | 0% → 44% | 88d → 79d |  |  |
| 34 | NCL Fix | 2008-02-11 A |  |  | 0% → 80% |  |  |  |
| 35 | NOA, NOE承認 | 2008-03-17 → 2008-03-26 (+9d) | 2008-04-11 → 2008-04-23 (+12d) |  |  | 88d → 79d |  |  |
| 36 | **ペアレンタルコントロール** |  | 2008-04-17 → 2008-04-18 (+1d) | 70d? → 71d? | 13% → 40% | 84d → 83d |  |  |
| 37 | 通信方式や通信内容に対する制限 | 2008-02-08 A |  |  | 0% → 80% |  |  |  |
| 38 | レーティング以外の制御 |  |  |  | 90% → 80% |  |  |  |
| 40 | 秘密の質問項目 |  | 2008-02-29 → 2008-03-10 (+10d) |  |  | 132d → 122d |  | resources none → 三田健太朗 |
| 42 | **SDに作成するフォルダ名** |  | 2008-03-16 → 2008-04-04 (+19d) | 37d? → 56d? |  | 117d → 98d |  |  |
| 43 | TWL正式名称を使えるかを確認 | 2008-02-11 → 2008-02-29 (+18d) | 2008-03-16 → 2008-04-04 (+19d) |  |  | 116d → 98d |  |  |
| 53 | **REDシステムメニュー** |  |  |  | 75% → 78% |  |  |  |
| 54 | **ランチャー** |  |  |  | 74% → 77% |  |  |  |
| 55 | **ランチャー用ARM7コンポーネント** | 2008-02-11 A → 2008-02-08 A (-3d) | 2008-03-16 → 2008-04-23 (+38d) | 25d → 76d? | 50% → 20% | 117d → 78d | 26, 28SF → none | constraint start no earlier than 2008-02-08 → none; resources 吉岡照幸 → none |
| 59 | Hot/Coldスタート判定 |  | 2008-03-02 → 2008-02-12 A (-19d) | 15d → 2d | 80% → 100% | 131d → none | 26, 27SF → none |  |
| 60 | RTC初期化 |  | 2008-03-02 A → 2008-02-11 A (-20d) | 15d → 1d |  |  | 26, 27SF → none |  |
| 61 | 初回バックライトON |  | 2008-03-02 A → 2008-02-11 A (-20d) | 15d → 1d |  |  | 26, 27SF → none | resources 吉岡照幸 → 中島高伸 |
| 69 | **アプリリスト取得** | 2008-02-11 A → 2008-02-08 A (-3d) | 2008-03-02 → 2008-04-18 (+47d) | 15d → 71d | 70% → 60% | 131d → 81.2d | 26, 27SF → none | resources 吉田光寿 → none |
| 78 | **TMPフォルダクリーン** | 2008-03-31 A → 2008-03-11 A (-20d) | 2008-03-31 A → 2008-04-23 (+23d) | 1d → 44d? | 100% → 50% | none → 78d | 271 → none |  |
| 79 | TMP（ESのバグのためImport）フォルダクリーン | 2008-02-11 A → 2008-03-11 A (+29d) | 2008-03-02 A → 2008-03-11 A (+9d) | 15d → 1d |  |  |  |  |
| 81 | **本体設定データ、HW情報のロード** | 2008-03-17 A → 2008-03-24 A (+7d) | 2008-04-04 A → 2008-04-18 (+14d) | 15d → 26d? | 100% → 89% | none → 83d | 26, 27SF → none | was named 本体設定データetcのロード; resources 吉岡照幸 → none |
| 85 | **共有フォントの仕様** | 2008-02-11 → 2008-02-08 (-3d) | 2008-03-16 → 2008-04-16 (+31d) | 25d → 69d? |  | 116d → 85d | 26, 28SF → none | was named フォントの共有コンテンツ化（ReadOnly）; constraint start no earlier than 2008-02-08 → none; resources 吉岡照幸 → none |
| 91 | **NANDアクセス制限** | 2008-02-11 A → 2008-02-08 A (-3d) | 2008-03-16 → 2008-03-31 (+15d) | 34d? → 53d? | 69% → 89% | 117d → 101d |  | was named NANDファイルアクセス制限 |
| 92 | **仕様策定** |  | 2008-04-17 → 2008-03-31 (-17d) | 70d? → 53d? | 63% → 76% | 84d → 101d |  |  |
| 96 | マウント情報セット |  |  |  |  |  |  | was named 同一メーカの他タイトルのセーブデータ（ReadOnly） |
| 97 | FSライブラリの対応 |  | 2008-03-16 A → 2008-03-27 A (+11d) | 25d → 34d |  |  |  | was named TMPブートをする際のTMPブートアプリファイル（RW）; resources 吉岡照幸 → 吉崎 浩二 |
| 101 | **アプリロード速度チューニング** | 2008-03-03 → 2008-02-08 A (-24d) | 2008-03-14 → 2008-04-16 (+33d) | 10d? → 69d? | 0% → 6% | 116d → 85d |  | constraint start no earlier than 2008-03-03 → none; resources 吉田光寿; 村上豊 → none |
| 104 | **アプリ認証** | 2008-02-08 A → 2008-02-11 A (+3d) | 2008-04-09 A | 62d? → 59d? | 65% → 100% | 92d → none |  | was named アプリ認証処理 |
| 106 | **ROMヘッダ署名認証** |  | 2008-04-09 A → 2008-03-14 A (-26d) | 59d? → 33d? |  |  |  | was named TWLアプリ |
| 107 | カードアプリ |  | 2008-03-02 A → 2008-02-29 A (-2d) |  |  |  |  |  |
| 111 | **鍵の引渡し** | 2008-03-24 A → 2008-03-06 A (-18d) |  | 8d? → 26d? |  |  |  | resources 吉田光寿 → none |
| 112 | 仕様 |  |  |  |  |  |  | was named 鍵の引渡し |
| 114 | AES鍵・AES種引渡し |  | 2008-03-31 A → 2008-03-26 A (-5d) | 6d? → 3d |  |  |  |  |
| 115 | ハードウェアAESスロット設定・クリア |  | 2008-03-31 A → 2008-03-24 A (-7d) | 6d? → 1d |  |  |  |  |
| 116 | **アプリ起動** |  |  |  | 78% → 85% |  |  |  |
| 117 | 基本実装 |  | 2008-04-18 → 2008-02-08 A (-70d) | 71d? → 1d? | 81% → 100% | 83d → none |  | was named 起動時処理; resources none → 中島高伸 |
| 121 | SCFGレジスタ設定・ロック |  |  |  |  |  |  | was named SCFGレジスタロック（ユーザーアプリは必ず） |
| 122 | アプリ再配置 | 2008-02-11 A → 2008-02-13 A (+2d) | 2008-03-02 A → 2008-02-15 A (-16d) | 15d → 3d |  |  | none → 100 |  |
| 125 | **メモリクリア** |  | 2008-02-28 A → 2008-02-11 A (-17d) | 15d → 4d |  |  |  | resources 中島高伸; 吉田光寿 → none |
| 129 | **レジスタクリア** |  |  |  | 72% → 80% |  |  |  |
| 131 | クリア処理実装 |  |  |  | 60% → 80% |  |  |  |
| 135 | **NTRアプリのR4対策** | 2008-02-11 → 2008-02-08 A (-3d) | 2008-04-09 → 2008-04-23 (+14d) | 59d → 75d? | 0% → 4% | 92d → 79d |  |  |
| 136 | どのレベルでやるかの方針決定 |  | 2008-04-09 → 2008-04-11 (+2d) | 43d → 45d |  | 92d → 88d |  | constraint start no earlier than 2008-02-11 → finish no earlier than 2008-04-11 |
| 138 | **実装** |  | 2008-03-30 → 2008-04-23 (+24d) | 51d? → 75d? |  | 103d → 79d |  | was named NTRアプリのR4対策 |
| 140 | ダイジェストリスト作成 |  | 2008-03-30 → 2008-04-23 (+24d) |  |  | 103d → 79d |  |  |
| 141 | TWL側実装 | 2008-02-11 → 2008-03-05 (+23d) | 2008-03-30 → 2008-04-23 (+24d) |  |  | 102d → 79d |  |  |
| 142 | **アプリジャンプ** | 2008-02-11 A → 2008-02-08 A (-3d) | 2008-04-18 → 2008-04-23 (+5d) | 68d → 76d? | 90% → 63% | 83d → 78d |  |  |
| 150 | NTRモードからのアプリジャンプブロック |  |  |  |  |  |  | was named NTRモード移行後のHWリセットでは、アプリジャンプを無効にする仕組み |
| 154 | ImportフォルダからTMPフォルダへの一時格納場所変更（ES待ち） | 2008-04-18 → 2008-04-23 (+5d) | 2008-04-18 → 2008-04-23 (+5d) |  |  | 83d → 78d | 271 → 315 |  |
| 157 | NTRアプリ |  |  |  |  |  |  | was named TMPブート、メモリブートのNTRアプリ対応; resources 吉岡照幸 → 吉田光寿 |
| 159 | **無線** |  | 2008-04-11 → 2008-04-18 (+7d) | 64d? → 71d? | 58% → 74% | 90d → 83d |  |  |
| 161 | **新無線ファームロード** |  | 2008-03-21 → 2008-04-18 (+28d) | 43d? → 71d? | 75% → 65% | 111d → 83d |  |  |
| 166 | **実装** |  | 2008-03-21 → 2008-04-18 (+28d) | 43d? → 71d? | 84% → 51% | 111d → 83d |  |  |
| 169 | ランチャー本実装 | 2008-03-17 → 2008-04-04 (+18d) | 2008-03-21 → 2008-04-10 (+20d) |  |  | 109d → 91d |  |  |
| 171 | **ファーム** |  | 2008-03-10 → 2008-04-18 (+39d) | 32d? → 71d? | 60% → 30% | 122d → 83d |  |  |
| 172 | ファーム作成 |  | 2008-03-05 A |  | 50% → 100% | 127d → none |  |  |
| 174 | **NAND保存フォーマット** |  |  |  |  |  |  | was named NAND保存フォーマットに変換 |
| 177 | **無線終端処理** |  | 2008-02-08 → 2008-03-07 (+28d) | 1d? → 29d? | 50% → 96% | 153d → 125d |  |  |
| 178 | 仕様 |  |  |  |  |  |  | was named 無線終端処理 |
| 180 | ランチャー実装 |  |  |  |  |  |  | resources 吉田光寿 → 佐藤雅樹 |
| 181 | **無線ON/OFFフラグ制御** | 2008-04-04 A |  | 8d → 8d? | 0% → 97% |  |  | constraint finish no earlier than 2008-04-11 → none |
| 184 | **無線LED制御** | 2008-04-04 A |  | 8d → 8d? | 0% → 97% |  |  | constraint finish no earlier than 2008-04-11 → none |
| 187 | **バナー** | 2008-02-11 A → 2008-02-08 A (-3d) |  | 33d? → 36d? |  |  |  |  |
| 188 | **仕様** |  |  |  |  |  |  | was named バナー仕様 |
| 195 | **活線挿抜** |  | 2008-04-02 → 2008-04-04 (+2d) | 55d? → 56d? | 60% → 77% | 99d → 98d |  |  |
| 199 | **ロード** |  | 2008-04-02 → 2008-04-04 (+2d) | 55d? → 56d? | 57% → 80% | 99d → 98d |  |  |
| 201 | TWLカード対応 | 2008-03-13 A | 2008-04-02 A |  | 0% → 100% | 99d → none |  |  |
| 206 | AESデコード |  | 2008-03-14 → 2008-02-08 (-35d) | 36d? → 1d? |  | 118d → 153d |  | resources none → 赤羽淳平 |

| ID | Task | Start | Finish | Duration | Complete | Total float | Predecessors | Other |
| --- | --- | --- | --- | --- | --- | --- | --- | --- |
| 214 | 速度チューニング | 2008-03-17 → 2008-03-21 (+4d) | 2008-03-28 → 2008-04-04 (+7d) |  |  | 102d → 98d |  |  |
| 215 | **ホットスポットサーチ** |  | 2008-03-02 → 2008-04-23 (+52d) | 20d → 73d |  | 131d → 78d |  |  |
| 217 | ランチャーへの組み込み | 2008-02-25 → 2008-04-17 (+52d) | 2008-03-02 → 2008-04-23 (+52d) |  |  | 130d → 78d | 216, 27SF → 90 | resources 吉田光寿 → 西川猛司 |
| 218 | **ISデバッガ対応** |  |  |  | 73% → 88% |  |  |  |
| 223 | バナーViewモード対応 |  |  |  |  |  |  | resources none → 中島高伸 |
| 227 | **NANDアプリデバッグ** |  | 2008-03-30 → 2008-04-23 (+24d) | 48d → 72d |  | 103d → 79d |  |  |
| 229 | 本対応 | 2008-03-17 → 2008-04-09 (+23d) | 2008-03-30 → 2008-04-23 (+24d) |  |  | 102d → 79d |  |  |
| 230 | **本体設定** |  |  |  | 87% → 96% |  |  |  |
| 231 | **実装** |  | 2008-02-08 → 2008-04-11 A (+63d) | 1d? → 64d? | 80% → 100% | 153d → none |  | resources 吉田光寿 → none |
| 233 | 無線ON/OFFフラグ制御 | 2008-04-11 A | 2008-04-11 A |  | 0% → 100% | 90d → none |  | resources none → 西川猛司 |
| 239 | **本体初期化** | 2008-02-08 A → 2008-02-11 A (+3d) | 2008-03-02 → 2008-04-11 (+40d) | 23d? → 61d? | 87% → 94% | 131d → 80d |  |  |
| 240 | ライブラリ |  | 2008-03-02 A |  | 80% → 100% | 131d → none |  |  |
| 241 | 本体設定での実装 | 2008-02-08 → 2008-04-11 (+63d) | 2008-02-08 → 2008-04-11 (+63d) |  |  | 153d → 80d |  | constraint none → start no earlier than 2008-04-11; resources none → 西川猛司 |
| 249 | **NANDファーム** | 2008-02-11 A → 2008-02-08 A (-3d) | 2008-04-02 A → 2008-04-03 A (+1d) | 38d → 56d? |  |  | 26, 28SF → none |  |
| 256 | **バッテリエクステンション** |  | 2008-03-28 A → 2008-04-03 A (+6d) | 50d? → 56d? |  |  |  |  |
| 257 | データ測定 |  | 2008-03-09 A → 2008-03-21 A (+12d) | 21d? → 31d? |  |  |  | resources 藤田僚平 → 藤田僚平; 斉藤潤一 |
| 258 | 仕様策定 |  | 2008-03-28 A → 2008-04-03 A (+6d) | 15d → 19d |  |  |  | resources 桑原雅人 → 桑原雅人; 村上豊 |
| 259 | 実装 |  | 2008-04-11 A → 2008-04-02 A (-9d) | 10d → 3d |  |  | 256, 28SF → none | was named バッテリエクステンション; resources 村上豊 → 村上豊; 藤田僚平 |
| 260 | **電源LED変化** |  | 2008-04-11 A |  | 96% → 100% | 90d → none |  |  |
| 261 | 仕様決定 |  | 2008-04-11 A |  | 70% → 100% | 90d → none | 258 → none |  |
| 262 | 実装 | 2008-04-01 A → 2008-04-03 A (+2d) | 2008-04-09 A → 2008-04-04 A (-5d) | 7d? → 2d |  |  | none → 261 |  |
| 264 | **eTicket** |  |  |  | 35% → 50% |  |  |  |
| 265 | **仕様** |  |  |  |  |  |  | was named eTicket |
| 280 | **NUPサーバ** |  | 2008-03-30 → 2008-04-23 (+24d) | 48d → 72d |  | 103d → 79d |  |  |
| 282 | 製品用セットアップ | 2008-02-11 → 2008-03-05 (+23d) | 2008-03-30 → 2008-04-23 (+24d) |  |  | 102d → 79d |  |  |
| 287 | **TwlSDK** |  | 2008-03-16 → 2008-04-22 (+37d) | 38d? → 75d? | 62% → 74% | 116d → 79d |  |  |
| 288 | **ツール** |  | 2008-03-16 → 2008-04-04 (+19d) | 37d? → 56d? | 29% → 39% | 117d → 98d |  |  |
| 289 | **makerom.TWL** |  | 2008-03-14 → 2008-04-01 (+18d) | 36d? → 54d? | 50% → 73% | 118d → 100d |  |  |
| 303 | **maketad** | 2008-02-11 → 2008-02-29 (+18d) | 2008-03-16 → 2008-04-04 (+19d) | 34d → 35d |  | 109d → 91d |  |  |
| 304 | バイナリファイル対応 | 2008-02-11 → 2008-02-29 (+18d) | 2008-03-16 → 2008-04-04 (+19d) |  |  | 109d → 91d |  |  |
| 305 | **NandInitializer** | 2008-02-11 A → 2008-02-08 A (-3d) | 2008-03-02 A → 2008-02-12 A (-19d) | 15d → 5d? |  |  | 26, 27SF → none | was named ツール（NandInitializer）; resources 神川洋司 → none |
| 313 | **ライブラリ** | 2008-02-11 A → 2008-02-08 A (-3d) | 2008-03-16 → 2008-04-22 (+37d) | 35d → 75d? | 67% → 81% | 116d → 79d |  |  |
| 314 | reboot |  | 2008-03-02 → 2008-02-29 (-2d) |  |  | 131d → 132d | 26, 27SF → none |  |
| 315 | os/launcherParam |  | 2008-03-02 → 2008-04-22 (+51d) | 15d → 26d | 90% → 97% | 131d → 78d | 26, 27SF → 71 | constraint none → finish no earlier than 2008-04-11 |
| 316 | lcfg |  | 2008-03-02 → 2008-02-29 (-2d) |  |  | 131d → 132d | 26, 27SF → none |  |
| 317 | nam |  | 2008-03-16 → 2008-03-14 (-2d) |  |  | 117d → 118d | 26, 28SF → none |  |
| 318 | マイコン |  |  |  |  |  | 26, 27SF → none |  |
| 319 | カメラ |  | 2008-03-16 → 2008-03-14 (-2d) |  |  | 117d → 118d | 26, 28SF → none |  |
| 320 | Codec |  | 2008-03-02 → 2008-02-29 (-2d) |  |  | 131d → 132d | 26, 27SF → none |  |
| 321 | **FS** | 2008-02-11 A → 2008-02-08 A (-3d) | 2008-03-16 → 2008-04-04 (+19d) | 35d → 56d? | 50% → 75% | 116d → 98d |  |  |
| 322 | **電源OFF,リセット時の終端処理** | 2008-02-11 → 2008-02-08 A (-3d) | 2008-03-16 → 2008-03-24 (+8d) | 25d → 46d? | 0% → 50% | 116d → 107d | 26, 28SF → none | constraint finish no earlier than 2008-03-16 → none; resources 吉崎 浩二 → none |
| 326 | 速度チューニング | 2008-02-11 → 2008-02-29 A (+18d) | 2008-03-16 → 2008-04-04 (+19d) |  | 0% → 50% | 116d → 98d |  |  |
| 327 | SRLのハッシュチェック |  | 2008-03-16 → 2008-04-04 (+19d) |  |  | 117d → 98d |  |  |
| 330 | **WiFi関係ライブラリ** |  |  |  | 85% → 84% |  |  |  |
| 343 | **ROMマスター作成** |  |  |  | 61% → 65% |  |  |  |
| 344 | **ROMマスタリングツール** |  | 2008-04-18 → 2008-03-19 (-30d) | 51d? → 41d? | 70% → 92% | 83d → 113d |  | constraint finish no earlier than 2008-04-18 → none; resources 西川猛司 → none |
| 350 | **デバッグ関係** | 2008-04-09 → 2008-04-21 (+12d) |  | 22d? → 10d? |  |  |  |  |
| 351 | デバッグ項目洗い出し | 2008-04-09 → 2008-04-21 (+12d) |  | 22d? → 8d |  |  |  | resources none → 田原明; 三田健太朗; 吉岡照幸 |
| 352 | 必要となるプログラム洗い出し |  | 2008-04-24 → 2008-04-22 (-2d) | 4d? → 2d? |  | 71d → 73d |  | resources none → 吉岡照幸; 吉田光寿 |
| 355 | **ISデバッガ** |  | 2008-02-08 → 2008-03-25 (+46d) | 1d? → 47d? |  | 153d → 107d |  |  |
| 364 | **生産工程用プログラム** |  |  |  | 35% → 34% |  |  |  |
| 370 | **生産工程用RED仮ランチャー** |  |  | 34d → 34d? |  |  |  |  |

## Version 12 (saved 2008-04-14)

Note of the change: remmodel for SuperCard DSTWO

Last finish stays 2008-07-10. Complete tasks 136 → 141.

Added:

| ID | Task | Duration | Start | Finish | Predecessors | Constraint | Resources |
| --- | --- | --- | --- | --- | --- | --- | --- |
| 199 | エラー処理 | 1d? | 2008-04-14 | 2008-04-14 |  | finish no earlier than 2008-04-14 | 赤羽淳平 |
| 200 | **Finalize処理** | 3d? | 2008-04-15 | 2008-04-17 |  |  |  |
| 201 | 仕様策定・フロー作成 | 1d? | 2008-04-15 | 2008-04-15 | 199 | start no earlier than 2008-04-14 | 赤羽淳平 |
| 202 | 実装 | 2d | 2008-04-16 | 2008-04-17 | 201 |  | 赤羽淳平 |
| 219 | **事前動作検証** | 31d? | 2008-03-24 A | 2008-04-23 |  |  |  |
| 220 | 検証項目検討 | 16d? | 2008-03-24 A | 2008-04-14 |  | start no earlier than 2008-03-24 | 飯島; 赤羽淳平; 金子 |
| 221 | 検証開始日ネゴ | 1d | 2008-04-14 | 2008-04-14 |  | start no earlier than 2008-04-14 | 田原明; 赤羽淳平 |
| 222 | 検証 | 7d? | 2008-04-15 | 2008-04-23 | 221 | finish no earlier than 2008-04-23 | マリオクラブ; 派遣; 赤羽淳平 |
| 313 | maketad.sysmenu | 1d? | 2008-04-03 A | 2008-04-03 A |  | start no earlier than 2008-04-03 | 畠本 稔 |
| 314 | SystemMenuUpdater | 3d | 2008-04-17 | 2008-04-21 | 374, 313 |  | 神川洋司 |
| 331 | 全機能実装 | 55d | 2008-02-11 A | 2008-04-25 |  | finish no earlier than 2008-04-25 | 神川洋司; 照井 章生 |
| 332 | チューニング | 42d? | 2008-04-03 A | 2008-05-30 |  | start no earlier than 2008-04-03 | 神川洋司 |
| 374 | NandAppInporter | 3d | 2008-04-14 | 2008-04-16 |  | start no earlier than 2008-04-14 | 神川洋司 |
| 375 | デバッガのROMエミュレーション情報の対応 | 5d | 2008-04-17 | 2008-04-23 | 374 |  | IS |
| 376 | ランチャーの対応 | 2d | 2008-04-24 | 2008-04-25 | 375 |  | 中島高伸 |
| 385 | 生産工程用プログラムの開発サポート | 35d? | 2008-04-14 | 2008-05-30 |  | finish no earlier than 2008-05-30 | 神川洋司 |
| 386 | 指定したTitleIDのタイトルをシステムアプリでも消去できるAPI | 1d? | 2008-04-30 | 2008-04-30 |  | start no earlier than 2008-04-30 | 神川洋司 |

Removed: 367 生産工程用NandInitializer（NANDフォーマット、REDランチャーインポート）; 368 生産工程用NandInitializer2（HW情報、リージョンなどの書き込み）; 369 生産工程用NandInitializer3（内蔵アプリインポート）

Changed:

| ID | Task | Start | Finish | Duration | Complete | Total float | Predecessors | Other |
| --- | --- | --- | --- | --- | --- | --- | --- | --- |
| 53 | **REDシステムメニュー** |  | 2008-04-30 → 2008-05-02 (+2d) | 83d? → 85d? | 78% → 79% | 71d → 69d |  |  |
| 54 | **ランチャー** |  | 2008-04-30 → 2008-05-02 (+2d) | 83d? → 85d? | 77% → 78% | 71d → 69d |  |  |
| 55 | **ランチャー用ARM7コンポーネント** |  | 2008-04-23 → 2008-04-22 (-1d) | 76d? → 75d? | 20% → 67% | 78d → 79d |  |  |
| 57 | 中間マージ | 2008-04-14 → 2008-04-15 A (+1d) | 2008-04-15 A | 2d? → 1d | 0% → 100% | 84d → none |  | was named 中間レビュー |
| 58 | 最終マージ |  | 2008-04-23 → 2008-04-22 (-1d) | 2d → 1d |  | 78d → 79d |  | was named 最終レビュー |
| 84 | 顔写真データ削除 |  |  |  |  |  |  | was named 仕様改定 |
| 135 | **NTRアプリのR4対策** |  |  |  | 4% → 57% |  |  |  |
| 136 | どのレベルでやるかの方針決定 | 2008-02-11 A | 2008-04-11 → 2008-04-10 A (-1d) | 45d → 44d | 0% → 100% | 88d → none |  | constraint finish no earlier than 2008-04-11 → start no earlier than 2008-02-11; resources ？ → 谷口和彦; 宮本昌幸; 村上豊 |
| 159 | **無線** |  |  |  | 74% → 75% |  |  |  |
| 181 | **無線ON/OFFフラグ制御** |  | 2008-04-11 A |  | 97% → 100% | 90d → none |  |  |
| 183 | 実装 |  | 2008-04-11 A |  | 80% → 100% | 90d → none |  |  |
| 184 | **無線LED制御** |  | 2008-04-11 A |  | 97% → 100% | 90d → none |  |  |
| 186 | 実装 |  | 2008-04-11 A |  | 80% → 100% | 90d → none |  |  |
| 195 | **活線挿抜** |  | 2008-04-04 → 2008-05-02 (+28d) | 56d? → 85d? | 77% → 68% | 98d → 69d |  |  |
| 196 | **活線挿抜アルゴリズムをFIX** |  | 2008-03-14 → 2008-04-18 (+35d) | 33d → 68d? |  | 104d → 69d |  |  |
| 197 | コードの整理 |  | 2008-03-14 → 2008-04-18 (+35d) | 25d → 50d | 70% → 72% | 104d → 69d |  | constraint finish no earlier than 2008-03-14 → finish no earlier than 2008-04-18 |
| 198 | 挿抜負荷耐性 |  | 2008-03-14 → 2008-04-18 (+35d) | 25d → 50d | 70% → 74% | 104d → 69d |  | constraint finish no earlier than 2008-03-14 → finish no earlier than 2008-04-18 |
| 203 | **ロード** |  | 2008-04-04 → 2008-05-02 (+28d) | 56d? → 85d? | 80% → 69% | 98d → 69d |  |  |
| 207 | AESデコード | 2008-02-08 → 2008-04-18 (+70d) | 2008-02-08 → 2008-04-18 (+70d) |  |  | 153d → 83d | none → 202 |  |
| 216 | 表示との連動 |  | 2008-03-02 → 2008-04-18 (+47d) | 15d → 50d |  | 131d → 83d |  | constraint start no earlier than 2008-02-08 → finish no earlier than 2008-04-18 |
| 217 | 起動との連動 |  | 2008-03-02 → 2008-04-18 (+47d) | 15d → 50d |  | 131d → 83d |  | constraint start no earlier than 2008-02-08 → finish no earlier than 2008-04-18 |
| 218 | 速度チューニング | 2008-03-21 → 2008-04-21 (+31d) | 2008-04-04 → 2008-05-02 (+28d) |  |  | 98d → 67d |  |  |
| 295 | **TwlSDK** |  | 2008-04-22 → 2008-05-30 (+38d) | 75d? → 113d? | 74% → 77% | 79d → 41d |  |  |
| 296 | **ツール** |  | 2008-04-04 → 2008-04-21 (+17d) | 56d? → 74d? | 39% → 38% | 98d → 80d |  |  |
| 323 | **ライブラリ** |  | 2008-04-22 → 2008-05-30 (+38d) | 75d? → 113d? | 81% → 85% | 79d → 41d |  |  |
| 330 | **Codec** |  | 2008-02-29 → 2008-05-30 (+91d) | 15d → 110d? | 70% → 90% | 132d → 41d |  | resources 神川洋司 → none |
| 355 | **ROMマスター作成** | 2008-02-08 A → 2008-02-11 A (+3d) | 2008-04-30 → 2008-05-30 (+30d) | 83d? → 110d? | 65% → 56% | 71d → 41d |  |  |
| 356 | **ROMマスタリングツール** | 2008-02-08 A → 2008-02-11 A (+3d) | 2008-03-19 → 2008-05-30 (+72d) | 41d? → 110d? | 92% → 75% | 113d → 41d |  |  |
| 359 | 仕様再検討（鍵をハードウェア内に入れるとか） | 2008-02-08 → 2008-05-26 (+108d) | 2008-02-08 → 2008-05-30 (+112d) | 0.5d? → 5d |  | 153.5d → 39d |  | constraint none → start no earlier than 2008-05-26 |
| 367 | **ISデバッガ** |  | 2008-03-25 → 2008-04-25 (+31d) | 47d? → 78d? |  | 107d → 76d |  |  |
| 373 | **NANDアプリインポート方法（NMenuのみに制限？）** | 2008-02-08 → 2008-04-14 (+66d) | 2008-02-08 → 2008-04-25 (+77d) | 1d? → 12d |  | 153d → 74d |  | resources ？ → none |
| 377 | HWリセット対応 |  |  |  |  |  |  | resources none → IS |
| 379 | **生産工程用プログラム** |  | 2008-05-25 → 2008-05-30 (+5d) | 107d? → 113d? | 34% → 25% | 47d → 41d |  |  |
| 382 | **生産工程用RED仮ランチャー** |  |  | 34d? → 34d |  |  |  |  |
